Schedule from MS Project, 2022-06-15 to 2022-12-15, status date 2022-06-15, A marks actual dates.

## Calendars

- Calendario Proyecto Plataforma de Distribución de R: Mon-Fri 09:00-14:00, 15:30-18:00; Sat-Sun off. Exceptions (off unless hours are given): 2022-09-16 (Día de la Independencia de México), 2022-11-21 (Día de la Revolución Mexicana).

## Resources

| Resource |
| --- |
| Adolfo |
| Juanita |
| Gonzalo |
| Rodolfo |

## Schedule

| ID | WBS | Task | Type | Duration | Start | Finish | Predecessors | Complete | Remaining | Total slack | Constraint | Resources | Work | Actual work |
| --- | --- | --- | --- | --- | --- | --- | --- | --- | --- | --- | --- | --- | --- | --- |
| 1 | 1 | **Proyecto PDRMyE** |  | 121.81d | 2022-06-15 A | 2022-12-15 |  | 25% | 91.07d | 0d |  |  | 1736h | 1736h |
| 2 | 1.1 | Inicio | milestone, manual | 0d | 2022-06-15 | 2022-06-15 |  |  |  |  |  |  |  |  |
| 3 | 1.2 | **Fase 1 Inicio y Planificación** |  | 43.12d | 2022-06-15 A | 2022-08-17 A |  | 100% |  |  |  |  | 1736h | 1736h |
| 4 | 1.2.1 | **Levantamiento de Generalidades Técnicas** |  | 22.5d | 2022-06-15 A | 2022-07-18 A |  | 100% |  |  |  |  | 360h | 360h |
| 5 | 1.2.1.1 | **sprint 1** |  | 22.5d | 2022-06-15 A | 2022-07-18 A |  | 100% |  |  |  |  | 360h | 360h |
| 6 | 1.2.1.1.1 | Reunion CPH |  | 1d | 2022-06-15 A | 2022-06-15 A |  | 100% |  |  |  | Adolfo; Juanita; Gonzalo; Rodolfo | 8h | 8h |
| 7 | 1.2.1.1.2 | Reunion DAMOP |  | 1d | 2022-06-16 A | 2022-06-16 A | 6 | 100% |  |  |  | Adolfo; Juanita; Gonzalo; Rodolfo | 32h | 32h |
| 8 | 1.2.1.1.3 | Reunion CPH |  | 1d | 2022-06-17 A | 2022-06-17 A | 7 | 100% |  |  |  | Adolfo; Juanita; Gonzalo; Rodolfo | 32h | 32h |
| 9 | 1.2.1.1.4 | Reunion CPH |  | 1d | 2022-06-20 A | 2022-06-20 A | 8 | 100% |  |  |  | Adolfo; Juanita; Gonzalo; Rodolfo | 32h | 32h |
| 10 | 1.2.1.1.5 | Reunion CPH |  | 1d | 2022-06-21 A | 2022-06-21 A | 9 | 100% |  |  |  | Adolfo; Juanita; Gonzalo; Rodolfo | 32h | 32h |
| 11 | 1.2.1.1.6 | Reunion DAMOP |  | 1d | 2022-06-22 A | 2022-06-22 A | 10 | 100% |  |  |  | Adolfo; Juanita; Gonzalo; Rodolfo | 32h | 32h |
| 12 | 1.2.1.1.7 | Reunion DAMOP |  | 1d | 2022-06-24 A | 2022-06-24 A | 11 | 100% |  |  |  | Adolfo; Juanita; Gonzalo; Rodolfo | 32h | 32h |
| 13 | 1.2.1.1.8 | Reunion DAMOP |  | 1d | 2022-06-27 A | 2022-06-27 A | 12 | 100% |  |  |  | Adolfo; Juanita; Gonzalo; Rodolfo | 32h | 32h |
| 14 | 1.2.1.1.9 | Reunion DAMOP |  | 1d | 2022-07-13 A | 2022-07-13 A | 13 | 100% |  |  |  | Adolfo; Juanita; Gonzalo; Rodolfo | 32h | 32h |
| 15 | 1.2.1.1.10 | Reunion DAF |  | 1d | 2022-07-14 A | 2022-07-14 A | 14 | 100% |  |  |  | Adolfo; Juanita; Gonzalo; Rodolfo | 32h | 32h |
| 16 | 1.2.1.1.11 | Reunion DCCP |  | 1d | 2022-07-15 A | 2022-07-15 A | 15 | 100% |  |  |  | Adolfo; Juanita; Gonzalo; Rodolfo | 32h | 32h |
| 17 | 1.2.1.1.12 | Reunion DPCP |  | 1d | 2022-07-18 A | 2022-07-18 A | 16 | 100% |  |  | finish no earlier than 2022-07-14 | Adolfo; Juanita; Gonzalo; Rodolfo | 32h | 32h |
| 18 | 1.2.2 | **Objeto y Proyección del Alcance** |  | 40.31d | 2022-06-20 A | 2022-08-17 A |  | 100% |  |  |  |  | 1376h | 1376h |
| 19 | 1.2.2.1 | **sprint 2** |  | 10.31d | 2022-06-20 A | 2022-07-04 A | 5 | 100% |  |  |  |  | 352h | 352h |
| 20 | 1.2.2.1.1 | Estructura de trabajo y organigrama |  | 1d | 2022-06-20 A | 2022-06-20 A |  | 100% |  |  |  | Adolfo; Juanita; Gonzalo; Rodolfo | 32h | 32h |
| 21 | 1.2.2.1.2 | Muestra de avances |  | 1d | 2022-06-21 A | 2022-06-21 A |  | 100% |  |  |  | Adolfo; Juanita; Gonzalo; Rodolfo | 32h | 32h |
| 22 | 1.2.2.1.3 | Avance de Maqueta para Plataforma de Distribuciones |  | 1d | 2022-06-22 A | 2022-06-22 A |  | 100% |  |  |  | Adolfo; Juanita; Gonzalo; Rodolfo | 32h | 32h |
| 23 | 1.2.2.1.4 | Revision de cambios a maqueta |  | 1d | 2022-06-23 A | 2022-06-23 A |  | 100% |  |  |  | Adolfo; Juanita; Gonzalo; Rodolfo | 32h | 32h |
| 24 | 1.2.2.1.5 | Reunion_AVANCES_Semanal |  | 1d | 2022-06-24 A | 2022-06-24 A |  | 100% |  |  |  | Adolfo; Juanita; Gonzalo; Rodolfo | 32h | 32h |
| 25 | 1.2.2.1.6 | Reunión sobre Seguridad de la Plataforma |  | 1d | 2022-06-27 A | 2022-06-27 A |  | 100% |  |  |  | Adolfo; Juanita; Gonzalo; Rodolfo | 32h | 32h |
| 26 | 1.2.2.1.7 | Retroalimentacion DAMOP |  | 1d | 2022-06-28 A | 2022-06-28 A |  | 100% |  |  |  | Adolfo; Juanita; Gonzalo; Rodolfo | 32h | 32h |
| 27 | 1.2.2.1.8 | Retroalimentacion DAF |  | 1d | 2022-06-29 A | 2022-06-29 A |  | 100% |  |  |  | Adolfo; Juanita; Gonzalo; Rodolfo | 32h | 32h |
| 28 | 1.2.2.1.9 | Retroalimentacion DCCP |  | 1d | 2022-06-30 A | 2022-06-30 A |  | 100% |  |  |  | Adolfo; Juanita; Gonzalo; Rodolfo | 32h | 32h |
| 29 | 1.2.2.1.10 | Retroalimentacion DPCP |  | 1d | 2022-07-01 A | 2022-07-01 A |  | 100% |  |  |  | Adolfo; Juanita; Gonzalo; Rodolfo | 32h | 32h |
| 30 | 1.2.2.1.11 | Reunion_AVANCES_Semanal |  | 1d | 2022-07-04 A | 2022-07-04 A |  | 100% |  |  |  | Adolfo; Juanita; Gonzalo; Rodolfo | 32h | 32h |

| ID | WBS | Task | Duration | Start | Finish | Predecessors | Complete | Resources | Work | Actual work |
| --- | --- | --- | --- | --- | --- | --- | --- | --- | --- | --- |
| 31 | 1.2.2.2 | **sprint 3** | 30d | 2022-07-05 A | 2022-08-17 A | 19 | 100% |  | 1024h | 1024h |
| 32 | 1.2.2.2.1 | Edicion de maquetas CPH, DPCP, DAMOP, DCCP, DAF, Municipios | 1d | 2022-07-05 A | 2022-07-05 A |  | 100% | Adolfo; Juanita; Gonzalo; Rodolfo | 32h | 32h |
| 33 | 1.2.2.2.2 | Reunion_AVANCES_Semanal | 1d | 2022-07-06 A | 2022-07-06 A |  | 100% | Adolfo; Juanita; Gonzalo; Rodolfo | 32h | 32h |
| 34 | 1.2.2.2.3 | Definir la arquitectura que se utilizara | 1d | 2022-07-07 A | 2022-07-07 A |  | 100% | Adolfo; Juanita; Gonzalo; Rodolfo | 32h | 32h |
| 35 | 1.2.2.2.4 | Presentacion de Propuesta Arquitectura de Micro sitios | 1d | 2022-07-08 A | 2022-07-08 A |  | 100% | Adolfo; Juanita; Gonzalo; Rodolfo | 32h | 32h |
| 36 | 1.2.2.2.5 | Aprobacion de Propuesta de Arquitectura de Micro sitios | 1d | 2022-07-11 A | 2022-07-11 A |  | 100% | Adolfo; Juanita; Gonzalo; Rodolfo | 32h | 32h |
| 37 | 1.2.2.2.6 | Presentación de Maqueta PDRMyE | 1d | 2022-07-12 A | 2022-07-12 A |  | 100% | Adolfo; Juanita; Gonzalo; Rodolfo | 32h | 32h |
| 38 | 1.2.2.2.7 | Gerente de Proyecto Reviso maqueta de CPH | 1d | 2022-07-13 A | 2022-07-13 A |  | 100% | Adolfo; Juanita; Gonzalo; Rodolfo | 32h | 32h |
| 39 | 1.2.2.2.8 | Reunion_AVANCES_Semanal | 1d | 2022-07-14 A | 2022-07-14 A |  | 100% | Adolfo; Juanita; Gonzalo; Rodolfo | 32h | 32h |
| 40 | 1.2.2.2.9 | Retroalimentacion de maquetado con CPH | 1d | 2022-07-15 A | 2022-07-15 A |  | 100% | Adolfo; Juanita; Gonzalo; Rodolfo | 32h | 32h |
| 41 | 1.2.2.2.10 | Propuesta de arquitectura de micro sitios | 1d | 2022-07-18 A | 2022-07-18 A |  | 100% | Adolfo; Juanita; Gonzalo; Rodolfo | 32h | 32h |
| 42 | 1.2.2.2.11 | Retroalimentacion de maquetado con DAMOP | 1d | 2022-07-19 A | 2022-07-19 A |  | 100% | Adolfo; Juanita; Gonzalo; Rodolfo | 32h | 32h |
| 43 | 1.2.2.2.12 | Retroalimentacion de maquetado con DCCP | 1d | 2022-07-20 A | 2022-07-20 A |  | 100% | Adolfo; Juanita; Gonzalo; Rodolfo | 32h | 32h |
| 44 | 1.2.2.2.13 | Reunion_AVANCES_Semanal | 1d | 2022-07-21 A | 2022-07-21 A |  | 100% | Adolfo; Juanita; Gonzalo; Rodolfo | 32h | 32h |
| 45 | 1.2.2.2.14 | Revisioin de avances de maquetas | 1d | 2022-07-22 A | 2022-07-22 A |  | 100% | Adolfo; Juanita; Gonzalo; Rodolfo | 32h | 32h |
| 46 | 1.2.2.2.15 | Revisioin de avances de maquetas CPH y DAMOP | 1d | 2022-07-25 A | 2022-07-25 A |  | 100% | Adolfo; Juanita; Gonzalo; Rodolfo | 32h | 32h |
| 47 | 1.2.2.2.16 | Reunion_AVANCES_Semanal | 1d | 2022-07-26 A | 2022-07-26 A |  | 100% | Adolfo; Juanita; Gonzalo; Rodolfo | 32h | 32h |
| 48 | 1.2.2.2.17 | Aclaracion dudas con la maqueta de firma electronica | 1d | 2022-07-27 A | 2022-07-27 A |  | 100% | Adolfo; Juanita; Gonzalo; Rodolfo | 32h | 32h |
| 49 | 1.2.2.2.18 | Retroalimentacion de maquetado con DAMOP | 1d | 2022-07-28 A | 2022-07-28 A |  | 100% | Adolfo; Juanita; Gonzalo; Rodolfo | 32h | 32h |
| 50 | 1.2.2.2.19 | Retroalimentacion de maquetado con DAMOP | 1d | 2022-07-29 A | 2022-07-29 A |  | 100% | Adolfo; Juanita; Gonzalo; Rodolfo | 32h | 32h |
| 51 | 1.2.2.2.20 | Revision de maqueta de firma electronica | 1d | 2022-08-01 A | 2022-08-01 A |  | 100% | Adolfo; Juanita; Gonzalo; Rodolfo | 32h | 32h |
| 52 | 1.2.2.2.21 | Reunion_AVANCES_Semanal | 1d | 2022-08-02 A | 2022-08-02 A |  | 100% | Adolfo; Juanita; Gonzalo; Rodolfo | 32h | 32h |
| 53 | 1.2.2.2.22 | reunión demostración plataforma Ing. Marisol | 1d | 2022-08-03 A | 2022-08-03 A |  | 100% | Adolfo; Juanita; Gonzalo; Rodolfo | 32h | 32h |
| 54 | 1.2.2.2.23 | Avance de Maqueta Exportacion de Dashboard en PDF | 1d | 2022-08-04 A | 2022-08-04 A |  | 100% | Adolfo; Juanita; Gonzalo; Rodolfo | 32h | 32h |
| 55 | 1.2.2.2.24 | Avance de Maqueta Exportacion de Dashboard en Excel | 1d | 2022-08-05 A | 2022-08-05 A |  | 100% | Adolfo; Juanita; Gonzalo; Rodolfo | 32h | 32h |
| 56 | 1.2.2.2.25 | Avance de Maqueta Paginacion de Dashboard | 1d | 2022-08-08 A | 2022-08-08 A |  | 100% | Adolfo; Juanita; Gonzalo; Rodolfo | 32h | 32h |
| 57 | 1.2.2.2.26 | Levantamiento de Generalidades Técnicas MUNICIPIOS | 1d | 2022-08-09 A | 2022-08-09 A |  | 100% | Adolfo; Juanita; Gonzalo; Rodolfo | 32h | 32h |
| 58 | 1.2.2.2.27 | Levantamiento de Generalidades Técnicas OPDs | 1d | 2022-08-10 A | 2022-08-10 A |  | 100% | Adolfo; Juanita; Gonzalo; Rodolfo | 32h | 32h |
| 59 | 1.2.2.2.28 | Avance de Maqueta | 1d | 2022-08-11 A | 2022-08-11 A |  | 100% | Adolfo; Juanita; Gonzalo; Rodolfo | 32h | 32h |
| 60 | 1.2.2.2.29 | Configuración de Maqueta Municipios | 1d | 2022-08-12 A | 2022-08-12 A |  | 100% | Adolfo; Juanita; Gonzalo; Rodolfo | 32h | 32h |
| 61 | 1.2.2.2.30 | Reunion_AVANCES_Semanal | 1d | 2022-08-15 A | 2022-08-15 A |  | 100% | Adolfo; Juanita; Gonzalo; Rodolfo | 32h | 32h |
| 62 | 1.2.2.2.31 | Levantamiento de Generalidades Técnicas OPDs | 1d | 2022-08-16 A | 2022-08-16 A |  | 100% | Adolfo; Juanita; Gonzalo; Rodolfo | 32h | 32h |
| 63 | 1.2.2.2.32 | Levantamiento de Generalidades Técnicas OPDs | 1d | 2022-08-17 A | 2022-08-17 A |  | 100% | Adolfo; Juanita; Gonzalo; Rodolfo | 32h | 32h |

| ID | WBS | Task | Duration | Start | Finish | Predecessors | Complete | Remaining | Total slack |
| --- | --- | --- | --- | --- | --- | --- | --- | --- | --- |
| 64 | 1.3 | **Fase 2 Diseño y Desarrollo** | 77.88d | 2022-08-18 A | 2022-12-15 |  | 24% | 59.48d | 0.81d |
| 65 | 1.3.1 | **Diseño y Desarrollo BACK** | 76.94d | 2022-08-19 A | 2022-12-15 |  | 28% | 55.63d | 0.81d |
| 66 | 1.3.1.1 | **sprint 4** | 34.75d | 2022-08-19 A | 2022-10-12 | 31 | 32% | 23.48d | 43d |
| 67 | 1.3.1.1.1 | **Módulo de Administración** | 34.75d | 2022-08-19 A | 2022-10-12 |  | 32% | 23.48d | 43d |
| 68 | 1.3.1.1.1.1 | **Base** | 16.25d | 2022-08-19 A | 2022-09-13 |  | 65% | 5.74d | 61.5d |
| 69 | 1.3.1.1.1.1.1 | Login | 10d | 2022-08-19 A | 2022-09-01 A |  | 100% |  |  |
| 70 | 1.3.1.1.1.1.2 | Logout | 1d | 2022-09-02 A | 2022-09-02 A |  | 100% |  |  |
| 71 | 1.3.1.1.1.1.3 | Bloqueo de Sesión | 1d | 2022-09-05 A | 2022-09-06 |  |  | 1d | 66.44d |
| 72 | 1.3.1.1.1.1.4 | Perfil | 5d | 2022-09-06 A | 2022-09-13 |  |  | 5d | 61.5d |
| 73 | 1.3.1.1.1.2 | **Administración de Usuarios** | 8.5d | 2022-09-14 A | 2022-09-28 |  | 10% | 7.65d | 52.38d |
| 74 | 1.3.1.1.1.2.1 | Agregar | 1d | 2022-09-14 A | 2022-09-15 |  |  | 1d | 59.88d |
| 75 | 1.3.1.1.1.2.2 | Pantalla Principal | 1d | 2022-09-15 A | 2022-09-19 |  |  | 1d | 58.94d |
| 76 | 1.3.1.1.1.2.3 | Editar | 1d | 2022-09-16 A | 2022-09-20 |  |  | 1d | 58d |
| 77 | 1.3.1.1.1.2.4 | Eliminar | 1d | 2022-09-19 A | 2022-09-20 |  |  | 1d | 58d |
| 78 | 1.3.1.1.1.2.5 | Configuración de Dashboard | 1d | 2022-09-20 A | 2022-09-21 |  |  | 1d | 57.06d |
| 79 | 1.3.1.1.1.2.6 | Exportación de dashboard PDF | 1d | 2022-09-21 A | 2022-09-22 |  |  | 1d | 56.12d |
| 80 | 1.3.1.1.1.2.7 | Exportación de dashboard Excel | 1d | 2022-09-22 A | 2022-09-23 |  |  | 1d | 55.19d |
| 81 | 1.3.1.1.1.2.8 | Paginación Dashboard | 1d | 2022-09-23 A | 2022-09-23 A |  | 100% |  |  |
| 82 | 1.3.1.1.1.2.9 | Busqueda Dash board | 1d | 2022-09-26 A | 2022-09-27 |  |  | 1d | 53.31d |
| 83 | 1.3.1.1.1.2.10 | Ventanas emergentes de validación | 1d | 2022-09-27 A | 2022-09-28 |  |  | 1d | 52.38d |
| 84 | 1.3.1.1.1.3 | **Administración de Roles y Permisos** | 9.44d | 2022-09-28 A | 2022-10-12 |  |  | 9.44d | 43d |
| 85 | 1.3.1.1.1.3.1 | Pantalla Principal | 1d | 2022-09-28 A | 2022-09-29 |  |  | 1d | 51.44d |
| 86 | 1.3.1.1.1.3.2 | Agregar | 1d | 2022-09-29 A | 2022-09-30 |  |  | 1d | 50.5d |
| 87 | 1.3.1.1.1.3.3 | Editar | 1d | 2022-09-30 A | 2022-10-03 |  |  | 1d | 49.56d |
| 88 | 1.3.1.1.1.3.4 | Eliminar | 1d | 2022-10-03 A | 2022-10-04 |  |  | 1d | 48.62d |
| 89 | 1.3.1.1.1.3.5 | Configuración de Dashboard | 1d | 2022-10-04 A | 2022-10-05 |  |  | 1d | 47.69d |
| 90 | 1.3.1.1.1.3.6 | Exportación de dashboard PDF | 1d | 2022-10-05 A | 2022-10-06 |  |  | 1d | 46.75d |
| 91 | 1.3.1.1.1.3.7 | Exportación de dashboard Excel | 1d | 2022-10-06 A | 2022-10-07 |  |  | 1d | 45.81d |
| 92 | 1.3.1.1.1.3.8 | Paginación Dashboard | 1d | 2022-10-07 A | 2022-10-10 |  |  | 1d | 44.88d |
| 93 | 1.3.1.1.1.3.9 | Busqueda Dash board | 1d | 2022-10-10 A | 2022-10-11 |  |  | 1d | 43.94d |
| 94 | 1.3.1.1.1.3.10 | Ventanas emergentes de validación | 1d | 2022-10-11 A | 2022-10-12 |  |  | 1d | 43d |

| ID | WBS | Task | Type | Duration | Start | Finish | Predecessors | Complete | Remaining | Total slack | Constraint |
| --- | --- | --- | --- | --- | --- | --- | --- | --- | --- | --- | --- |
| 95 | 1.3.1.2 | **sprint 5** |  | 24.44d | 2022-10-11 A | 2022-11-16 | 31 | 41% | 14.36d | 19.56d |  |
| 96 | 1.3.1.2.1 | **Módulo CPH** |  | 24.44d | 2022-10-11 A | 2022-11-16 |  | 41% | 14.36d | 19.56d |  |
| 97 | 1.3.1.2.1.1 | **Coeficientes** |  | 8.44d | 2022-10-11 | 2022-10-21 |  |  |  | 0d |  |
| 98 | 1.3.1.2.1.1.1 | Pantalla principal | manual | 1d | 2022-10-11 | 2022-10-12 |  |  |  |  |  |
| 99 | 1.3.1.2.1.1.2 | Agregar | manual | 1d | 2022-10-13 | 2022-10-13 |  |  |  |  |  |
| 100 | 1.3.1.2.1.1.3 | Eliminar | manual | 1d | 2022-10-14 | 2022-10-14 |  |  |  |  |  |
| 101 | 1.3.1.2.1.1.4 | Editar | manual | 1d | 2022-10-15 | 2022-10-15 |  |  |  |  |  |
| 102 | 1.3.1.2.1.1.5 | Configuración de Dashboard | manual | 1d | 2022-10-16 | 2022-10-16 |  |  |  |  |  |
| 103 | 1.3.1.2.1.1.6 | Exportación de dashboard PDF | manual | 1d | 2022-10-17 | 2022-10-17 |  |  |  |  |  |
| 104 | 1.3.1.2.1.1.7 | Exportación de dashboard Excel | manual | 1d | 2022-10-18 | 2022-10-18 |  |  |  |  |  |
| 105 | 1.3.1.2.1.1.8 | Paginación Dashboard | manual | 1d | 2022-10-19 | 2022-10-19 |  |  |  |  |  |
| 106 | 1.3.1.2.1.1.9 | Busqueda Dash board | manual | 1d | 2022-10-20 | 2022-10-20 |  |  |  |  |  |
| 107 | 1.3.1.2.1.1.10 | Ventanas emergentes de validación | manual | 1d | 2022-10-21 | 2022-10-21 |  |  |  |  |  |
| 108 | 1.3.1.2.1.2 | **Bienvenida** |  | 0.94d | 2022-10-11 | 2022-10-11 |  |  |  | 0d |  |
| 109 | 1.3.1.2.1.2.1 | Configuracion de bienvenida | manual | 1d | 2022-10-11 | 2022-10-11 |  |  |  |  |  |
| 110 | 1.3.1.2.1.3 | **Base** |  | 4.69d | 2022-10-11 A | 2022-10-17 |  | 20% | 3.75d | 39.31d |  |
| 111 | 1.3.1.2.1.3.1 | Perfil |  | 1d | 2022-10-11 A | 2022-10-12 |  |  | 1d | 43d |  |
| 112 | 1.3.1.2.1.3.2 | Pop up Notificaciones |  | 1d | 2022-10-12 A | 2022-10-13 |  |  | 1d | 42.06d |  |
| 113 | 1.3.1.2.1.3.3 | Contador de Notificaciones (Icono campanita) |  | 1d | 2022-10-13 A | 2022-10-14 |  |  | 1d | 41.12d |  |
| 114 | 1.3.1.2.1.3.4 | Bandeja entrada de Notificaciones |  | 1d | 2022-10-14 A | 2022-10-17 |  |  | 1d | 40.19d |  |
| 115 | 1.3.1.2.1.3.5 | Contador de Notificaciones (Icono campanita) |  | 1d | 2022-10-17 A | 2022-10-17 A |  | 100% |  |  | start no earlier than 2022-10-17 |
| 116 | 1.3.1.2.1.4 | **Administración de Municipios** |  | 7.56d | 2022-10-12 A | 2022-10-24 |  | 40% | 4.54d | 35.5d |  |
| 117 | 1.3.1.2.1.4.1 | Pantalla Principal |  | 1d | 2022-10-12 A | 2022-10-12 A |  | 100% |  |  |  |
| 118 | 1.3.1.2.1.4.2 | Agregar |  | 1d | 2022-10-13 A | 2022-10-13 A |  | 100% |  |  |  |
| 119 | 1.3.1.2.1.4.3 | Editar |  | 1d | 2022-10-14 A | 2022-10-14 A |  | 100% |  |  |  |
| 120 | 1.3.1.2.1.4.4 | Eliminar |  | 1d | 2022-10-15 A | 2022-10-17 A |  | 100% |  |  |  |
| 121 | 1.3.1.2.1.4.5 | Configuración de Dashboard |  | 1d | 2022-10-16 A | 2022-10-18 |  |  | 1d | 39.25d |  |
| 122 | 1.3.1.2.1.4.6 | Exportación de dashboard PDF |  | 1d | 2022-10-17 A | 2022-10-18 |  |  | 1d | 39.25d |  |
| 123 | 1.3.1.2.1.4.7 | Exportación de dashboard Excel |  | 1d | 2022-10-18 A | 2022-10-19 |  |  | 1d | 38.31d |  |
| 124 | 1.3.1.2.1.4.8 | Paginación Dashboard |  | 1d | 2022-10-19 A | 2022-10-20 |  |  | 1d | 37.38d |  |
| 125 | 1.3.1.2.1.4.9 | Busqueda Dash board |  | 1d | 2022-10-20 A | 2022-10-21 |  |  | 1d | 36.44d |  |
| 126 | 1.3.1.2.1.4.10 | Ventanas emergentes de validación |  | 1d | 2022-10-21 A | 2022-10-24 |  |  | 1d | 35.5d |  |

| ID | WBS | Task | Duration | Start | Finish | Complete | Remaining | Total slack |
| --- | --- | --- | --- | --- | --- | --- | --- | --- |
| 127 | 1.3.1.2.1.5 | **Administración de Fondos** | 9.38d | 2022-10-13 A | 2022-10-26 A | 100% |  |  |
| 128 | 1.3.1.2.1.5.1 | Pantalla Principal | 1d | 2022-10-13 A | 2022-10-13 A | 100% |  |  |
| 129 | 1.3.1.2.1.5.2 | Agregar | 1d | 2022-10-14 A | 2022-10-14 A | 100% |  |  |
| 130 | 1.3.1.2.1.5.3 | Editar | 1d | 2022-10-17 A | 2022-10-17 A | 100% |  |  |
| 131 | 1.3.1.2.1.5.4 | Eliminar | 1d | 2022-10-18 A | 2022-10-18 A | 100% |  |  |
| 132 | 1.3.1.2.1.5.5 | Configuración de Dashboard | 1d | 2022-10-19 A | 2022-10-19 A | 100% |  |  |
| 133 | 1.3.1.2.1.5.6 | Exportación de dashboard PDF | 1d | 2022-10-20 A | 2022-10-20 A | 100% |  |  |
| 134 | 1.3.1.2.1.5.7 | Exportación de dashboard Excel | 1d | 2022-10-21 A | 2022-10-21 A | 100% |  |  |
| 135 | 1.3.1.2.1.5.8 | Paginación Dashboard | 1d | 2022-10-24 A | 2022-10-24 A | 100% |  |  |
| 136 | 1.3.1.2.1.5.9 | Busqueda Dash board | 1d | 2022-10-25 A | 2022-10-25 A | 100% |  |  |
| 137 | 1.3.1.2.1.5.10 | Ventanas emergentes de validación | 1d | 2022-10-26 A | 2022-10-26 A | 100% |  |  |
| 138 | 1.3.1.2.1.6 | **Administración de Presupuesto** | 9.44d | 2022-10-14 A | 2022-10-28 |  | 9.44d | 31.75d |
| 139 | 1.3.1.2.1.6.1 | Pantalla Principal | 1d | 2022-10-14 A | 2022-10-17 |  | 1d | 40.19d |
| 140 | 1.3.1.2.1.6.2 | Agregar | 1d | 2022-10-17 A | 2022-10-18 |  | 1d | 39.25d |
| 141 | 1.3.1.2.1.6.3 | Editar | 1d | 2022-10-18 A | 2022-10-19 |  | 1d | 38.31d |
| 142 | 1.3.1.2.1.6.4 | Eliminar | 1d | 2022-10-19 A | 2022-10-20 |  | 1d | 37.38d |
| 143 | 1.3.1.2.1.6.5 | Configuración de Dashboard | 1d | 2022-10-20 A | 2022-10-21 |  | 1d | 36.44d |
| 144 | 1.3.1.2.1.6.6 | Exportación de dashboard PDF | 1d | 2022-10-21 A | 2022-10-24 |  | 1d | 35.5d |
| 145 | 1.3.1.2.1.6.7 | Exportación de dashboard Excel | 1d | 2022-10-24 A | 2022-10-25 |  | 1d | 34.56d |
| 146 | 1.3.1.2.1.6.8 | Paginación Dashboard | 1d | 2022-10-25 A | 2022-10-26 |  | 1d | 33.62d |
| 147 | 1.3.1.2.1.6.9 | Busqueda Dash board | 1d | 2022-10-26 A | 2022-10-27 |  | 1d | 32.69d |
| 148 | 1.3.1.2.1.6.10 | Ventanas emergentes de validación | 1d | 2022-10-27 A | 2022-10-28 |  | 1d | 31.75d |
| 149 | 1.3.1.2.1.7 | **Administración de UMA** | 9.38d | 2022-10-17 A | 2022-10-28 A | 100% |  |  |
| 150 | 1.3.1.2.1.7.1 | Pantalla Principal | 1d | 2022-10-17 A | 2022-10-17 A | 100% |  |  |
| 151 | 1.3.1.2.1.7.2 | Agregar | 1d | 2022-10-18 A | 2022-10-18 A | 100% |  |  |
| 152 | 1.3.1.2.1.7.3 | Editar | 1d | 2022-10-19 A | 2022-10-19 A | 100% |  |  |
| 153 | 1.3.1.2.1.7.4 | Eliminar | 1d | 2022-10-20 A | 2022-10-20 A | 100% |  |  |
| 154 | 1.3.1.2.1.7.5 | Configuración de Dashboard | 1d | 2022-10-21 A | 2022-10-21 A | 100% |  |  |
| 155 | 1.3.1.2.1.7.6 | Exportación de dashboard PDF | 1d | 2022-10-24 A | 2022-10-24 A | 100% |  |  |
| 156 | 1.3.1.2.1.7.7 | Exportación de dashboard Excel | 1d | 2022-10-25 A | 2022-10-25 A | 100% |  |  |
| 157 | 1.3.1.2.1.7.8 | Paginación Dashboard | 1d | 2022-10-26 A | 2022-10-26 A | 100% |  |  |
| 158 | 1.3.1.2.1.7.9 | Busqueda Dashboard | 1d | 2022-10-27 A | 2022-10-27 A | 100% |  |  |
| 159 | 1.3.1.2.1.7.10 | Ventanas emergentes de validación | 1d | 2022-10-28 A | 2022-10-28 A | 100% |  |  |

| ID | WBS | Task | Duration | Start | Finish | Complete |
| --- | --- | --- | --- | --- | --- | --- |
| 160 | 1.3.1.2.1.8 | **Administración de Inflación** | 11.25d | 2022-10-17 A | 2022-11-01 A | 100% |
| 161 | 1.3.1.2.1.8.1 | Pantalla Principal | 1d | 2022-10-17 A | 2022-10-17 A | 100% |
| 162 | 1.3.1.2.1.8.2 | Plantilla Carga Masiva Inflación | 1d | 2022-10-18 A | 2022-10-18 A | 100% |
| 163 | 1.3.1.2.1.8.3 | Api Plantilla caga masiva Municipio - Inflación | 1d | 2022-10-19 A | 2022-10-19 A | 100% |
| 164 | 1.3.1.2.1.8.4 | Agregar | 1d | 2022-10-20 A | 2022-10-20 A | 100% |
| 165 | 1.3.1.2.1.8.5 | Editar | 1d | 2022-10-21 A | 2022-10-21 A | 100% |
| 166 | 1.3.1.2.1.8.6 | Eliminar | 1d | 2022-10-24 A | 2022-10-24 A | 100% |
| 167 | 1.3.1.2.1.8.7 | Configuración de Dashboard | 1d | 2022-10-25 A | 2022-10-25 A | 100% |
| 168 | 1.3.1.2.1.8.8 | Exportación de dashboard PDF | 1d | 2022-10-26 A | 2022-10-26 A | 100% |
| 169 | 1.3.1.2.1.8.9 | Exportación de dashboard Excel | 1d | 2022-10-27 A | 2022-10-27 A | 100% |
| 170 | 1.3.1.2.1.8.10 | Paginación Dashboard | 1d | 2022-10-28 A | 2022-10-28 A | 100% |
| 171 | 1.3.1.2.1.8.11 | Busqueda Dash board | 1d | 2022-10-31 A | 2022-10-31 A | 100% |
| 172 | 1.3.1.2.1.8.12 | Ventanas emergentes de validación | 1d | 2022-11-01 A | 2022-11-01 A | 100% |
| 173 | 1.3.1.2.1.9 | **Administración de Crecimiento** | 11.25d | 2022-10-18 A | 2022-11-02 A | 100% |
| 174 | 1.3.1.2.1.9.1 | Pantalla Principal | 1d | 2022-10-18 A | 2022-10-18 A | 100% |
| 175 | 1.3.1.2.1.9.2 | Plantilla Carga Masiva Crecimiento | 1d | 2022-10-19 A | 2022-10-19 A | 100% |
| 176 | 1.3.1.2.1.9.3 | Api Plantilla caga masiva Municipio - Crecimiento | 1d | 2022-10-20 A | 2022-10-20 A | 100% |
| 177 | 1.3.1.2.1.9.4 | Agregar | 1d | 2022-10-21 A | 2022-10-21 A | 100% |
| 178 | 1.3.1.2.1.9.5 | Editar | 1d | 2022-10-24 A | 2022-10-24 A | 100% |
| 179 | 1.3.1.2.1.9.6 | Eliminar | 1d | 2022-10-25 A | 2022-10-25 A | 100% |
| 180 | 1.3.1.2.1.9.7 | Configuración de Dashboard | 1d | 2022-10-26 A | 2022-10-26 A | 100% |
| 181 | 1.3.1.2.1.9.8 | Exportación de dashboard PDF | 1d | 2022-10-27 A | 2022-10-27 A | 100% |
| 182 | 1.3.1.2.1.9.9 | Exportación de dashboard Excel | 1d | 2022-10-28 A | 2022-10-28 A | 100% |
| 183 | 1.3.1.2.1.9.10 | Paginación Dashboard | 1d | 2022-10-31 A | 2022-10-31 A | 100% |
| 184 | 1.3.1.2.1.9.11 | Busqueda Dash board | 1d | 2022-11-01 A | 2022-11-01 A | 100% |
| 185 | 1.3.1.2.1.9.12 | Ventanas emergentes de validación | 1d | 2022-11-02 A | 2022-11-02 A | 100% |

| ID | WBS | Task | Duration | Start | Finish | Complete |
| --- | --- | --- | --- | --- | --- | --- |
| 186 | 1.3.1.2.1.10 | **Administración de Facturación** | 8.44d | 2022-10-19 A | 2022-10-31 A | 100% |
| 187 | 1.3.1.2.1.10.1 | Pantalla Principal | 1d | 2022-10-19 A | 2022-10-19 A | 100% |
| 188 | 1.3.1.2.1.10.2 | Agregar | 1d | 2022-10-20 A | 2022-10-20 A | 100% |
| 189 | 1.3.1.2.1.10.3 | Editar | 1d | 2022-10-21 A | 2022-10-21 A | 100% |
| 190 | 1.3.1.2.1.10.4 | Eliminar | 1d | 2022-10-24 A | 2022-10-24 A | 100% |
| 191 | 1.3.1.2.1.10.5 | Configuración de Dashboard | 1d | 2022-10-25 A | 2022-10-25 A | 100% |
| 192 | 1.3.1.2.1.10.6 | Exportación de dashboard PDF | 1d | 2022-10-26 A | 2022-10-26 A | 100% |
| 193 | 1.3.1.2.1.10.7 | Exportación de dashboard Excel | 1d | 2022-10-27 A | 2022-10-27 A | 100% |
| 194 | 1.3.1.2.1.10.8 | Paginación Dashboard | 1d | 2022-10-28 A | 2022-10-28 A | 100% |
| 195 | 1.3.1.2.1.10.9 | Busqueda Dash board | 1d | 2022-10-29 A | 2022-10-31 A | 100% |
| 196 | 1.3.1.2.1.10.10 | Ventanas emergentes de validación | 1d | 2022-10-30 A | 2022-10-31 A | 100% |
| 197 | 1.3.1.2.1.11 | **Administración de Recaudación** | 11.25d | 2022-10-20 A | 2022-11-04 A | 100% |
| 198 | 1.3.1.2.1.11.1 | Pantalla Principal | 1d | 2022-10-20 A | 2022-10-20 A | 100% |
| 199 | 1.3.1.2.1.11.2 | Plantilla Carga Masiva Recaudación | 1d | 2022-10-21 A | 2022-10-21 A | 100% |
| 200 | 1.3.1.2.1.11.3 | Api Plantilla caga masiva Municipio - Recaudación | 1d | 2022-10-24 A | 2022-10-24 A | 100% |
| 201 | 1.3.1.2.1.11.4 | Agregar | 1d | 2022-10-25 A | 2022-10-25 A | 100% |
| 202 | 1.3.1.2.1.11.5 | Editar | 1d | 2022-10-26 A | 2022-10-26 A | 100% |
| 203 | 1.3.1.2.1.11.6 | Eliminar | 1d | 2022-10-27 A | 2022-10-27 A | 100% |
| 204 | 1.3.1.2.1.11.7 | Configuración de Dashboard | 1d | 2022-10-28 A | 2022-10-28 A | 100% |
| 205 | 1.3.1.2.1.11.8 | Exportación de dashboard PDF | 1d | 2022-10-31 A | 2022-10-31 A | 100% |
| 206 | 1.3.1.2.1.11.9 | Exportación de dashboard Excel | 1d | 2022-11-01 A | 2022-11-01 A | 100% |
| 207 | 1.3.1.2.1.11.10 | Paginación Dashboard | 1d | 2022-11-02 A | 2022-11-02 A | 100% |
| 208 | 1.3.1.2.1.11.11 | Busqueda Dash board | 1d | 2022-11-03 A | 2022-11-03 A | 100% |
| 209 | 1.3.1.2.1.11.12 | Ventanas emergentes de validación | 1d | 2022-11-04 A | 2022-11-04 A | 100% |

| ID | WBS | Task | Duration | Start | Finish | Complete |
| --- | --- | --- | --- | --- | --- | --- |
| 210 | 1.3.1.2.1.12 | **Administración de Población** | 9.38d | 2022-10-21 A | 2022-11-03 A | 100% |
| 211 | 1.3.1.2.1.12.1 | Pantalla Principal | 1d | 2022-10-21 A | 2022-10-21 A | 100% |
| 212 | 1.3.1.2.1.12.2 | Agregar | 1d | 2022-10-24 A | 2022-10-24 A | 100% |
| 213 | 1.3.1.2.1.12.3 | Editar | 1d | 2022-10-25 A | 2022-10-25 A | 100% |
| 214 | 1.3.1.2.1.12.4 | Eliminar | 1d | 2022-10-26 A | 2022-10-26 A | 100% |
| 215 | 1.3.1.2.1.12.5 | Configuración de Dashboard | 1d | 2022-10-27 A | 2022-10-27 A | 100% |
| 216 | 1.3.1.2.1.12.6 | Exportación de dashboard PDF | 1d | 2022-10-28 A | 2022-10-28 A | 100% |
| 217 | 1.3.1.2.1.12.7 | Exportación de dashboard Excel | 1d | 2022-10-31 A | 2022-10-31 A | 100% |
| 218 | 1.3.1.2.1.12.8 | Paginación Dashboard | 1d | 2022-11-01 A | 2022-11-01 A | 100% |
| 219 | 1.3.1.2.1.12.9 | Busqueda Dash board | 1d | 2022-11-02 A | 2022-11-02 A | 100% |
| 220 | 1.3.1.2.1.12.10 | Ventanas emergentes de validación | 1d | 2022-11-03 A | 2022-11-03 A | 100% |
| 221 | 1.3.1.2.1.13 | **Administración de Territorio** | 11.25d | 2022-10-24 A | 2022-11-08 A | 100% |
| 222 | 1.3.1.2.1.13.1 | Pantalla Principal | 1d | 2022-10-24 A | 2022-10-24 A | 100% |
| 223 | 1.3.1.2.1.13.2 | Plantilla Carga Masiva Territorio | 1d | 2022-10-25 A | 2022-10-25 A | 100% |
| 224 | 1.3.1.2.1.13.3 | Api Plantilla caga masiva Municipio - Territorio | 1d | 2022-10-26 A | 2022-10-26 A | 100% |
| 225 | 1.3.1.2.1.13.4 | Agregar | 1d | 2022-10-27 A | 2022-10-27 A | 100% |
| 226 | 1.3.1.2.1.13.5 | Editar | 1d | 2022-10-28 A | 2022-10-28 A | 100% |
| 227 | 1.3.1.2.1.13.6 | Eliminar | 1d | 2022-10-31 A | 2022-10-31 A | 100% |
| 228 | 1.3.1.2.1.13.7 | Configuración de Dashboard | 1d | 2022-11-01 A | 2022-11-01 A | 100% |
| 229 | 1.3.1.2.1.13.8 | Exportación de dashboard PDF | 1d | 2022-11-02 A | 2022-11-02 A | 100% |
| 230 | 1.3.1.2.1.13.9 | Exportación de dashboard Excel | 1d | 2022-11-03 A | 2022-11-03 A | 100% |
| 231 | 1.3.1.2.1.13.10 | Paginación Dashboard | 1d | 2022-11-04 A | 2022-11-04 A | 100% |
| 232 | 1.3.1.2.1.13.11 | Busqueda Dash board | 1d | 2022-11-07 A | 2022-11-07 A | 100% |
| 233 | 1.3.1.2.1.13.12 | Ventanas emergentes de validación | 1d | 2022-11-08 A | 2022-11-08 A | 100% |

| ID | WBS | Task | Duration | Start | Finish | Complete |
| --- | --- | --- | --- | --- | --- | --- |
| 234 | 1.3.1.2.1.14 | **Administración de pobreza** | 11.25d | 2022-10-26 A | 2022-11-10 A | 100% |
| 235 | 1.3.1.2.1.14.1 | Pantalla Principal | 1d | 2022-10-26 A | 2022-10-26 A | 100% |
| 236 | 1.3.1.2.1.14.2 | Plantilla Carga Masiva Pobreza | 1d | 2022-10-27 A | 2022-10-27 A | 100% |
| 237 | 1.3.1.2.1.14.3 | Api Plantilla caga masiva Municipio - Pobreza | 1d | 2022-10-28 A | 2022-10-28 A | 100% |
| 238 | 1.3.1.2.1.14.4 | Agregar | 1d | 2022-10-31 A | 2022-10-31 A | 100% |
| 239 | 1.3.1.2.1.14.5 | Editar | 1d | 2022-11-01 A | 2022-11-01 A | 100% |
| 240 | 1.3.1.2.1.14.6 | Eliminar | 1d | 2022-11-02 A | 2022-11-02 A | 100% |
| 241 | 1.3.1.2.1.14.7 | Configuración de Dashboard | 1d | 2022-11-03 A | 2022-11-03 A | 100% |
| 242 | 1.3.1.2.1.14.8 | Exportación de dashboard PDF | 1d | 2022-11-04 A | 2022-11-04 A | 100% |
| 243 | 1.3.1.2.1.14.9 | Exportación de dashboard Excel | 1d | 2022-11-07 A | 2022-11-07 A | 100% |
| 244 | 1.3.1.2.1.14.10 | Paginación Dashboard | 1d | 2022-11-08 A | 2022-11-08 A | 100% |
| 245 | 1.3.1.2.1.14.11 | Busqueda Dash board | 1d | 2022-11-09 A | 2022-11-09 A | 100% |
| 246 | 1.3.1.2.1.14.12 | Ventanas emergentes de validación | 1d | 2022-11-10 A | 2022-11-10 A | 100% |
| 247 | 1.3.1.2.1.15 | **Administración de Pobreza Extrema** | 1.88d | 2022-10-26 A | 2022-10-27 A | 100% |
| 248 | 1.3.1.2.1.15.1 | Plantilla Carga Masiva Pobreza Extrema | 1d | 2022-10-26 A | 2022-10-26 A | 100% |
| 249 | 1.3.1.2.1.15.2 | Api Plantilla caga masiva Municipio - Pobreza Extrema | 1d | 2022-10-27 A | 2022-10-27 A | 100% |
| 250 | 1.3.1.2.1.16 | **Administración de Pobreza Moderada** | 1.88d | 2022-10-27 A | 2022-10-28 A | 100% |
| 251 | 1.3.1.2.1.16.1 | Plantilla Carga Masiva Pobreza Moderada | 1d | 2022-10-27 A | 2022-10-27 A | 100% |
| 252 | 1.3.1.2.1.16.2 | Api Plantilla caga masiva Municipio - Pobreza Moderada | 1d | 2022-10-28 A | 2022-10-28 A | 100% |
| 253 | 1.3.1.2.1.17 | **Administración de Proyección** | 4.69d | 2022-10-28 A | 2022-11-03 A | 100% |
| 254 | 1.3.1.2.1.17.1 | Pantalla Principal | 1d | 2022-10-28 A | 2022-10-28 A | 100% |
| 255 | 1.3.1.2.1.17.2 | Agregar | 1d | 2022-10-28 A | 2022-10-28 A | 100% |
| 256 | 1.3.1.2.1.17.3 | Editar | 1d | 2022-10-31 A | 2022-10-31 A | 100% |
| 257 | 1.3.1.2.1.17.4 | Eliminar | 1d | 2022-11-01 A | 2022-11-01 A | 100% |
| 258 | 1.3.1.2.1.17.5 | Plantilla Carga Masiva Proyección | 1d | 2022-11-02 A | 2022-11-02 A | 100% |
| 259 | 1.3.1.2.1.17.6 | Api Plantilla caga masiva Municipio - Proyección | 1d | 2022-11-03 A | 2022-11-03 A | 100% |

| ID | WBS | Task | Duration | Start | Finish | Remaining | Total slack |
| --- | --- | --- | --- | --- | --- | --- | --- |
| 260 | 1.3.1.2.1.18 | **Dashboard Articulo 14 Fracción I** | 10.38d | 2022-11-01 A | 2022-11-16 | 10.38d | 19.56d |
| 261 | 1.3.1.2.1.18.1 | Pantalla Principal | 1d | 2022-11-01 A | 2022-11-02 | 1d | 28.94d |
| 262 | 1.3.1.2.1.18.2 | Generar plantilla | 1d | 2022-11-02 A | 2022-11-03 | 1d | 28d |
| 263 | 1.3.1.2.1.18.3 | Carga masiva - plantilla | 1d | 2022-11-03 A | 2022-11-04 | 1d | 27.06d |
| 264 | 1.3.1.2.1.18.4 | Recálculo de coeficiente | 1d | 2022-11-04 A | 2022-11-07 | 1d | 26.12d |
| 265 | 1.3.1.2.1.18.5 | Editar información | 1d | 2022-11-07 A | 2022-11-08 | 1d | 25.19d |
| 266 | 1.3.1.2.1.18.6 | Dashboard predial | 1d | 2022-11-08 A | 2022-11-09 | 1d | 24.25d |
| 267 | 1.3.1.2.1.18.7 | Dashboard población y territorio | 1d | 2022-11-09 A | 2022-11-10 | 1d | 23.31d |
| 268 | 1.3.1.2.1.18.8 | Dashboard carencia social | 1d | 2022-11-10 A | 2022-11-11 | 1d | 22.38d |
| 269 | 1.3.1.2.1.18.9 | Cálculo de coeficiente | 1d | 2022-11-11 A | 2022-11-14 | 1d | 21.44d |
| 270 | 1.3.1.2.1.18.10 | Proceso Autorización | 1d | 2022-11-14 A | 2022-11-15 | 1d | 20.5d |
| 271 | 1.3.1.2.1.18.11 | Ventanas emergentes de validación | 1d | 2022-11-15 A | 2022-11-16 | 1d | 19.56d |
| 272 | 1.3.1.2.1.19 | **Dashboard Articulo 14 Fracción II** | 9.44d | 2022-11-02 A | 2022-11-16 | 9.44d | 19.56d |
| 273 | 1.3.1.2.1.19.1 | Pantalla Principal | 1d | 2022-11-02 A | 2022-11-03 | 1d | 28d |
| 274 | 1.3.1.2.1.19.2 | Dashboard población | 1d | 2022-11-03 A | 2022-11-04 | 1d | 27.06d |
| 275 | 1.3.1.2.1.19.3 | generar plantilla | 1d | 2022-11-04 A | 2022-11-07 | 1d | 26.12d |
| 276 | 1.3.1.2.1.19.4 | Carga masiva - plantilla | 1d | 2022-11-07 A | 2022-11-08 | 1d | 25.19d |
| 277 | 1.3.1.2.1.19.5 | Recálculo de coeficiente | 1d | 2022-11-08 A | 2022-11-09 | 1d | 24.25d |
| 278 | 1.3.1.2.1.19.6 | Editar información individual | 1d | 2022-11-09 A | 2022-11-10 | 1d | 23.31d |
| 279 | 1.3.1.2.1.19.7 | Dashboard proyección población | 1d | 2022-11-10 A | 2022-11-11 | 1d | 22.38d |
| 280 | 1.3.1.2.1.19.8 | Carga masiva - plantilla | 1d | 2022-11-11 A | 2022-11-14 | 1d | 21.44d |
| 281 | 1.3.1.2.1.19.9 | Recálculo de coeficiente | 1d | 2022-11-14 A | 2022-11-15 | 1d | 20.5d |
| 282 | 1.3.1.2.1.19.10 | Editar información individual | 1d | 2022-11-15 A | 2022-11-16 | 1d | 19.56d |
| 283 | 1.3.1.2.1.19.11 | Cálculo de coeficiente | 1d | 2022-11-15 A | 2022-11-16 | 1d | 19.56d |
| 284 | 1.3.1.2.1.19.12 | Proceso Autorización | 1d | 2022-11-15 A | 2022-11-16 | 1d | 19.56d |
| 285 | 1.3.1.2.1.19.13 | Ventanas emergentes de validación | 1d | 2022-11-15 A | 2022-11-16 | 1d | 19.56d |

| ID | WBS | Task | Duration | Start | Finish | Complete | Remaining | Total slack |
| --- | --- | --- | --- | --- | --- | --- | --- | --- |
| 286 | 1.3.1.2.1.20 | **Dashboard Articulo 14 Fracción III** | 8.5d | 2022-11-03 A | 2022-11-16 | 6% | 8d | 19.56d |
| 287 | 1.3.1.2.1.20.1 | Pantalla Principal | 1d | 2022-11-03 A | 2022-11-04 |  | 1d | 27.06d |
| 288 | 1.3.1.2.1.20.2 | Dashboard eficiencia recaudatoria | 1d | 2022-11-04 A | 2022-11-07 |  | 1d | 26.12d |
| 289 | 1.3.1.2.1.20.3 | generar plantilla | 1d | 2022-11-07 A | 2022-11-08 |  | 1d | 25.19d |
| 290 | 1.3.1.2.1.20.4 | Carga masiva - plantilla | 1d | 2022-11-08 A | 2022-11-09 |  | 1d | 24.25d |
| 291 | 1.3.1.2.1.20.5 | Recálculo de coeficiente | 1d | 2022-11-09 A | 2022-11-10 |  | 1d | 23.31d |
| 292 | 1.3.1.2.1.20.6 | Editar información individual | 1d | 2022-11-10 A | 2022-11-11 |  | 1d | 22.38d |
| 293 | 1.3.1.2.1.20.7 | Dashboard crecimiento recaudación | 1d | 2022-11-11 A | 2022-11-14 |  | 1d | 21.44d |
| 294 | 1.3.1.2.1.20.8 | Carga masiva - plantilla | 1d | 2022-11-14 A | 2022-11-15 |  | 1d | 20.5d |
| 295 | 1.3.1.2.1.20.9 | Recálculo de coeficiente | 1d | 2022-11-15 A | 2022-11-16 |  | 1d | 19.56d |
| 296 | 1.3.1.2.1.20.10 | Editar información individual | 1d | 2022-11-15 A | 2022-11-16 |  | 1d | 19.56d |
| 297 | 1.3.1.2.1.20.11 | Cálculo de coeficiente | 1d | 2022-11-15 A | 2022-11-16 |  | 1d | 19.56d |
| 298 | 1.3.1.2.1.20.12 | Proceso Autorización | 1d | 2022-11-15 A | 2022-11-16 |  | 1d | 19.56d |
| 299 | 1.3.1.2.1.20.13 | Ventanas emergentes de validación | 1d | 2022-11-15 A | 2022-11-16 |  | 1d | 19.56d |
| 300 | 1.3.1.2.1.20.14 | Participaciones Federales | 1d | 2022-11-15 A | 2022-11-16 |  | 1d | 19.56d |
| 301 | 1.3.1.2.1.20.15 | Dashboard Participaciones Federales | 1d | 2022-11-15 A | 2022-11-16 |  | 1d | 19.56d |
| 302 | 1.3.1.2.1.20.16 | Proceso Envío general Participaciones Federales | 1d | 2022-11-15 A | 2022-11-16 |  | 1d | 19.56d |
| 303 | 1.3.1.2.1.20.17 | Track general Participaciones Federales | 1d | 2022-11-15 A | 2022-11-15 A | 100% |  |  |
| 304 | 1.3.1.2.1.21 | **Dashboard FG** | 7.56d | 2022-11-04 A | 2022-11-16 |  | 7.56d | 19.56d |
| 305 | 1.3.1.2.1.21.1 | Configuración inicial Fondo General (FG) | 1d | 2022-11-04 A | 2022-11-07 |  | 1d | 26.12d |
| 306 | 1.3.1.2.1.21.2 | Carga inicial | 1d | 2022-11-07 A | 2022-11-08 |  | 1d | 25.19d |
| 307 | 1.3.1.2.1.21.3 | Pantalla Principal | 1d | 2022-11-08 A | 2022-11-09 |  | 1d | 24.25d |
| 308 | 1.3.1.2.1.21.4 | Proceso cálculo | 1d | 2022-11-09 A | 2022-11-10 |  | 1d | 23.31d |
| 309 | 1.3.1.2.1.21.5 | Proceso autorización | 1d | 2022-11-10 A | 2022-11-11 |  | 1d | 22.38d |
| 310 | 1.3.1.2.1.21.6 | Proceso envío | 1d | 2022-11-11 A | 2022-11-14 |  | 1d | 21.44d |
| 311 | 1.3.1.2.1.21.7 | Avance programático Fondo General | 1d | 2022-11-14 A | 2022-11-15 |  | 1d | 20.5d |
| 312 | 1.3.1.2.1.21.8 | Proceso Cancelación Fondo General | 1d | 2022-11-15 A | 2022-11-16 |  | 1d | 19.56d |
| 313 | 1.3.1.2.1.21.9 | Ventanas emergentes de validación | 1d | 2022-11-15 A | 2022-11-16 |  | 1d | 19.56d |

| ID | WBS | Task | Duration | Start | Finish | Complete | Remaining | Total slack |
| --- | --- | --- | --- | --- | --- | --- | --- | --- |
| 314 | 1.3.1.2.1.22 | **Dashboard FFM 70** | 13.19d | 2022-10-12 A | 2022-11-01 | 11% | 11.72d | 29.88d |
| 315 | 1.3.1.2.1.22.1 | Configuración inicial Fondo Fomento Municipal 70 % (FFM 70% ) | 1d | 2022-10-12 A | 2022-10-13 |  | 1d | 42.06d |
| 316 | 1.3.1.2.1.22.2 | Carga inicial | 1d | 2022-10-13 A | 2022-10-14 |  | 1d | 41.12d |
| 317 | 1.3.1.2.1.22.3 | Pantalla Principal | 1d | 2022-10-14 A | 2022-10-17 |  | 1d | 40.19d |
| 318 | 1.3.1.2.1.22.4 | Proceso cálculo | 1d | 2022-10-17 A | 2022-10-18 |  | 1d | 39.25d |
| 319 | 1.3.1.2.1.22.5 | Proceso autorización | 1d | 2022-10-18 A | 2022-10-19 |  | 1d | 38.31d |
| 320 | 1.3.1.2.1.22.6 | Proceso envío | 1d | 2022-10-19 A | 2022-10-20 |  | 1d | 37.38d |
| 321 | 1.3.1.2.1.22.7 | Track | 1d | 2022-10-20 A | 2022-10-20 A | 100% |  |  |
| 322 | 1.3.1.2.1.22.8 | Ventanas emergentes de validación | 1d | 2022-10-21 A | 2022-10-24 |  | 1d | 35.5d |
| 323 | 1.3.1.2.1.22.9 | Configuración inicial Fondo Fomento Municipal 30 % (FFM 30% ) | 1d | 2022-10-31 A | 2022-11-01 |  | 1d | 29.88d |
| 324 | 1.3.1.2.1.23 | **Dashboard FFM 30** | 7.56d | 2022-10-13 A | 2022-10-25 | 13% | 6.62d | 34.56d |
| 325 | 1.3.1.2.1.23.1 | Pantalla Principal | 1d | 2022-10-13 A | 2022-10-14 |  | 1d | 41.12d |
| 326 | 1.3.1.2.1.23.2 | Carga Inicial | 1d | 2022-10-14 A | 2022-10-17 |  | 1d | 40.19d |
| 327 | 1.3.1.2.1.23.3 | Proceso cálculo | 1d | 2022-10-17 A | 2022-10-18 |  | 1d | 39.25d |
| 328 | 1.3.1.2.1.23.4 | Proceso autorización | 1d | 2022-10-18 A | 2022-10-19 |  | 1d | 38.31d |
| 329 | 1.3.1.2.1.23.5 | Proceso envío | 1d | 2022-10-19 A | 2022-10-20 |  | 1d | 37.38d |
| 330 | 1.3.1.2.1.23.6 | Track | 1d | 2022-10-20 A | 2022-10-20 A | 100% |  |  |
| 331 | 1.3.1.2.1.23.7 | Ventanas emergentes de validación | 1d | 2022-10-21 A | 2022-10-24 |  | 1d | 35.5d |
| 332 | 1.3.1.2.1.23.8 | Configuración inicial Impuesto Especial sobre Producción y Servicios (IEPS) | 1d | 2022-10-24 A | 2022-10-25 |  | 1d | 34.56d |
| 333 | 1.3.1.2.1.24 | **Dashboard IEPS** | 7.56d | 2022-10-14 A | 2022-10-26 | 13% | 6.62d | 33.62d |
| 334 | 1.3.1.2.1.24.1 | Carga inicial | 1d | 2022-10-14 A | 2022-10-17 |  | 1d | 40.19d |
| 335 | 1.3.1.2.1.24.2 | Pantalla Principal | 1d | 2022-10-17 A | 2022-10-18 |  | 1d | 39.25d |
| 336 | 1.3.1.2.1.24.3 | Proceso cálculo | 1d | 2022-10-18 A | 2022-10-19 |  | 1d | 38.31d |
| 337 | 1.3.1.2.1.24.4 | Proceso autorización | 1d | 2022-10-19 A | 2022-10-20 |  | 1d | 37.38d |
| 338 | 1.3.1.2.1.24.5 | Proceso envío | 1d | 2022-10-20 A | 2022-10-21 |  | 1d | 36.44d |
| 339 | 1.3.1.2.1.24.6 | Track | 1d | 2022-10-21 A | 2022-10-21 A | 100% |  |  |
| 340 | 1.3.1.2.1.24.7 | Ventanas emergentes de validación | 1d | 2022-10-24 A | 2022-10-25 |  | 1d | 34.56d |
| 341 | 1.3.1.2.1.24.8 | Configuración inicial Impuesto sobre la Venta Final de Gasolinas y Diesel (IEPS GyD) | 1d | 2022-10-25 A | 2022-10-26 |  | 1d | 33.62d |

| ID | WBS | Task | Duration | Start | Finish | Complete | Remaining | Total slack |
| --- | --- | --- | --- | --- | --- | --- | --- | --- |
| 342 | 1.3.1.2.1.25 | **Dashboard IEPS GyD** | 6.62d | 2022-10-14 A | 2022-10-25 | 14% | 5.68d | 34.56d |
| 343 | 1.3.1.2.1.25.1 | Carga inicial | 1d | 2022-10-14 A | 2022-10-17 |  | 1d | 40.19d |
| 344 | 1.3.1.2.1.25.2 | Pantalla Principal | 1d | 2022-10-17 A | 2022-10-18 |  | 1d | 39.25d |
| 345 | 1.3.1.2.1.25.3 | Proceso cálculo | 1d | 2022-10-18 A | 2022-10-19 |  | 1d | 38.31d |
| 346 | 1.3.1.2.1.25.4 | Proceso autorización | 1d | 2022-10-19 A | 2022-10-20 |  | 1d | 37.38d |
| 347 | 1.3.1.2.1.25.5 | Proceso envío | 1d | 2022-10-20 A | 2022-10-21 |  | 1d | 36.44d |
| 348 | 1.3.1.2.1.25.6 | Track | 1d | 2022-10-21 A | 2022-10-21 A | 100% |  |  |
| 349 | 1.3.1.2.1.25.7 | Ventanas emergentes de validación | 1d | 2022-10-22 A | 2022-10-25 |  | 1d | 34.56d |
| 350 | 1.3.1.2.1.26 | **Dashboard ISR Bienes Inmuebles** | 7.56d | 2022-10-17 A | 2022-10-27 | 13% | 6.62d | 32.69d |
| 351 | 1.3.1.2.1.26.1 | Pantalla Principal | 1d | 2022-10-17 A | 2022-10-18 |  | 1d | 39.25d |
| 352 | 1.3.1.2.1.26.2 | Carga inicial | 1d | 2022-10-18 A | 2022-10-19 |  | 1d | 38.31d |
| 353 | 1.3.1.2.1.26.3 | Configuración inicial ISR Bienes Inmuebles | 1d | 2022-10-19 A | 2022-10-20 |  | 1d | 37.38d |
| 354 | 1.3.1.2.1.26.4 | Proceso cálculo | 1d | 2022-10-20 A | 2022-10-21 |  | 1d | 36.44d |
| 355 | 1.3.1.2.1.26.5 | Proceso autorización | 1d | 2022-10-21 A | 2022-10-24 |  | 1d | 35.5d |
| 356 | 1.3.1.2.1.26.6 | Proceso envío | 1d | 2022-10-24 A | 2022-10-25 |  | 1d | 34.56d |
| 357 | 1.3.1.2.1.26.7 | Track | 1d | 2022-10-25 A | 2022-10-25 A | 100% |  |  |
| 358 | 1.3.1.2.1.26.8 | Ventanas emergentes de validación | 1d | 2022-10-26 A | 2022-10-27 |  | 1d | 32.69d |
| 359 | 1.3.1.2.1.27 | **Dashboard FOFIR** | 7.56d | 2022-10-18 A | 2022-10-28 | 13% | 6.62d | 31.75d |
| 360 | 1.3.1.2.1.27.1 | Pantalla Principal | 1d | 2022-10-18 A | 2022-10-19 |  | 1d | 38.31d |
| 361 | 1.3.1.2.1.27.2 | Carga inicial | 1d | 2022-10-19 A | 2022-10-20 |  | 1d | 37.38d |
| 362 | 1.3.1.2.1.27.3 | Configuración inicial Fondo de Fiscalización y Recaudación (FOFIR) | 1d | 2022-10-20 A | 2022-10-21 |  | 1d | 36.44d |
| 363 | 1.3.1.2.1.27.4 | Proceso cálculo | 1d | 2022-10-21 A | 2022-10-24 |  | 1d | 35.5d |
| 364 | 1.3.1.2.1.27.5 | Proceso autorización | 1d | 2022-10-24 A | 2022-10-25 |  | 1d | 34.56d |
| 365 | 1.3.1.2.1.27.6 | Proceso envío | 1d | 2022-10-25 A | 2022-10-26 |  | 1d | 33.62d |
| 366 | 1.3.1.2.1.27.7 | Track | 1d | 2022-10-26 A | 2022-10-26 A | 100% |  |  |
| 367 | 1.3.1.2.1.27.8 | Ventanas emergentes de validación | 1d | 2022-10-27 A | 2022-10-28 |  | 1d | 31.75d |

| ID | WBS | Task | Duration | Start | Finish | Complete | Remaining | Total slack |
| --- | --- | --- | --- | --- | --- | --- | --- | --- |
| 368 | 1.3.1.2.1.28 | **Dashboard ISAN** | 9.44d | 2022-10-19 A | 2022-11-02 | 30% | 6.61d | 28.94d |
| 369 | 1.3.1.2.1.28.1 | Pantalla Principal | 1d | 2022-10-19 A | 2022-10-20 |  | 1d | 37.38d |
| 370 | 1.3.1.2.1.28.2 | Plantilla Carga Masiva ISAN | 1d | 2022-10-20 A | 2022-10-20 A | 100% |  |  |
| 371 | 1.3.1.2.1.28.3 | Api Plantilla caga masiva Municipio - ISAN | 1d | 2022-10-21 A | 2022-10-21 A | 100% |  |  |
| 372 | 1.3.1.2.1.28.4 | Carga inicial | 1d | 2022-10-24 A | 2022-10-25 |  | 1d | 34.56d |
| 373 | 1.3.1.2.1.28.5 | Configuración inicial Impuesto sobre Automóviles Nuevos (ISAN) | 1d | 2022-10-25 A | 2022-10-26 |  | 1d | 33.62d |
| 374 | 1.3.1.2.1.28.6 | Proceso cálculo | 1d | 2022-10-26 A | 2022-10-27 |  | 1d | 32.69d |
| 375 | 1.3.1.2.1.28.7 | Proceso autorización | 1d | 2022-10-27 A | 2022-10-28 |  | 1d | 31.75d |
| 376 | 1.3.1.2.1.28.8 | Proceso envío | 1d | 2022-10-28 A | 2022-10-31 |  | 1d | 30.81d |
| 377 | 1.3.1.2.1.28.9 | Track | 1d | 2022-10-31 A | 2022-10-31 A | 100% |  |  |
| 378 | 1.3.1.2.1.28.10 | Ventanas emergentes de validación | 1d | 2022-11-01 A | 2022-11-02 |  | 1d | 28.94d |
| 379 | 1.3.1.2.1.29 | **Dashboard Comp. ISAN** | 7.56d | 2022-10-20 A | 2022-11-01 | 13% | 6.62d | 29.88d |
| 380 | 1.3.1.2.1.29.1 | Pantalla Principal | 1d | 2022-10-20 A | 2022-10-21 |  | 1d | 36.44d |
| 381 | 1.3.1.2.1.29.2 | Carga inicial | 1d | 2022-10-21 A | 2022-10-24 |  | 1d | 35.5d |
| 382 | 1.3.1.2.1.29.3 | Configuración inicial Compensación ISAN | 1d | 2022-10-24 A | 2022-10-25 |  | 1d | 34.56d |
| 383 | 1.3.1.2.1.29.4 | Proceso cálculo | 1d | 2022-10-25 A | 2022-10-26 |  | 1d | 33.62d |
| 384 | 1.3.1.2.1.29.5 | Proceso autorización | 1d | 2022-10-26 A | 2022-10-27 |  | 1d | 32.69d |
| 385 | 1.3.1.2.1.29.6 | Proceso envío | 1d | 2022-10-27 A | 2022-10-28 |  | 1d | 31.75d |
| 386 | 1.3.1.2.1.29.7 | Track | 1d | 2022-10-28 A | 2022-10-28 A | 100% |  |  |
| 387 | 1.3.1.2.1.29.8 | Ventanas emergentes de validación | 1d | 2022-10-31 A | 2022-11-01 |  | 1d | 29.88d |
| 388 | 1.3.1.2.1.30 | **Dashboard ISN** | 6.62d | 2022-10-21 A | 2022-11-01 | 14% | 5.68d | 29.88d |
| 389 | 1.3.1.2.1.30.1 | Pantalla Principal | 1d | 2022-10-21 A | 2022-10-24 |  | 1d | 35.5d |
| 390 | 1.3.1.2.1.30.2 | Carga configuración inicial fondo ISN | 1d | 2022-10-24 A | 2022-10-25 |  | 1d | 34.56d |
| 391 | 1.3.1.2.1.30.3 | Proceso de cálculo | 1d | 2022-10-25 A | 2022-10-26 |  | 1d | 33.62d |
| 392 | 1.3.1.2.1.30.4 | Proceso de Autorización | 1d | 2022-10-26 A | 2022-10-27 |  | 1d | 32.69d |
| 393 | 1.3.1.2.1.30.5 | Proceso de Envío | 1d | 2022-10-27 A | 2022-10-28 |  | 1d | 31.75d |
| 394 | 1.3.1.2.1.30.6 | Track | 1d | 2022-10-28 A | 2022-10-28 A | 100% |  |  |
| 395 | 1.3.1.2.1.30.7 | Ventanas emergentes de validación | 1d | 2022-10-31 A | 2022-11-01 |  | 1d | 29.88d |

| ID | WBS | Task | Type | Duration | Start | Finish | Complete | Remaining | Total slack |
| --- | --- | --- | --- | --- | --- | --- | --- | --- | --- |
| 396 | 1.3.1.2.1.31 | **Dashboard ICV** |  | 7.56d | 2022-10-24 A | 2022-11-03 | 13% | 6.62d | 28d |
| 397 | 1.3.1.2.1.31.1 | Pantalla Principal |  | 1d | 2022-10-24 A | 2022-10-25 |  | 1d | 34.56d |
| 398 | 1.3.1.2.1.31.2 | Carga Configuración inicial ICV |  | 1d | 2022-10-25 A | 2022-10-26 |  | 1d | 33.62d |
| 399 | 1.3.1.2.1.31.3 | Carga masiva de ICV - (Plantilla) |  | 1d | 2022-10-26 A | 2022-10-27 |  | 1d | 32.69d |
| 400 | 1.3.1.2.1.31.4 | Proceso de cálculo |  | 1d | 2022-10-27 A | 2022-10-28 |  | 1d | 31.75d |
| 401 | 1.3.1.2.1.31.5 | Proceso de Autorización |  | 1d | 2022-10-28 A | 2022-10-31 |  | 1d | 30.81d |
| 402 | 1.3.1.2.1.31.6 | Proceso de Envío |  | 1d | 2022-10-31 A | 2022-11-01 |  | 1d | 29.88d |
| 403 | 1.3.1.2.1.31.7 | Track |  | 1d | 2022-11-01 A | 2022-11-01 A | 100% |  |  |
| 404 | 1.3.1.2.1.31.8 | Ventanas emergentes de validación |  | 1d | 2022-11-02 A | 2022-11-03 |  | 1d | 28d |
| 405 | 1.3.1.2.1.32 | **Dashboard Fondo Ultracrecmiento** |  | 6.62d | 2022-10-25 A | 2022-11-03 | 14% | 5.68d | 28d |
| 406 | 1.3.1.2.1.32.1 | Pantalla Principal |  | 1d | 2022-10-25 A | 2022-10-26 |  | 1d | 33.62d |
| 407 | 1.3.1.2.1.32.2 | Carga configuración inicial Fondo Ultracrecimiento |  | 1d | 2022-10-26 A | 2022-10-27 |  | 1d | 32.69d |
| 408 | 1.3.1.2.1.32.3 | Proceso de Autorización |  | 1d | 2022-10-27 A | 2022-10-28 |  | 1d | 31.75d |
| 409 | 1.3.1.2.1.32.4 | Proceso de Envío |  | 1d | 2022-10-28 A | 2022-10-31 |  | 1d | 30.81d |
| 410 | 1.3.1.2.1.32.5 | Track |  | 1d | 2022-10-31 A | 2022-10-31 A | 100% |  |  |
| 411 | 1.3.1.2.1.32.6 | Ventanas emergentes de validación |  | 1d | 2022-11-01 A | 2022-11-02 |  | 1d | 28.94d |
| 412 | 1.3.1.2.1.32.7 | Generación de reporte |  | 1d | 2022-11-02 A | 2022-11-03 |  | 1d | 28d |
| 413 | 1.3.1.2.1.33 | **Dashboard Fondos Descentralizado** |  | 5.69d | 2022-10-11 A | 2022-10-19 | 14% | 4.88d | 38.31d |
| 414 | 1.3.1.2.1.33.1 | Pantalla Principal | manual | 1d | 2022-10-11 | 2022-10-11 |  |  |  |
| 415 | 1.3.1.2.1.33.2 | Carga configuración inicial Fondo Descentralizado | manual | 1d | 2022-10-11 | 2022-10-11 |  |  |  |
| 416 | 1.3.1.2.1.33.3 | Proceso de cálculo |  | 1d | 2022-10-12 A | 2022-10-13 |  | 1d | 42.06d |
| 417 | 1.3.1.2.1.33.4 | Proceso de Autorización |  | 1d | 2022-10-13 A | 2022-10-14 |  | 1d | 41.12d |
| 418 | 1.3.1.2.1.33.5 | Proceso de Envío |  | 1d | 2022-10-14 A | 2022-10-17 |  | 1d | 40.19d |
| 419 | 1.3.1.2.1.33.6 | Track |  | 1d | 2022-10-17 A | 2022-10-17 A | 100% |  |  |
| 420 | 1.3.1.2.1.33.7 | Ventanas emergentes de validación |  | 1d | 2022-10-18 A | 2022-10-19 |  | 1d | 38.31d |

| ID | WBS | Task | Duration | Start | Finish | Complete | Remaining | Total slack |
| --- | --- | --- | --- | --- | --- | --- | --- | --- |
| 421 | 1.3.1.2.1.34 | **Dashboard Fondos Seguridad** | 7.56d | 2022-10-12 A | 2022-10-24 | 13% | 6.62d | 35.5d |
| 422 | 1.3.1.2.1.34.1 | Pantalla Principal | 1d | 2022-10-12 A | 2022-10-13 |  | 1d | 42.06d |
| 423 | 1.3.1.2.1.34.2 | Carga configuración inicial Fondo Seguridad | 1d | 2022-10-13 A | 2022-10-14 |  | 1d | 41.12d |
| 424 | 1.3.1.2.1.34.3 | Proceso de cálculo | 1d | 2022-10-14 A | 2022-10-17 |  | 1d | 40.19d |
| 425 | 1.3.1.2.1.34.4 | Proceso de Autorización | 1d | 2022-10-17 A | 2022-10-18 |  | 1d | 39.25d |
| 426 | 1.3.1.2.1.34.5 | Proceso de Envío | 1d | 2022-10-18 A | 2022-10-19 |  | 1d | 38.31d |
| 427 | 1.3.1.2.1.34.6 | Track | 1d | 2022-10-19 A | 2022-10-19 A | 100% |  |  |
| 428 | 1.3.1.2.1.34.7 | Ventanas emergentes de validación | 1d | 2022-10-20 A | 2022-10-21 |  | 1d | 36.44d |
| 429 | 1.3.1.2.1.34.8 | Generación de reporte | 1d | 2022-10-21 A | 2022-10-24 |  | 1d | 35.5d |
| 430 | 1.3.1.2.1.35 | **Dashboard Fondos de Desarrollo Municipal** | 7.56d | 2022-10-13 A | 2022-10-25 | 13% | 6.62d | 34.56d |
| 431 | 1.3.1.2.1.35.1 | Pantalla Principal | 1d | 2022-10-13 A | 2022-10-14 |  | 1d | 41.12d |
| 432 | 1.3.1.2.1.35.2 | Carga configuración inicial Fondo Desarrollo Municipal | 1d | 2022-10-14 A | 2022-10-17 |  | 1d | 40.19d |
| 433 | 1.3.1.2.1.35.3 | Proceso de cálculo | 1d | 2022-10-17 A | 2022-10-18 |  | 1d | 39.25d |
| 434 | 1.3.1.2.1.35.4 | Proceso de Autorización | 1d | 2022-10-18 A | 2022-10-19 |  | 1d | 38.31d |
| 435 | 1.3.1.2.1.35.5 | Proceso de Envío | 1d | 2022-10-19 A | 2022-10-20 |  | 1d | 37.38d |
| 436 | 1.3.1.2.1.35.6 | Track | 1d | 2022-10-20 A | 2022-10-20 A | 100% |  |  |
| 437 | 1.3.1.2.1.35.7 | Ventanas emergentes de validación | 1d | 2022-10-21 A | 2022-10-24 |  | 1d | 35.5d |
| 438 | 1.3.1.2.1.35.8 | Generación de reporte | 1d | 2022-10-24 A | 2022-10-25 |  | 1d | 34.56d |
| 439 | 1.3.1.2.1.36 | **Dashboard Fondos FORTAMUN** | 7.56d | 2022-10-14 A | 2022-10-26 | 13% | 6.62d | 33.62d |
| 440 | 1.3.1.2.1.36.1 | Pantalla Principal | 1d | 2022-10-14 A | 2022-10-17 |  | 1d | 40.19d |
| 441 | 1.3.1.2.1.36.2 | Carga configuración inicial Fondo FORTAMUN | 1d | 2022-10-17 A | 2022-10-18 |  | 1d | 39.25d |
| 442 | 1.3.1.2.1.36.3 | Proceso de cálculo | 1d | 2022-10-18 A | 2022-10-19 |  | 1d | 38.31d |
| 443 | 1.3.1.2.1.36.4 | Proceso de Autorización | 1d | 2022-10-19 A | 2022-10-20 |  | 1d | 37.38d |
| 444 | 1.3.1.2.1.36.5 | Proceso de Envío | 1d | 2022-10-20 A | 2022-10-21 |  | 1d | 36.44d |
| 445 | 1.3.1.2.1.36.6 | Track | 1d | 2022-10-21 A | 2022-10-21 A | 100% |  |  |
| 446 | 1.3.1.2.1.36.7 | Ventanas emergentes de validación | 1d | 2022-10-24 A | 2022-10-25 |  | 1d | 34.56d |
| 447 | 1.3.1.2.1.36.8 | Generación de reporte | 1d | 2022-10-25 A | 2022-10-26 |  | 1d | 33.62d |

| ID | WBS | Task | Duration | Start | Finish | Predecessors | Complete | Remaining | Total slack |
| --- | --- | --- | --- | --- | --- | --- | --- | --- | --- |
| 448 | 1.3.1.2.1.37 | **Dashboard Fondos FISM** | 9.44d | 2022-10-17 A | 2022-10-31 |  | 10% | 8.49d | 30.81d |
| 449 | 1.3.1.2.1.37.1 | Pantalla Principal | 1d | 2022-10-17 A | 2022-10-18 |  |  | 1d | 39.25d |
| 450 | 1.3.1.2.1.37.2 | Carga configuración inicial Fondo FISM | 1d | 2022-10-18 A | 2022-10-19 |  |  | 1d | 38.31d |
| 451 | 1.3.1.2.1.37.3 | Proceso de cálculo | 1d | 2022-10-19 A | 2022-10-20 |  |  | 1d | 37.38d |
| 452 | 1.3.1.2.1.37.4 | Proceso de Autorización | 1d | 2022-10-20 A | 2022-10-21 |  |  | 1d | 36.44d |
| 453 | 1.3.1.2.1.37.5 | Proceso de Envío | 1d | 2022-10-21 A | 2022-10-24 |  |  | 1d | 35.5d |
| 454 | 1.3.1.2.1.37.6 | Track | 1d | 2022-10-24 A | 2022-10-24 A |  | 100% |  |  |
| 455 | 1.3.1.2.1.37.7 | Ventanas emergentes de validación | 1d | 2022-10-25 A | 2022-10-26 |  |  | 1d | 33.62d |
| 456 | 1.3.1.2.1.37.8 | Generación de reporte | 1d | 2022-10-26 A | 2022-10-27 |  |  | 1d | 32.69d |
| 457 | 1.3.1.2.1.37.9 | Generador de estadísticas | 1d | 2022-10-27 A | 2022-10-28 |  |  | 1d | 31.75d |
| 458 | 1.3.1.2.1.37.10 | Generador de reportes | 1d | 2022-10-28 A | 2022-10-31 |  |  | 1d | 30.81d |
| 459 | 1.3.1.3 | **sprint 6** | 24.44d | 2022-10-11 A | 2022-11-16 | 31 | 22% | 18.95d | 0d |
| 460 | 1.3.1.3.1 | **Módulo DAMOP** | 24.44d | 2022-10-11 A | 2022-11-16 |  | 22% | 18.95d | 0d |
| 461 | 1.3.1.3.1.1 | **Base** | 3.81d | 2022-10-11 A | 2022-10-17 |  | 25% | 2.86d | 19.62d |
| 462 | 1.3.1.3.1.1.1 | Pantalla Principal | 1d | 2022-10-11 A | 2022-10-12 |  |  | 1d | 22.44d |
| 463 | 1.3.1.3.1.1.2 | Pop up Notificaciones | 1d | 2022-10-12 A | 2022-10-13 |  |  | 1d | 21.5d |
| 464 | 1.3.1.3.1.1.3 | Contador de Notificaciones (Icono campanita) | 1d | 2022-10-13 A | 2022-10-13 A |  | 100% |  |  |
| 465 | 1.3.1.3.1.1.4 | Bandeja entrada de Notificaciones | 1d | 2022-10-14 A | 2022-10-17 |  |  | 1d | 19.62d |
| 466 | 1.3.1.3.1.2 | **Administración de Municipios** | 12.25d | 2022-10-12 A | 2022-10-31 |  | 15% | 10.37d | 10.25d |
| 467 | 1.3.1.3.1.2.1 | Pantalla principal | 1d | 2022-10-12 A | 2022-10-13 |  |  | 1d | 21.5d |
| 468 | 1.3.1.3.1.2.2 | Insertar | 1d | 2022-10-13 A | 2022-10-13 A |  | 100% |  |  |
| 469 | 1.3.1.3.1.2.3 | Contactar Municipio | 1d | 2022-10-14 A | 2022-10-17 |  |  | 1d | 19.62d |
| 470 | 1.3.1.3.1.2.4 | Ver Detalles | 1d | 2022-10-17 A | 2022-10-18 |  |  | 1d | 18.69d |
| 471 | 1.3.1.3.1.2.5 | Configuración de Dashboard | 1d | 2022-10-18 A | 2022-10-19 |  |  | 1d | 17.75d |
| 472 | 1.3.1.3.1.2.6 | Exportación de dashboard PDF | 1d | 2022-10-19 A | 2022-10-20 |  |  | 1d | 16.81d |
| 473 | 1.3.1.3.1.2.7 | Exportación de dashboard Excel | 1d | 2022-10-20 A | 2022-10-21 |  |  | 1d | 15.88d |
| 474 | 1.3.1.3.1.2.8 | Paginación Dashboard | 1d | 2022-10-21 A | 2022-10-24 |  |  | 1d | 14.94d |
| 475 | 1.3.1.3.1.2.9 | Busqueda Dash board | 1d | 2022-10-24 A | 2022-10-25 |  |  | 1d | 14d |
| 476 | 1.3.1.3.1.2.10 | Ventanas emergentes de validación | 1d | 2022-10-25 A | 2022-10-26 |  |  | 1d | 13.06d |
| 477 | 1.3.1.3.1.2.11 | Modificar | 1d | 2022-10-26 A | 2022-10-26 A |  | 100% |  |  |
| 478 | 1.3.1.3.1.2.12 | Subida de Archivos | 1d | 2022-10-27 A | 2022-10-28 |  |  | 1d | 11.19d |
| 479 | 1.3.1.3.1.2.13 | Descarga de PDF | 1d | 2022-10-28 A | 2022-10-31 |  |  | 1d | 10.25d |

| ID | WBS | Task | Duration | Start | Finish | Complete | Remaining | Total slack |
| --- | --- | --- | --- | --- | --- | --- | --- | --- |
| 480 | 1.3.1.3.1.3 | **Administración de Avisos** | 9.38d | 2022-10-13 A | 2022-10-26 A | 100% |  |  |
| 481 | 1.3.1.3.1.3.1 | Pantalla principal | 1d | 2022-10-13 A | 2022-10-13 A | 100% |  |  |
| 482 | 1.3.1.3.1.3.2 | Agregar | 1d | 2022-10-14 A | 2022-10-14 A | 100% |  |  |
| 483 | 1.3.1.3.1.3.3 | Eliminar | 1d | 2022-10-17 A | 2022-10-17 A | 100% |  |  |
| 484 | 1.3.1.3.1.3.4 | Editar | 1d | 2022-10-18 A | 2022-10-18 A | 100% |  |  |
| 485 | 1.3.1.3.1.3.5 | Configuración de Dashboard | 1d | 2022-10-19 A | 2022-10-19 A | 100% |  |  |
| 486 | 1.3.1.3.1.3.6 | Exportación de dashboard PDF | 1d | 2022-10-20 A | 2022-10-20 A | 100% |  |  |
| 487 | 1.3.1.3.1.3.7 | Exportación de dashboard Excel | 1d | 2022-10-21 A | 2022-10-21 A | 100% |  |  |
| 488 | 1.3.1.3.1.3.8 | Paginación Dashboard | 1d | 2022-10-24 A | 2022-10-24 A | 100% |  |  |
| 489 | 1.3.1.3.1.3.9 | Busqueda Dash board | 1d | 2022-10-25 A | 2022-10-25 A | 100% |  |  |
| 490 | 1.3.1.3.1.3.10 | Ventanas emergentes de validación | 1d | 2022-10-26 A | 2022-10-26 A | 100% |  |  |
| 491 | 1.3.1.3.1.4 | **Administración de Eventos** | 9.38d | 2022-10-14 A | 2022-10-27 A | 100% |  |  |
| 492 | 1.3.1.3.1.4.1 | Pantalla principal | 1d | 2022-10-14 A | 2022-10-14 A | 100% |  |  |
| 493 | 1.3.1.3.1.4.2 | Agregar | 1d | 2022-10-17 A | 2022-10-17 A | 100% |  |  |
| 494 | 1.3.1.3.1.4.3 | Eliminar | 1d | 2022-10-18 A | 2022-10-18 A | 100% |  |  |
| 495 | 1.3.1.3.1.4.4 | Editar | 1d | 2022-10-19 A | 2022-10-19 A | 100% |  |  |
| 496 | 1.3.1.3.1.4.5 | Configuración de Dashboard | 1d | 2022-10-20 A | 2022-10-20 A | 100% |  |  |
| 497 | 1.3.1.3.1.4.6 | Exportación de dashboard PDF | 1d | 2022-10-21 A | 2022-10-21 A | 100% |  |  |
| 498 | 1.3.1.3.1.4.7 | Exportación de dashboard Excel | 1d | 2022-10-24 A | 2022-10-24 A | 100% |  |  |
| 499 | 1.3.1.3.1.4.8 | Paginación Dashboard | 1d | 2022-10-25 A | 2022-10-25 A | 100% |  |  |
| 500 | 1.3.1.3.1.4.9 | Busqueda Dash board | 1d | 2022-10-26 A | 2022-10-26 A | 100% |  |  |
| 501 | 1.3.1.3.1.4.10 | Ventanas emergentes de validación | 1d | 2022-10-27 A | 2022-10-27 A | 100% |  |  |
| 502 | 1.3.1.3.1.5 | **Administración de Conceptos** | 3.81d | 2022-10-17 A | 2022-10-21 |  | 3.81d | 15.88d |
| 503 | 1.3.1.3.1.5.1 | Pantalla principal | 1d | 2022-10-17 A | 2022-10-18 |  | 1d | 18.69d |
| 504 | 1.3.1.3.1.5.2 | Agregar | 1d | 2022-10-18 A | 2022-10-19 |  | 1d | 17.75d |
| 505 | 1.3.1.3.1.5.3 | Eliminar | 1d | 2022-10-19 A | 2022-10-20 |  | 1d | 16.81d |
| 506 | 1.3.1.3.1.5.4 | Editar | 1d | 2022-10-20 A | 2022-10-21 |  | 1d | 15.88d |

| ID | WBS | Task | Duration | Start | Finish | Complete | Remaining | Total slack | Constraint |
| --- | --- | --- | --- | --- | --- | --- | --- | --- | --- |
| 507 | 1.3.1.3.1.6 | **Administración tasa interés BANXICO** | 5.62d | 2022-10-18 A | 2022-10-25 A | 100% |  |  |  |
| 508 | 1.3.1.3.1.6.1 | Pantalla principal | 1d | 2022-10-18 A | 2022-10-18 A | 100% |  |  |  |
| 509 | 1.3.1.3.1.6.2 | Insertar | 1d | 2022-10-19 A | 2022-10-19 A | 100% |  |  |  |
| 510 | 1.3.1.3.1.6.3 | Modificar | 1d | 2022-10-20 A | 2022-10-20 A | 100% |  |  |  |
| 511 | 1.3.1.3.1.6.4 | Eliminar | 1d | 2022-10-21 A | 2022-10-21 A | 100% |  |  |  |
| 512 | 1.3.1.3.1.6.5 | Visualizar | 1d | 2022-10-24 A | 2022-10-24 A | 100% |  |  |  |
| 513 | 1.3.1.3.1.6.6 | Job de Ejecucion automatica | 1d | 2022-10-25 A | 2022-10-25 A | 100% |  |  |  |
| 514 | 1.3.1.3.1.7 | **Anticipo Participaciones** | 14.06d | 2022-10-19 A | 2022-11-08 | 7% | 13.12d | 3.75d |  |
| 515 | 1.3.1.3.1.7.1 | Pantalla principal | 1d | 2022-10-19 A | 2022-10-20 |  | 1d | 16.81d |  |
| 516 | 1.3.1.3.1.7.2 | Agregar | 1d | 2022-10-20 A | 2022-10-21 |  | 1d | 15.88d |  |
| 517 | 1.3.1.3.1.7.3 | Eliminar | 1d | 2022-10-21 A | 2022-10-24 |  | 1d | 14.94d |  |
| 518 | 1.3.1.3.1.7.4 | Editar | 1d | 2022-10-24 A | 2022-10-25 |  | 1d | 14d |  |
| 519 | 1.3.1.3.1.7.5 | Configuración de Dashboard | 1d | 2022-10-25 A | 2022-10-26 |  | 1d | 13.06d |  |
| 520 | 1.3.1.3.1.7.6 | Exportación de dashboard PDF | 1d | 2022-10-26 A | 2022-10-27 |  | 1d | 12.12d |  |
| 521 | 1.3.1.3.1.7.7 | Exportación de dashboard Excel | 1d | 2022-10-27 A | 2022-10-28 |  | 1d | 11.19d |  |
| 522 | 1.3.1.3.1.7.8 | Paginación Dashboard | 1d | 2022-10-28 A | 2022-10-31 |  | 1d | 10.25d |  |
| 523 | 1.3.1.3.1.7.9 | Busqueda Dash board | 1d | 2022-10-31 A | 2022-11-01 |  | 1d | 9.31d |  |
| 524 | 1.3.1.3.1.7.10 | Ventanas emergentes de validación | 1d | 2022-11-01 A | 2022-11-02 |  | 1d | 8.38d |  |
| 525 | 1.3.1.3.1.7.11 | Carga masiva | 1d | 2022-11-02 A | 2022-11-03 |  | 1d | 7.44d |  |
| 526 | 1.3.1.3.1.7.12 | Copiar información del mes anterior | 1d | 2022-11-03 A | 2022-11-04 |  | 1d | 6.5d |  |
| 527 | 1.3.1.3.1.7.13 | Proceso de Ajuste | 1d | 2022-11-04 A | 2022-11-07 |  | 1d | 5.56d |  |
| 528 | 1.3.1.3.1.7.14 | Proceso de Enviar | 1d | 2022-11-07 A | 2022-11-08 |  | 1d | 4.62d |  |
| 529 | 1.3.1.3.1.7.15 | Track | 1d | 2022-11-08 A | 2022-11-08 A | 100% |  |  |  |
| 530 | 1.3.1.3.1.8 | **Solicitud de Recursos** | 13.12d | 2022-10-20 A | 2022-11-08 | 7% | 12.25d | 3.75d |  |
| 531 | 1.3.1.3.1.8.1 | Pantalla principal | 1d | 2022-10-20 | 2022-10-21 |  |  | 15.88d | start no earlier than 2022-10-20 |
| 532 | 1.3.1.3.1.8.2 | Agregar | 1d | 2022-10-20 | 2022-10-21 |  |  | 15.88d | start no earlier than 2022-10-20 |
| 533 | 1.3.1.3.1.8.3 | Eliminar | 1d | 2022-10-24 | 2022-10-25 |  |  | 14d | start no earlier than 2022-10-24 |
| 534 | 1.3.1.3.1.8.4 | Editar | 1d | 2022-10-24 | 2022-10-25 |  |  | 14d | start no earlier than 2022-10-24 |
| 535 | 1.3.1.3.1.8.5 | Configuración de Dashboard | 1d | 2022-10-25 A | 2022-10-26 |  | 1d | 13.06d |  |
| 536 | 1.3.1.3.1.8.6 | Exportación de dashboard PDF | 1d | 2022-10-26 A | 2022-10-27 |  | 1d | 12.12d |  |
| 537 | 1.3.1.3.1.8.7 | Exportación de dashboard Excel | 1d | 2022-10-27 A | 2022-10-28 |  | 1d | 11.19d |  |
| 538 | 1.3.1.3.1.8.8 | Paginación Dashboard | 1d | 2022-10-28 A | 2022-10-31 |  | 1d | 10.25d |  |
| 539 | 1.3.1.3.1.8.9 | Busqueda Dash board | 1d | 2022-10-31 A | 2022-11-01 |  | 1d | 9.31d |  |
| 540 | 1.3.1.3.1.8.10 | Ventanas emergentes de validación | 1d | 2022-11-01 A | 2022-11-02 |  | 1d | 8.38d |  |
| 541 | 1.3.1.3.1.8.11 | Carga de documento | 1d | 2022-11-02 A | 2022-11-03 |  | 1d | 7.44d |  |
| 542 | 1.3.1.3.1.8.12 | Copiar información del mes anterior | 1d | 2022-11-03 A | 2022-11-04 |  | 1d | 6.5d |  |
| 543 | 1.3.1.3.1.8.13 | Dashboard de Solicitud de Recursos sección Solicitudes Pendientes | 1d | 2022-11-04 A | 2022-11-07 |  | 1d | 5.56d |  |
| 544 | 1.3.1.3.1.8.14 | Dashboard de Solicitud de Recursos sección Solicitudes en trámite | 1d | 2022-11-07 A | 2022-11-08 |  | 1d | 4.62d |  |
| 545 | 1.3.1.3.1.8.15 | Track | 1d | 2022-11-08 A | 2022-11-08 A | 100% |  |  |  |

| ID | WBS | Task | Duration | Start | Finish | Complete | Remaining | Total slack |
| --- | --- | --- | --- | --- | --- | --- | --- | --- |
| 546 | 1.3.1.3.1.9 | **Dashboard Participaciones Federales** | 8.5d | 2022-10-21 A | 2022-11-03 | 11% | 7.56d | 7.44d |
| 547 | 1.3.1.3.1.9.1 | Pantalla principal | 1d | 2022-10-21 A | 2022-10-24 |  | 1d | 14.94d |
| 548 | 1.3.1.3.1.9.2 | Busqueda de Mes | 1d | 2022-10-24 A | 2022-10-25 |  | 1d | 14d |
| 549 | 1.3.1.3.1.9.3 | Busqueda de Año | 1d | 2022-10-25 A | 2022-10-26 |  | 1d | 13.06d |
| 550 | 1.3.1.3.1.9.4 | Busqueda general | 1d | 2022-10-26 A | 2022-10-27 |  | 1d | 12.12d |
| 551 | 1.3.1.3.1.9.5 | Editar | 1d | 2022-10-27 A | 2022-10-28 |  | 1d | 11.19d |
| 552 | 1.3.1.3.1.9.6 | Proceso de Autorizar | 1d | 2022-10-28 A | 2022-10-31 |  | 1d | 10.25d |
| 553 | 1.3.1.3.1.9.7 | Proceso de Enviar | 1d | 2022-10-31 A | 2022-11-01 |  | 1d | 9.31d |
| 554 | 1.3.1.3.1.9.8 | Track | 1d | 2022-11-01 A | 2022-11-01 A | 100% |  |  |
| 555 | 1.3.1.3.1.9.9 | Ventanas emergentes de validación | 1d | 2022-11-02 A | 2022-11-03 |  | 1d | 7.44d |
| 556 | 1.3.1.3.1.10 | **Dashboard ISN** | 7.56d | 2022-10-24 A | 2022-11-03 | 13% | 6.62d | 7.44d |
| 557 | 1.3.1.3.1.10.1 | Pantalla principal | 1d | 2022-10-24 A | 2022-10-25 |  | 1d | 14d |
| 558 | 1.3.1.3.1.10.2 | Busqueda de Mes | 1d | 2022-10-25 A | 2022-10-26 |  | 1d | 13.06d |
| 559 | 1.3.1.3.1.10.3 | Busqueda de Año | 1d | 2022-10-26 A | 2022-10-27 |  | 1d | 12.12d |
| 560 | 1.3.1.3.1.10.4 | Busqueda | 1d | 2022-10-27 A | 2022-10-28 |  | 1d | 11.19d |
| 561 | 1.3.1.3.1.10.5 | Proceso de Autorización | 1d | 2022-10-28 A | 2022-10-31 |  | 1d | 10.25d |
| 562 | 1.3.1.3.1.10.6 | Proceso de Envío | 1d | 2022-10-31 A | 2022-11-01 |  | 1d | 9.31d |
| 563 | 1.3.1.3.1.10.7 | Track | 1d | 2022-11-01 A | 2022-11-01 A | 100% |  |  |
| 564 | 1.3.1.3.1.10.8 | Ventanas emergentes de validación | 1d | 2022-11-02 A | 2022-11-03 |  | 1d | 7.44d |
| 565 | 1.3.1.3.1.11 | **Dashboard ICV** | 7.56d | 2022-10-25 A | 2022-11-04 | 13% | 6.62d | 6.5d |
| 566 | 1.3.1.3.1.11.1 | Pantalla principal | 1d | 2022-10-25 A | 2022-10-26 |  | 1d | 13.06d |
| 567 | 1.3.1.3.1.11.2 | Busqueda de Mes | 1d | 2022-10-26 A | 2022-10-27 |  | 1d | 12.12d |
| 568 | 1.3.1.3.1.11.3 | Busqueda de Año | 1d | 2022-10-27 A | 2022-10-28 |  | 1d | 11.19d |
| 569 | 1.3.1.3.1.11.4 | Busqueda | 1d | 2022-10-28 A | 2022-10-31 |  | 1d | 10.25d |
| 570 | 1.3.1.3.1.11.5 | Proceso de Autorización | 1d | 2022-10-31 A | 2022-11-01 |  | 1d | 9.31d |
| 571 | 1.3.1.3.1.11.6 | Proceso de Envío | 1d | 2022-11-01 A | 2022-11-02 |  | 1d | 8.38d |
| 572 | 1.3.1.3.1.11.7 | Track | 1d | 2022-11-02 A | 2022-11-02 A | 100% |  |  |
| 573 | 1.3.1.3.1.11.8 | Ventanas emergentes de validación | 1d | 2022-11-03 A | 2022-11-04 |  | 1d | 6.5d |

| ID | WBS | Task | Duration | Start | Finish | Complete | Remaining | Total slack | Free slack |
| --- | --- | --- | --- | --- | --- | --- | --- | --- | --- |
| 574 | 1.3.1.3.1.12 | **Dashboard Fondos FORTAMUN** | 7.56d | 2022-10-26 A | 2022-11-07 | 13% | 6.62d | 5.56d |  |
| 575 | 1.3.1.3.1.12.1 | Pantalla principal | 1d | 2022-10-26 A | 2022-10-27 |  | 1d | 12.12d |  |
| 576 | 1.3.1.3.1.12.2 | Busqueda de Mes | 1d | 2022-10-27 A | 2022-10-28 |  | 1d | 11.19d |  |
| 577 | 1.3.1.3.1.12.3 | Busqueda de Año | 1d | 2022-10-28 A | 2022-10-31 |  | 1d | 10.25d |  |
| 578 | 1.3.1.3.1.12.4 | Busqueda | 1d | 2022-10-31 A | 2022-11-01 |  | 1d | 9.31d |  |
| 579 | 1.3.1.3.1.12.5 | Proceso de Autorización | 1d | 2022-11-01 A | 2022-11-02 |  | 1d | 8.38d |  |
| 580 | 1.3.1.3.1.12.6 | Proceso de Envío | 1d | 2022-11-02 A | 2022-11-03 |  | 1d | 7.44d |  |
| 581 | 1.3.1.3.1.12.7 | Track | 1d | 2022-11-03 A | 2022-11-03 A | 100% |  |  |  |
| 582 | 1.3.1.3.1.12.8 | Ventanas emergentes de validación | 1d | 2022-11-04 A | 2022-11-07 |  | 1d | 5.56d |  |
| 583 | 1.3.1.3.1.13 | **Dashboard Fondos FISM** | 7.56d | 2022-10-27 A | 2022-11-08 | 13% | 6.62d | 4.62d |  |
| 584 | 1.3.1.3.1.13.1 | Pantalla principal | 1d | 2022-10-27 A | 2022-10-28 |  | 1d | 11.19d |  |
| 585 | 1.3.1.3.1.13.2 | Busqueda de Mes | 1d | 2022-10-28 A | 2022-10-31 |  | 1d | 10.25d |  |
| 586 | 1.3.1.3.1.13.3 | Busqueda de Año | 1d | 2022-10-31 A | 2022-11-01 |  | 1d | 9.31d |  |
| 587 | 1.3.1.3.1.13.4 | Busqueda | 1d | 2022-11-01 A | 2022-11-02 |  | 1d | 8.38d |  |
| 588 | 1.3.1.3.1.13.5 | Proceso de Autorización | 1d | 2022-11-02 A | 2022-11-03 |  | 1d | 7.44d |  |
| 589 | 1.3.1.3.1.13.6 | Proceso de Envío | 1d | 2022-11-03 A | 2022-11-04 |  | 1d | 6.5d |  |
| 590 | 1.3.1.3.1.13.7 | Track | 1d | 2022-11-04 A | 2022-11-04 A | 100% |  |  |  |
| 591 | 1.3.1.3.1.13.8 | Ventanas emergentes de validación | 1d | 2022-11-05 A | 2022-11-08 |  | 1d | 4.62d |  |
| 592 | 1.3.1.3.1.14 | **Administración de Fondo ultra crecimiento Zona metropolitana y no Metropolitana** | 12.25d | 2022-10-28 A | 2022-11-16 | 6% | 11.48d | 0d |  |
| 593 | 1.3.1.3.1.14.1 | Pantalla principal | 1d | 2022-10-28 A | 2022-10-31 |  | 1d | 10.25d |  |
| 594 | 1.3.1.3.1.14.2 | Filtro mes | 1d | 2022-10-31 A | 2022-11-01 |  | 1d | 9.31d |  |
| 595 | 1.3.1.3.1.14.3 | Filtro año | 1d | 2022-11-01 A | 2022-11-02 |  | 1d | 8.38d |  |
| 596 | 1.3.1.3.1.14.4 | Filtro busqueda | 1d | 2022-11-02 A | 2022-11-03 |  | 1d | 7.44d |  |
| 597 | 1.3.1.3.1.14.5 | Configuración de Dashboard | 1d | 2022-11-03 A | 2022-11-04 |  | 1d | 6.5d |  |
| 598 | 1.3.1.3.1.14.6 | Exportación de dashboard PDF | 1d | 2022-11-04 A | 2022-11-07 |  | 1d | 5.56d |  |
| 599 | 1.3.1.3.1.14.7 | Exportación de dashboard Excel | 1d | 2022-11-05 A | 2022-11-08 |  | 1d | 4.62d |  |
| 600 | 1.3.1.3.1.14.8 | Paginación Dashboard | 1d | 2022-11-07 A | 2022-11-08 |  | 1d | 4.62d |  |
| 601 | 1.3.1.3.1.14.9 | Busqueda Dash board | 1d | 2022-11-08 A | 2022-11-09 |  | 1d | 3.69d |  |
| 602 | 1.3.1.3.1.14.10 | Ventanas emergentes de Autorizar por municipio | 1d | 2022-11-09 A | 2022-11-10 |  | 1d | 2.75d |  |
| 603 | 1.3.1.3.1.14.11 | Ventanas emergentes de Track por municipio | 1d | 2022-11-10 A | 2022-11-10 A | 100% |  |  |  |
| 604 | 1.3.1.3.1.14.12 | Ventanas emergentes de detalles por municipio | 1d | 2022-11-11 A | 2022-11-14 |  | 1d | 0.88d |  |
| 605 | 1.3.1.3.1.14.13 | Ventanas emergentes de Adjuntar oficio por municipio | 1d | 2022-11-14 A | 2022-11-15 |  | 1d | -0.06d | 0d |
| 606 | 1.3.1.3.1.14.14 | Ventana repositorio de oficios por municipio | 1d | 2022-11-15 A | 2022-11-16 |  | 1d | -1d | 0d |
| 607 | 1.3.1.3.1.14.15 | boton borrar oficio | 1d | 2022-11-15 A | 2022-11-16 |  | 1d | -1d | 0d |
| 608 | 1.3.1.3.1.14.16 | boton configurar oficio | 1d | 2022-11-15 A | 2022-11-16 |  | 1d | -1d | 0d |

| ID | WBS | Task | Duration | Start | Finish | Complete | Remaining | Total slack |
| --- | --- | --- | --- | --- | --- | --- | --- | --- |
| 609 | 1.3.1.3.1.15 | **Administración de Fondo descentralizado Zona Metropolitana y no Metropolitana** | 15.06d | 2022-10-11 A | 2022-11-02 | 6% | 14.12d | 8.38d |
| 610 | 1.3.1.3.1.15.1 | Pantalla principal | 1d | 2022-10-11 A | 2022-10-12 |  | 1d | 22.44d |
| 611 | 1.3.1.3.1.15.2 | Filtro mes | 1d | 2022-10-12 A | 2022-10-13 |  | 1d | 21.5d |
| 612 | 1.3.1.3.1.15.3 | Filtro año | 1d | 2022-10-13 A | 2022-10-14 |  | 1d | 20.56d |
| 613 | 1.3.1.3.1.15.4 | Filtro busqueda | 1d | 2022-10-14 A | 2022-10-17 |  | 1d | 19.62d |
| 614 | 1.3.1.3.1.15.5 | Configuración de Dashboard | 1d | 2022-10-17 A | 2022-10-18 |  | 1d | 18.69d |
| 615 | 1.3.1.3.1.15.6 | Exportación de dashboard PDF | 1d | 2022-10-18 A | 2022-10-19 |  | 1d | 17.75d |
| 616 | 1.3.1.3.1.15.7 | Exportación de dashboard Excel | 1d | 2022-10-19 A | 2022-10-20 |  | 1d | 16.81d |
| 617 | 1.3.1.3.1.15.8 | Paginación Dashboard | 1d | 2022-10-20 A | 2022-10-21 |  | 1d | 15.88d |
| 618 | 1.3.1.3.1.15.9 | Busqueda Dash board | 1d | 2022-10-21 A | 2022-10-24 |  | 1d | 14.94d |
| 619 | 1.3.1.3.1.15.10 | Ventanas emergentes de Autorizar por municipio | 1d | 2022-10-24 A | 2022-10-25 |  | 1d | 14d |
| 620 | 1.3.1.3.1.15.11 | Ventanas emergentes de Track por municipio | 1d | 2022-10-25 A | 2022-10-25 A | 100% |  |  |
| 621 | 1.3.1.3.1.15.12 | Ventanas emergentes de detalles por municipio | 1d | 2022-10-26 A | 2022-10-27 |  | 1d | 12.12d |
| 622 | 1.3.1.3.1.15.13 | Ventanas emergentes de Adjuntar oficio por municipio | 1d | 2022-10-27 A | 2022-10-28 |  | 1d | 11.19d |
| 623 | 1.3.1.3.1.15.14 | Ventana repositorio de oficios por municipio | 1d | 2022-10-28 A | 2022-10-31 |  | 1d | 10.25d |
| 624 | 1.3.1.3.1.15.15 | boton borrar oficio | 1d | 2022-10-31 A | 2022-11-01 |  | 1d | 9.31d |
| 625 | 1.3.1.3.1.15.16 | boton configurar oficio | 1d | 2022-11-01 A | 2022-11-02 |  | 1d | 8.38d |
| 626 | 1.3.1.3.1.16 | **Administración de Fondo de seguridad para municipios Metropolitanos y no Metropolitanos** | 11.25d | 2022-10-12 A | 2022-10-27 | 8% | 10.31d | 11.25d |
| 627 | 1.3.1.3.1.16.1 | Pantalla principal | 1d | 2022-10-12 A | 2022-10-13 |  | 1d | 21.5d |
| 628 | 1.3.1.3.1.16.2 | Filtro mes | 1d | 2022-10-13 A | 2022-10-14 |  | 1d | 20.56d |
| 629 | 1.3.1.3.1.16.3 | Filtro año | 1d | 2022-10-14 A | 2022-10-17 |  | 1d | 19.62d |
| 630 | 1.3.1.3.1.16.4 | Filtro busqueda | 1d | 2022-10-17 A | 2022-10-18 |  | 1d | 18.69d |
| 631 | 1.3.1.3.1.16.5 | Configuración de Dashboard | 1d | 2022-10-18 A | 2022-10-19 |  | 1d | 17.75d |
| 632 | 1.3.1.3.1.16.6 | Exportación de dashboard PDF | 1d | 2022-10-19 A | 2022-10-20 |  | 1d | 16.81d |
| 633 | 1.3.1.3.1.16.7 | Exportación de dashboard Excel | 1d | 2022-10-20 A | 2022-10-21 |  | 1d | 15.88d |
| 634 | 1.3.1.3.1.16.8 | Paginación Dashboard | 1d | 2022-10-21 A | 2022-10-24 |  | 1d | 14.94d |
| 635 | 1.3.1.3.1.16.9 | Busqueda Dash board | 1d | 2022-10-24 A | 2022-10-25 |  | 1d | 14d |
| 636 | 1.3.1.3.1.16.10 | Ventanas emergentes de Autorizar | 1d | 2022-10-25 A | 2022-10-26 |  | 1d | 13.06d |
| 637 | 1.3.1.3.1.16.11 | Ventanas emergentes de Enviar | 1d | 2022-10-26 A | 2022-10-27 |  | 1d | 12.12d |
| 638 | 1.3.1.3.1.16.12 | Ventanas emergentes de Track | 1d | 2022-10-27 A | 2022-10-27 A | 100% |  |  |

| ID | WBS | Task | Duration | Start | Finish | Predecessors | Complete | Remaining | Total slack |
| --- | --- | --- | --- | --- | --- | --- | --- | --- | --- |
| 639 | 1.3.1.3.1.17 | **Administración de Fondo de desarrollo municipal Metropolitanos y no Metropolitanos** | 15.06d | 2022-10-13 A | 2022-11-04 |  | 6% | 14.12d | 6.5d |
| 640 | 1.3.1.3.1.17.1 | Pantalla principal | 1d | 2022-10-13 A | 2022-10-14 |  |  | 1d | 20.56d |
| 641 | 1.3.1.3.1.17.2 | Filtro mes | 1d | 2022-10-14 A | 2022-10-17 |  |  | 1d | 19.62d |
| 642 | 1.3.1.3.1.17.3 | Filtro año | 1d | 2022-10-17 A | 2022-10-18 |  |  | 1d | 18.69d |
| 643 | 1.3.1.3.1.17.4 | Filtro busqueda | 1d | 2022-10-18 A | 2022-10-19 |  |  | 1d | 17.75d |
| 644 | 1.3.1.3.1.17.5 | Configuración de Dashboard | 1d | 2022-10-19 A | 2022-10-20 |  |  | 1d | 16.81d |
| 645 | 1.3.1.3.1.17.6 | Exportación de dashboard PDF | 1d | 2022-10-20 A | 2022-10-21 |  |  | 1d | 15.88d |
| 646 | 1.3.1.3.1.17.7 | Exportación de dashboard Excel | 1d | 2022-10-21 A | 2022-10-24 |  |  | 1d | 14.94d |
| 647 | 1.3.1.3.1.17.8 | Paginación Dashboard | 1d | 2022-10-24 A | 2022-10-25 |  |  | 1d | 14d |
| 648 | 1.3.1.3.1.17.9 | Busqueda Dash board | 1d | 2022-10-25 A | 2022-10-26 |  |  | 1d | 13.06d |
| 649 | 1.3.1.3.1.17.10 | Ventanas emergentes de Autorizar | 1d | 2022-10-26 A | 2022-10-27 |  |  | 1d | 12.12d |
| 650 | 1.3.1.3.1.17.11 | Ventanas emergentes de Enviar | 1d | 2022-10-27 A | 2022-10-28 |  |  | 1d | 11.19d |
| 651 | 1.3.1.3.1.17.12 | Ventanas emergentes de Track | 1d | 2022-10-28 A | 2022-10-28 A |  | 100% |  |  |
| 652 | 1.3.1.3.1.17.13 | Módulo contacto con municipios | 1d | 2022-10-31 A | 2022-11-01 |  |  | 1d | 9.31d |
| 653 | 1.3.1.3.1.17.14 | Generador de reportes | 1d | 2022-11-01 A | 2022-11-02 |  |  | 1d | 8.38d |
| 654 | 1.3.1.3.1.17.15 | Generador de Estadísticas | 1d | 2022-11-02 A | 2022-11-03 |  |  | 1d | 7.44d |
| 655 | 1.3.1.3.1.17.16 | Dashboard Calendario | 1d | 2022-11-03 A | 2022-11-04 |  |  | 1d | 6.5d |
| 656 | 1.3.1.4 | **sprint 7** | 4.75d | 2022-11-15 A | 2022-11-23 | 459 | 17% | 3.96d | 15.81d |
| 657 | 1.3.1.4.1 | **Módulo DCCP** | 4.75d | 2022-11-15 A | 2022-11-23 |  | 17% | 3.96d | 15.81d |
| 658 | 1.3.1.4.1.1 | **Dashboard Perfil DCCP** | 4.75d | 2022-11-15 A | 2022-11-23 |  | 17% | 3.96d | 15.81d |
| 659 | 1.3.1.4.1.1.1 | Bloqueo de Sesión | 1d | 2022-11-15 A | 2022-11-17 |  |  | 1d | 18.56d |
| 660 | 1.3.1.4.1.1.2 | Perfil | 1d | 2022-11-16 A | 2022-11-17 |  |  | 1d | 18.56d |
| 661 | 1.3.1.4.1.1.3 | Pop up Notificaciones | 1d | 2022-11-17 A | 2022-11-18 |  |  | 1d | 17.69d |
| 662 | 1.3.1.4.1.1.4 | Contador de Notificaciones (Icono campanita) | 1d | 2022-11-18 A | 2022-11-18 A |  | 100% |  |  |
| 663 | 1.3.1.4.1.1.5 | Bandeja entrada de Notificaciones | 1d | 2022-11-21 A | 2022-11-23 |  |  | 1d | 15.81d |
| 664 | 1.3.1.4.1.1.6 | Configuración de Consulta | 1d | 2022-11-22 A | 2022-11-23 |  |  | 1d | 15.81d |

| ID | WBS | Task | Duration | Start | Finish | Predecessors | Complete | Remaining | Total slack |
| --- | --- | --- | --- | --- | --- | --- | --- | --- | --- |
| 665 | 1.3.1.5 | **sprint 8** | 4.75d | 2022-11-15 A | 2022-11-23 | 459 | 14% | 4.07d | 15.81d |
| 666 | 1.3.1.5.1 | **Módulo DAF** | 4.75d | 2022-11-15 A | 2022-11-23 |  | 14% | 4.07d | 15.81d |
| 667 | 1.3.1.5.1.1 | **Dashboard Perfil DAF** | 4.75d | 2022-11-15 A | 2022-11-23 |  | 14% | 4.07d | 15.81d |
| 668 | 1.3.1.5.1.1.1 | Pantalla Perfil | 1d | 2022-11-16 A | 2022-11-17 |  |  | 1d | 18.56d |
| 669 | 1.3.1.5.1.1.2 | Pop up Notificaciones | 1d | 2022-11-17 A | 2022-11-18 |  |  | 1d | 17.69d |
| 670 | 1.3.1.5.1.1.3 | Contador de Notificaciones (Icono campanita) | 1d | 2022-11-18 A | 2022-11-18 A |  | 100% |  |  |
| 671 | 1.3.1.5.1.1.4 | Bandeja entrada de Notificaciones | 1d | 2022-11-19 A | 2022-11-23 |  |  | 1d | 15.81d |
| 672 | 1.3.1.5.1.1.5 | Carga de Speis | 1d | 2022-11-15 A | 2022-11-17 |  |  | 1d | 18.56d |
| 673 | 1.3.1.5.1.1.6 | Generación de Estadísticas | 1d | 2022-11-15 A | 2022-11-17 |  |  | 1d | 18.56d |
| 674 | 1.3.1.5.1.1.7 | Generacion de graficas | 1d | 2022-11-15 A | 2022-11-17 |  |  | 1d | 18.56d |
| 675 | 1.3.1.6 | **sprint 9** | 5.69d | 2022-11-17 A | 2022-11-28 | 459 | 17% | 4.75d | 13d |
| 676 | 1.3.1.6.1 | **Módulo DPCP** | 5.69d | 2022-11-17 A | 2022-11-28 |  | 17% | 4.75d | 13d |
| 677 | 1.3.1.6.1.1 | **Dashboard Perfil DPCP** | 5.69d | 2022-11-17 A | 2022-11-28 |  | 17% | 4.75d | 13d |
| 678 | 1.3.1.6.1.1.1 | Pantalla Perfil | 1d | 2022-11-17 A | 2022-11-18 |  |  | 1d | 17.69d |
| 679 | 1.3.1.6.1.1.2 | Pop up Notificaciones | 1d | 2022-11-18 A | 2022-11-22 |  |  | 1d | 16.75d |
| 680 | 1.3.1.6.1.1.3 | Contador de Notificaciones (Icono campanita) | 1.19d | 2022-11-21 A | 2022-11-23 A |  | 100% |  |  |
| 681 | 1.3.1.6.1.1.4 | Bandeja entrada de Notificaciones | 1d | 2022-11-22 A | 2022-11-23 |  |  | 1d | 15.81d |
| 682 | 1.3.1.6.1.1.5 | Asignación de Presupuesto | 1d | 2022-11-23 A | 2022-11-24 |  |  | 1d | 14.88d |
| 683 | 1.3.1.6.1.1.6 | Generación de Estadísticas | 1d | 2022-11-24 A | 2022-11-25 |  |  | 1d | 13.94d |
| 684 | 1.3.1.6.1.1.7 | Generación de graficas | 1d | 2022-11-25 A | 2022-11-28 |  |  | 1d | 13d |
| 685 | 1.3.1.7 | **sprint 10** | 19.75d | 2022-11-15 A | 2022-12-15 | 459 | 3% | 19.11d | 0.81d |
| 686 | 1.3.1.7.1 | **Módulo Municipios** | 19.75d | 2022-11-15 A | 2022-12-15 |  | 3% | 19.11d | 0.81d |
| 687 | 1.3.1.7.1.1 | **Base** | 3.81d | 2022-11-18 A | 2022-11-25 |  | 44% | 2.13d | 13.94d |
| 688 | 1.3.1.7.1.1.1 | Buzon | 1d | 2022-11-18 A | 2022-11-22 |  |  | 1d | 16.75d |
| 689 | 1.3.1.7.1.1.2 | Login | 1.19d | 2022-11-21 A | 2022-11-22 A |  | 100% |  |  |
| 690 | 1.3.1.7.1.1.3 | Logout | 1.19d | 2022-11-22 A | 2022-11-23 A |  | 100% |  |  |
| 691 | 1.3.1.7.1.1.4 | Bloqueo de Sesión | 1d | 2022-11-23 A | 2022-11-24 |  |  | 1d | 14.88d |
| 692 | 1.3.1.7.1.1.5 | Perfil | 1d | 2022-11-24 A | 2022-11-25 |  |  | 1d | 13.94d |

| ID | WBS | Task | Duration | Start | Finish | Remaining | Total slack |
| --- | --- | --- | --- | --- | --- | --- | --- |
| 693 | 1.3.1.7.1.2 | **Dashboard Inicio** | 4.75d | 2022-11-28 A | 2022-12-05 | 4.75d | 8.31d |
| 694 | 1.3.1.7.1.2.1 | Pantalla Principal | 1d | 2022-11-28 A | 2022-11-29 | 1d | 12.06d |
| 695 | 1.3.1.7.1.2.2 | Configuración de Dashboard | 1d | 2022-11-29 A | 2022-11-30 | 1d | 11.12d |
| 696 | 1.3.1.7.1.2.3 | Ventanas emergentes de validación | 1d | 2022-11-30 A | 2022-12-01 | 1d | 10.19d |
| 697 | 1.3.1.7.1.2.4 | Ruleta imágenes | 1d | 2022-12-01 A | 2022-12-02 | 1d | 9.25d |
| 698 | 1.3.1.7.1.2.5 | Mensaje de Bienvenida | 1d | 2022-12-02 A | 2022-12-05 | 1d | 8.31d |
| 699 | 1.3.1.7.1.3 | **Mis Cuentas** | 19.75d | 2022-11-15 A | 2022-12-15 | 19.75d | 0.81d |
| 700 | 1.3.1.7.1.3.1 | Pantalla Principal | 1d | 2022-12-06 A | 2022-12-07 | 1d | 6.44d |
| 701 | 1.3.1.7.1.3.2 | Agregar | 1d | 2022-12-07 A | 2022-12-08 | 1d | 5.5d |
| 702 | 1.3.1.7.1.3.3 | Editar | 1d | 2022-12-08 A | 2022-12-09 | 1d | 4.56d |
| 703 | 1.3.1.7.1.3.4 | Eliminar | 1d | 2022-12-09 A | 2022-12-12 | 1d | 3.62d |
| 704 | 1.3.1.7.1.3.5 | Configuración de Dashboard | 1d | 2022-12-12 A | 2022-12-13 | 1d | 2.69d |
| 705 | 1.3.1.7.1.3.6 | Exportación de dashboard PDF | 1d | 2022-12-13 A | 2022-12-14 | 1d | 1.75d |
| 706 | 1.3.1.7.1.3.7 | Exportación de dashboard Excel | 1d | 2022-12-14 A | 2022-12-15 | 1d | 0.81d |
| 707 | 1.3.1.7.1.3.8 | Paginación Dashboard | 1d | 2022-11-15 A | 2022-11-17 | 1d | 18.56d |
| 708 | 1.3.1.7.1.3.9 | Busqueda Dash board | 1d | 2022-11-16 A | 2022-11-17 | 1d | 18.56d |
| 709 | 1.3.1.7.1.3.10 | Ventanas emergentes de validación | 1d | 2022-11-17 A | 2022-11-18 | 1d | 17.69d |
| 710 | 1.3.1.7.1.4 | **Solicitud de Recursos** | 9.44d | 2022-11-21 A | 2022-12-06 | 9.44d | 7.38d |
| 711 | 1.3.1.7.1.4.1 | Pantalla Principal | 1d | 2022-11-21 A | 2022-11-23 | 1d | 15.81d |
| 712 | 1.3.1.7.1.4.2 | Agregar | 1d | 2022-11-22 A | 2022-11-23 | 1d | 15.81d |
| 713 | 1.3.1.7.1.4.3 | Editar | 1d | 2022-11-23 A | 2022-11-24 | 1d | 14.88d |
| 714 | 1.3.1.7.1.4.4 | Eliminar | 1d | 2022-11-24 A | 2022-11-25 | 1d | 13.94d |
| 715 | 1.3.1.7.1.4.5 | Configuración de Dashboard | 1d | 2022-11-25 A | 2022-11-28 | 1d | 13d |
| 716 | 1.3.1.7.1.4.6 | Exportación de dashboard PDF | 1d | 2022-11-28 A | 2022-11-29 | 1d | 12.06d |
| 717 | 1.3.1.7.1.4.7 | Exportación de dashboard Excel | 1d | 2022-11-29 A | 2022-11-30 | 1d | 11.12d |
| 718 | 1.3.1.7.1.4.8 | Paginación Dashboard | 1d | 2022-11-30 A | 2022-12-01 | 1d | 10.19d |
| 719 | 1.3.1.7.1.4.9 | Busqueda Dash board | 1d | 2022-12-01 A | 2022-12-02 | 1d | 9.25d |
| 720 | 1.3.1.7.1.4.10 | Ventanas emergentes de validación | 1d | 2022-12-02 A | 2022-12-05 | 1d | 8.31d |
| 721 | 1.3.1.7.1.4.11 | Boton Detalles | 1d | 2022-12-05 A | 2022-12-06 | 1d | 7.38d |

| ID | WBS | Task | Duration | Start | Finish | Remaining | Total slack |
| --- | --- | --- | --- | --- | --- | --- | --- |
| 722 | 1.3.1.7.1.5 | **Dashboard Ayuda** | 1.94d | 2022-12-07 A | 2022-12-09 | 1.94d | 4.56d |
| 723 | 1.3.1.7.1.5.1 | Pantalla principal | 1d | 2022-12-07 A | 2022-12-08 | 1d | 5.5d |
| 724 | 1.3.1.7.1.5.2 | Configuracion de Enlaces | 1d | 2022-12-08 A | 2022-12-09 | 1d | 4.56d |
| 725 | 1.3.1.7.1.6 | **Recepcion de Recursos Participaciones Federales** | 19.75d | 2022-11-15 A | 2022-12-15 | 19.75d | 0.81d |
| 726 | 1.3.1.7.1.6.1 | Pantalla Principal | 1d | 2022-12-12 A | 2022-12-13 | 1d | 2.69d |
| 727 | 1.3.1.7.1.6.2 | Agregar | 1d | 2022-12-13 A | 2022-12-14 | 1d | 1.75d |
| 728 | 1.3.1.7.1.6.3 | Editar | 1d | 2022-12-14 A | 2022-12-15 | 1d | 0.81d |
| 729 | 1.3.1.7.1.6.4 | Eliminar | 1d | 2022-11-15 A | 2022-11-17 | 1d | 18.56d |
| 730 | 1.3.1.7.1.6.5 | Configuración de Dashboard | 1d | 2022-11-16 A | 2022-11-17 | 1d | 18.56d |
| 731 | 1.3.1.7.1.6.6 | Exportación de dashboard PDF | 1d | 2022-11-17 A | 2022-11-18 | 1d | 17.69d |
| 732 | 1.3.1.7.1.6.7 | Exportación de dashboard Excel | 1d | 2022-11-18 A | 2022-11-22 | 1d | 16.75d |
| 733 | 1.3.1.7.1.6.8 | Paginación Dashboard | 1d | 2022-11-21 A | 2022-11-23 | 1d | 15.81d |
| 734 | 1.3.1.7.1.6.9 | Busqueda Dash board | 1d | 2022-11-22 A | 2022-11-23 | 1d | 15.81d |
| 735 | 1.3.1.7.1.6.10 | Ventanas emergentes de validación | 1d | 2022-11-23 A | 2022-11-24 | 1d | 14.88d |
| 736 | 1.3.1.7.1.7 | **Recepcion de Recursos Participaciones Estatales** | 9.44d | 2022-11-25 A | 2022-12-09 | 9.44d | 4.56d |
| 737 | 1.3.1.7.1.7.1 | Pantalla Principal | 1d | 2022-11-25 A | 2022-11-28 | 1d | 13d |
| 738 | 1.3.1.7.1.7.2 | Agregar | 1d | 2022-11-28 A | 2022-11-29 | 1d | 12.06d |
| 739 | 1.3.1.7.1.7.3 | Editar | 1d | 2022-11-29 A | 2022-11-30 | 1d | 11.12d |
| 740 | 1.3.1.7.1.7.4 | Eliminar | 1d | 2022-11-30 A | 2022-12-01 | 1d | 10.19d |
| 741 | 1.3.1.7.1.7.5 | Configuración de Dashboard | 1d | 2022-12-01 A | 2022-12-02 | 1d | 9.25d |
| 742 | 1.3.1.7.1.7.6 | Exportación de dashboard PDF | 1d | 2022-12-02 A | 2022-12-05 | 1d | 8.31d |
| 743 | 1.3.1.7.1.7.7 | Exportación de dashboard Excel | 1d | 2022-12-05 A | 2022-12-06 | 1d | 7.38d |
| 744 | 1.3.1.7.1.7.8 | Paginación Dashboard | 1d | 2022-12-06 A | 2022-12-07 | 1d | 6.44d |
| 745 | 1.3.1.7.1.7.9 | Busqueda Dash board | 1d | 2022-12-07 A | 2022-12-08 | 1d | 5.5d |
| 746 | 1.3.1.7.1.7.10 | Ventanas emergentes de validación | 1d | 2022-12-08 A | 2022-12-09 | 1d | 4.56d |

| ID | WBS | Task | Duration | Start | Finish | Predecessors | Complete | Remaining | Actual start | Total slack |
| --- | --- | --- | --- | --- | --- | --- | --- | --- | --- | --- |
| 747 | 1.3.1.7.1.8 | **Recepcion de Recursos Aportaciones Federales** | 19.75d | 2022-11-15 A | 2022-12-15 |  |  | 19.75d |  | 0.81d |
| 748 | 1.3.1.7.1.8.1 | Pantalla Principal | 1d | 2022-12-12 A | 2022-12-13 |  |  | 1d |  | 2.69d |
| 749 | 1.3.1.7.1.8.2 | Agregar | 1d | 2022-12-13 A | 2022-12-14 |  |  | 1d |  | 1.75d |
| 750 | 1.3.1.7.1.8.3 | Editar | 1d | 2022-12-14 A | 2022-12-15 |  |  | 1d |  | 0.81d |
| 751 | 1.3.1.7.1.8.4 | Eliminar | 1d | 2022-11-15 A | 2022-11-17 |  |  | 1d |  | 18.56d |
| 752 | 1.3.1.7.1.8.5 | Configuración de Dashboard | 1d | 2022-11-16 A | 2022-11-17 |  |  | 1d |  | 18.56d |
| 753 | 1.3.1.7.1.8.6 | Exportación de dashboard PDF | 1d | 2022-11-17 A | 2022-11-18 |  |  | 1d |  | 17.69d |
| 754 | 1.3.1.7.1.8.7 | Exportación de dashboard Excel | 1d | 2022-11-18 A | 2022-11-22 |  |  | 1d |  | 16.75d |
| 755 | 1.3.1.7.1.8.8 | Paginación Dashboard | 1d | 2022-11-21 A | 2022-11-23 |  |  | 1d |  | 15.81d |
| 756 | 1.3.1.7.1.8.9 | Busqueda Dash board | 1d | 2022-11-22 A | 2022-11-23 |  |  | 1d |  | 15.81d |
| 757 | 1.3.1.7.1.8.10 | Ventanas emergentes de validación | 1d | 2022-11-23 A | 2022-11-24 |  |  | 1d |  | 14.88d |
| 758 | 1.3.1.7.1.9 | **Recepcion de Recursos Aportaciones Estatales** | 3.81d | 2022-11-24 | 2022-11-30 |  |  | 3.81d | 2022-11-25 |  |
| 759 | 1.3.1.7.1.9.1 | Pantalla Principal | 1d | 2022-11-25 A | 2022-11-28 |  |  | 1d |  | 13d |
| 760 | 1.3.1.7.1.9.2 | Agregar | 1d | 2022-11-25 A | 2022-11-28 |  |  | 1d |  | 13d |
| 761 | 1.3.1.7.1.9.3 | Editar | 1d | 2022-11-28 A | 2022-11-29 |  |  | 1d |  | 12.06d |
| 762 | 1.3.1.7.1.9.4 | Eliminar | 1d | 2022-11-29 A | 2022-11-30 |  |  | 1d |  | 11.12d |
| 763 | 1.3.1.7.1.9.5 | Configuración de Dashboard | 1d | 2022-11-30 A | 2022-12-01 |  |  | 1d |  | 10.19d |
| 764 | 1.3.1.7.1.9.6 | Exportación de dashboard PDF | 1d | 2022-12-01 A | 2022-12-02 |  |  | 1d |  | 9.25d |
| 765 | 1.3.1.7.1.9.7 | Exportación de dashboard Excel | 1d | 2022-12-02 A | 2022-12-05 |  |  | 1d |  | 8.31d |
| 766 | 1.3.1.7.1.9.8 | Paginación Dashboard | 1d | 2022-12-05 A | 2022-12-06 |  |  | 1d |  | 7.38d |
| 767 | 1.3.1.7.1.9.9 | Busqueda Dash board | 1d | 2022-12-06 A | 2022-12-07 |  |  | 1d |  | 6.44d |
| 768 | 1.3.1.7.1.9.10 | Ventanas emergentes de validación | 1d | 2022-12-07 A | 2022-12-08 |  |  | 1d |  | 5.5d |
| 769 | 1.3.1.8 | **sprint 11** | 19.75d | 2022-11-15 A | 2022-12-15 | 459 | 3% | 19.1d |  | 0.81d |
| 770 | 1.3.1.8.1 | **Módulo OPD** | 19.75d | 2022-11-15 A | 2022-12-15 |  | 3% | 19.1d |  | 0.81d |
| 771 | 1.3.1.8.1.1 | **Base** | 3.88d | 2022-11-15 A | 2022-11-22 |  | 42% | 2.24d |  | 16.69d |
| 772 | 1.3.1.8.1.1.1 | Perfil | 1d | 2022-11-15 A | 2022-11-17 |  |  | 1d |  | 18.56d |
| 773 | 1.3.1.8.1.1.2 | Pop up Notificaciones | 1d | 2022-11-16 A | 2022-11-17 |  |  | 1d |  | 18.56d |
| 774 | 1.3.1.8.1.1.3 | Contador de Notificaciones (Icono campanita) | 2.19d | 2022-11-17 A | 2022-11-22 A |  | 100% |  |  |  |
| 775 | 1.3.1.8.1.1.4 | Bandeja entrada de Notificaciones | 1d | 2022-11-18 A | 2022-11-22 |  |  | 1d |  | 16.75d |

| ID | WBS | Task | Duration | Start | Finish | Remaining | Total slack |
| --- | --- | --- | --- | --- | --- | --- | --- |
| 776 | 1.3.1.8.1.2 | **Dashboard mis cuentas** | 9.44d | 2022-11-22 A | 2022-12-06 | 9.44d | 7.38d |
| 777 | 1.3.1.8.1.2.1 | Pantalla Principal | 1d | 2022-11-22 A | 2022-11-23 | 1d | 15.81d |
| 778 | 1.3.1.8.1.2.2 | Configuración de Dashboard | 1d | 2022-11-23 A | 2022-11-24 | 1d | 14.88d |
| 779 | 1.3.1.8.1.2.3 | Exportación de dashboard PDF | 1d | 2022-11-24 A | 2022-11-25 | 1d | 13.94d |
| 780 | 1.3.1.8.1.2.4 | Exportación de dashboard Excel | 1d | 2022-11-25 A | 2022-11-28 | 1d | 13d |
| 781 | 1.3.1.8.1.2.5 | Paginación Dashboard | 1d | 2022-11-28 A | 2022-11-29 | 1d | 12.06d |
| 782 | 1.3.1.8.1.2.6 | Busqueda Dashboard | 1d | 2022-11-29 A | 2022-11-30 | 1d | 11.12d |
| 783 | 1.3.1.8.1.2.7 | Agregar | 1d | 2022-11-30 A | 2022-12-01 | 1d | 10.19d |
| 784 | 1.3.1.8.1.2.8 | Editar | 1d | 2022-12-01 A | 2022-12-02 | 1d | 9.25d |
| 785 | 1.3.1.8.1.2.9 | Eliminar | 1d | 2022-12-02 A | 2022-12-05 | 1d | 8.31d |
| 786 | 1.3.1.8.1.2.10 | Ventanas emergentes de validación | 1d | 2022-12-05 A | 2022-12-06 | 1d | 7.38d |
| 787 | 1.3.1.8.1.3 | **Dashboard Facturación** | 19.75d | 2022-11-15 A | 2022-12-15 | 19.75d | 0.81d |
| 788 | 1.3.1.8.1.3.1 | Pantalla Principal | 1d | 2022-12-06 A | 2022-12-07 | 1d | 6.44d |
| 789 | 1.3.1.8.1.3.2 | Configuración de Dashboard | 1d | 2022-12-07 A | 2022-12-08 | 1d | 5.5d |
| 790 | 1.3.1.8.1.3.3 | Exportación de dashboard PDF | 1d | 2022-12-08 A | 2022-12-09 | 1d | 4.56d |
| 791 | 1.3.1.8.1.3.4 | Exportación de dashboard Excel | 1d | 2022-12-09 A | 2022-12-12 | 1d | 3.62d |
| 792 | 1.3.1.8.1.3.5 | Paginación Dashboard | 1d | 2022-12-12 A | 2022-12-13 | 1d | 2.69d |
| 793 | 1.3.1.8.1.3.6 | Busqueda Dashboard | 1d | 2022-12-13 A | 2022-12-14 | 1d | 1.75d |
| 794 | 1.3.1.8.1.3.7 | Ventanas de visualización de detalle | 1d | 2022-12-14 A | 2022-12-15 | 1d | 0.81d |
| 795 | 1.3.1.8.1.3.8 | Busqueda por Año | 1d | 2022-11-15 A | 2022-11-17 | 1d | 18.56d |
| 796 | 1.3.1.8.1.4 | **Dashboard Solicitud de recursos** | 3.81d | 2022-11-16 A | 2022-11-23 | 3.81d | 15.81d |
| 797 | 1.3.1.8.1.4.1 | Pantalla Principal | 1d | 2022-11-16 A | 2022-11-17 | 1d | 18.56d |
| 798 | 1.3.1.8.1.4.2 | Configuración de Dashboard | 1d | 2022-11-17 A | 2022-11-18 | 1d | 17.69d |
| 799 | 1.3.1.8.1.4.3 | Exportación de dashboard PDF | 1d | 2022-11-18 A | 2022-11-22 | 1d | 16.75d |
| 800 | 1.3.1.8.1.4.4 | Exportación de dashboard Excel | 1d | 2022-11-21 A | 2022-11-23 | 1d | 15.81d |
| 801 | 1.3.1.8.1.4.5 | Paginación Dashboard | 1d | 2022-11-22 A | 2022-11-23 | 1d | 15.81d |

| ID | WBS | Task | Duration | Start | Finish | Remaining | Total slack |
| --- | --- | --- | --- | --- | --- | --- | --- |
| 802 | 1.3.1.8.1.5 | **Busqueda Dashboard** | 7.56d | 2022-11-23 A | 2022-12-05 | 7.56d | 8.31d |
| 803 | 1.3.1.8.1.5.1 | Pantalla Principal | 1d | 2022-11-23 A | 2022-11-24 | 1d | 14.88d |
| 804 | 1.3.1.8.1.5.2 | Agregar | 1d | 2022-11-24 A | 2022-11-25 | 1d | 13.94d |
| 805 | 1.3.1.8.1.5.3 | Editar | 1d | 2022-11-25 A | 2022-11-28 | 1d | 13d |
| 806 | 1.3.1.8.1.5.4 | Eliminar | 1d | 2022-11-28 A | 2022-11-29 | 1d | 12.06d |
| 807 | 1.3.1.8.1.5.5 | Ventanas emergentes de validación | 1d | 2022-11-29 A | 2022-11-30 | 1d | 11.12d |
| 808 | 1.3.1.8.1.5.6 | Busqueda por Año | 1d | 2022-11-30 A | 2022-12-01 | 1d | 10.19d |
| 809 | 1.3.1.8.1.5.7 | Carga de documentos | 1d | 2022-12-01 A | 2022-12-02 | 1d | 9.25d |
| 810 | 1.3.1.8.1.5.8 | PDF generado por la solicitud de recursos | 1d | 2022-12-02 A | 2022-12-05 | 1d | 8.31d |
| 811 | 1.3.1.8.1.6 | **Dashboard menu preguntas frecuentes** | 1.94d | 2022-12-05 A | 2022-12-07 | 1.94d | 6.44d |
| 812 | 1.3.1.8.1.6.1 | Pantalla Principal | 1d | 2022-12-05 A | 2022-12-06 | 1d | 7.38d |
| 813 | 1.3.1.8.1.6.2 | Configuracion de dashboard | 1d | 2022-12-06 A | 2022-12-07 | 1d | 6.44d |
| 814 | 1.3.1.8.1.7 | **Dashboard Recepción de recursos** | 19.75d | 2022-11-15 A | 2022-12-15 | 19.75d | 0.81d |
| 815 | 1.3.1.8.1.7.1 | Pantalla Principal | 1d | 2022-12-08 A | 2022-12-09 | 1d | 4.56d |
| 816 | 1.3.1.8.1.7.2 | Configuracion de dashboard | 1d | 2022-12-09 A | 2022-12-12 | 1d | 3.62d |
| 817 | 1.3.1.8.1.7.3 | Exportación de dashboard PDF | 1d | 2022-12-12 A | 2022-12-13 | 1d | 2.69d |
| 818 | 1.3.1.8.1.7.4 | Exportación de dashboard Excel | 1d | 2022-12-13 A | 2022-12-14 | 1d | 1.75d |
| 819 | 1.3.1.8.1.7.5 | Paginación Dashboard | 1d | 2022-12-14 A | 2022-12-15 | 1d | 0.81d |
| 820 | 1.3.1.8.1.7.6 | Busqueda Dashboard | 1d | 2022-11-15 A | 2022-11-17 | 1d | 18.56d |
| 821 | 1.3.1.8.1.7.7 | Subida de Archivo | 1d | 2022-11-16 A | 2022-11-17 | 1d | 18.56d |
| 822 | 1.3.1.8.1.8 | **Dashboard Recepción de recursos sección participaciones estatales** | 5.69d | 2022-11-17 A | 2022-11-28 | 5.69d | 13d |
| 823 | 1.3.1.8.1.8.1 | Pantalla Principal | 1d | 2022-11-17 A | 2022-11-18 | 1d | 17.69d |
| 824 | 1.3.1.8.1.8.2 | Configuracion de dashboard | 1d | 2022-11-18 A | 2022-11-22 | 1d | 16.75d |
| 825 | 1.3.1.8.1.8.3 | Exportación de dashboard PDF | 1d | 2022-11-21 A | 2022-11-23 | 1d | 15.81d |
| 826 | 1.3.1.8.1.8.4 | Exportación de dashboard Excel | 1d | 2022-11-22 A | 2022-11-23 | 1d | 15.81d |
| 827 | 1.3.1.8.1.8.5 | Paginación Dashboard | 1d | 2022-11-23 A | 2022-11-24 | 1d | 14.88d |
| 828 | 1.3.1.8.1.8.6 | Busqueda Dashboard | 1d | 2022-11-24 A | 2022-11-25 | 1d | 13.94d |
| 829 | 1.3.1.8.1.8.7 | Subida de Archivo | 1d | 2022-11-25 A | 2022-11-28 | 1d | 13d |

| ID | WBS | Task | Duration | Start | Finish | Predecessors | Complete | Remaining | Total slack | Free slack |
| --- | --- | --- | --- | --- | --- | --- | --- | --- | --- | --- |
| 830 | 1.3.1.8.1.9 | **Dashboard Recepción de recursos sección aportaciones federales** | 6.62d | 2022-11-28 A | 2022-12-07 |  |  | 6.62d | 6.44d |  |
| 831 | 1.3.1.8.1.9.1 | Pantalla Principal | 1d | 2022-11-28 A | 2022-11-29 |  |  | 1d | 12.06d |  |
| 832 | 1.3.1.8.1.9.2 | Configuracion de dashboard | 1d | 2022-11-29 A | 2022-11-30 |  |  | 1d | 11.12d |  |
| 833 | 1.3.1.8.1.9.3 | Exportación de dashboard PDF | 1d | 2022-11-30 A | 2022-12-01 |  |  | 1d | 10.19d |  |
| 834 | 1.3.1.8.1.9.4 | Exportación de dashboard Excel | 1d | 2022-12-01 A | 2022-12-02 |  |  | 1d | 9.25d |  |
| 835 | 1.3.1.8.1.9.5 | Paginación Dashboard | 1d | 2022-12-02 A | 2022-12-05 |  |  | 1d | 8.31d |  |
| 836 | 1.3.1.8.1.9.6 | Busqueda Dashboard | 1d | 2022-12-05 A | 2022-12-06 |  |  | 1d | 7.38d |  |
| 837 | 1.3.1.8.1.9.7 | Subida de Archivo | 1d | 2022-12-06 A | 2022-12-07 |  |  | 1d | 6.44d |  |
| 838 | 1.3.1.8.1.10 | **Dashboard Recepción de recursos sección aportaciones estatales** | 5.69d | 2022-12-07 A | 2022-12-15 |  |  | 5.69d | 0.81d |  |
| 839 | 1.3.1.8.1.10.1 | Pantalla Principal | 1d | 2022-12-07 A | 2022-12-08 |  |  | 1d | 5.5d |  |
| 840 | 1.3.1.8.1.10.2 | Configuracion de dashboard | 1d | 2022-12-08 A | 2022-12-09 |  |  | 1d | 4.56d |  |
| 841 | 1.3.1.8.1.10.3 | Exportación de dashboard PDF | 1d | 2022-12-09 A | 2022-12-12 |  |  | 1d | 3.62d |  |
| 842 | 1.3.1.8.1.10.4 | Exportación de dashboard Excel | 1d | 2022-12-12 A | 2022-12-13 |  |  | 1d | 2.69d |  |
| 843 | 1.3.1.8.1.10.5 | Paginación Dashboard | 1d | 2022-12-13 A | 2022-12-14 |  |  | 1d | 1.75d |  |
| 844 | 1.3.1.8.1.10.6 | Busqueda Dashboard | 1d | 2022-12-14 A | 2022-12-15 |  |  | 1d | 0.81d |  |
| 845 | 1.3.1.8.1.10.7 | Subida de Archivo | 1d | 2022-12-09 A | 2022-12-12 |  |  | 1d | 3.62d |  |
| 846 | 1.3.2 | **Diseño y Desarrollo FRONT** | 77.88d | 2022-08-18 A | 2022-12-15 |  | 19% | 62.69d | 0.81d |  |
| 847 | 1.3.2.1 | **sprint 4** | 43.19d | 2022-08-18 A | 2022-10-24 | 31 | 6% | 40.72d | 21.5d | 15.88d |
| 848 | 1.3.2.1.1 | **Módulo de Administración** | 43.19d | 2022-08-18 A | 2022-10-24 |  | 6% | 40.72d | 21.5d |  |
| 849 | 1.3.2.1.1.1 | **Coeficientes** | 1d | 2022-08-18 | 2022-08-19 |  |  |  | 63.69d |  |
| 850 | 1.3.2.1.1.1.1 | Pantalla principal | 1d | 2022-08-18 | 2022-08-19 |  |  |  | 135d |  |
| 851 | 1.3.2.1.1.1.2 | Agregar | 1d | 2022-08-18 | 2022-08-19 |  |  |  | 135d |  |
| 852 | 1.3.2.1.1.1.3 | Eliminar | 1d | 2022-08-18 | 2022-08-19 |  |  |  | 135d |  |
| 853 | 1.3.2.1.1.1.4 | Editar | 1d | 2022-08-18 | 2022-08-19 |  |  |  | 135d |  |
| 854 | 1.3.2.1.1.1.5 | Configuración de Dashboard | 1d | 2022-08-18 | 2022-08-19 |  |  |  | 135d |  |
| 855 | 1.3.2.1.1.1.6 | Exportación de dashboard PDF | 1d | 2022-08-18 | 2022-08-19 |  |  |  | 135d |  |
| 856 | 1.3.2.1.1.1.7 | Exportación de dashboard Excel | 1d | 2022-08-18 | 2022-08-19 |  |  |  | 135d |  |
| 857 | 1.3.2.1.1.1.8 | Paginación Dashboard | 1d | 2022-08-18 | 2022-08-19 |  |  |  | 135d |  |
| 858 | 1.3.2.1.1.1.9 | Busqueda Dash board | 1d | 2022-08-18 | 2022-08-19 |  |  |  | 135d |  |
| 859 | 1.3.2.1.1.1.10 | Ventanas emergentes de validación | 1d | 2022-08-18 | 2022-08-19 |  |  |  | 135d |  |

| ID | WBS | Task | Duration | Start | Finish | Complete | Remaining | Total slack |
| --- | --- | --- | --- | --- | --- | --- | --- | --- |
| 860 | 1.3.2.1.1.2 | **Bienvenida** | 1d | 2022-08-18 | 2022-08-19 |  |  | 63.69d |
| 861 | 1.3.2.1.1.2.1 | Configuracion de bienvenida | 1d | 2022-08-18 | 2022-08-19 |  |  | 135d |
| 862 | 1.3.2.1.1.3 | **Base** | 2.88d | 2022-09-26 A | 2022-09-29 | 50% | 1.44d | 37.44d |
| 863 | 1.3.2.1.1.3.1 | Login | 1d | 2022-09-26 A | 2022-09-26 A | 100% |  |  |
| 864 | 1.3.2.1.1.3.2 | Logout | 1d | 2022-09-27 A | 2022-09-27 A | 100% |  |  |
| 865 | 1.3.2.1.1.3.3 | Bloqueo de Sesión | 1d | 2022-09-28 A | 2022-09-29 |  | 1d | 37.44d |
| 866 | 1.3.2.1.1.3.4 | Perfil | 1d | 2022-09-28 A | 2022-09-29 |  | 1d | 37.44d |
| 867 | 1.3.2.1.1.4 | **Administración de Usuarios** | 7.56d | 2022-09-30 A | 2022-10-12 |  | 7.56d | 29d |
| 868 | 1.3.2.1.1.4.1 | Agregar | 1d | 2022-09-30 A | 2022-10-03 |  | 1d | 35.56d |
| 869 | 1.3.2.1.1.4.2 | Pantalla Principal | 1d | 2022-10-03 A | 2022-10-04 |  | 1d | 34.62d |
| 870 | 1.3.2.1.1.4.3 | Editar | 1d | 2022-10-04 A | 2022-10-05 |  | 1d | 33.69d |
| 871 | 1.3.2.1.1.4.4 | Eliminar | 1d | 2022-10-05 A | 2022-10-06 |  | 1d | 32.75d |
| 872 | 1.3.2.1.1.4.5 | Configuración de Dashboard | 1d | 2022-10-06 A | 2022-10-07 |  | 1d | 31.81d |
| 873 | 1.3.2.1.1.4.6 | Exportación de dashboard PDF | 1d | 2022-10-07 A | 2022-10-10 |  | 1d | 30.88d |
| 874 | 1.3.2.1.1.4.7 | Exportación de dashboard Excel | 1d | 2022-10-10 A | 2022-10-11 |  | 1d | 29.94d |
| 875 | 1.3.2.1.1.4.8 | Paginación Dashboard | 1d | 2022-10-11 A | 2022-10-12 |  | 1d | 29d |
| 876 | 1.3.2.1.1.4.9 | Busqueda Dash board | 1d | 2022-10-11 A | 2022-10-12 |  | 1d | 29d |
| 877 | 1.3.2.1.1.4.10 | Ventanas emergentes de validación | 1d | 2022-10-11 A | 2022-10-12 |  | 1d | 29d |
| 878 | 1.3.2.1.1.5 | **Administración de Roles y Permisos** | 7.56d | 2022-10-12 A | 2022-10-24 |  | 7.56d | 21.5d |
| 879 | 1.3.2.1.1.5.1 | Pantalla Principal | 1d | 2022-10-12 A | 2022-10-13 |  | 1d | 28.06d |
| 880 | 1.3.2.1.1.5.2 | Agregar | 1d | 2022-10-13 A | 2022-10-14 |  | 1d | 27.12d |
| 881 | 1.3.2.1.1.5.3 | Editar | 1d | 2022-10-14 A | 2022-10-17 |  | 1d | 26.19d |
| 882 | 1.3.2.1.1.5.4 | Eliminar | 1d | 2022-10-15 A | 2022-10-18 |  | 1d | 25.25d |
| 883 | 1.3.2.1.1.5.5 | Configuración de Dashboard | 1d | 2022-10-16 A | 2022-10-18 |  | 1d | 25.25d |
| 884 | 1.3.2.1.1.5.6 | Exportación de dashboard PDF | 1d | 2022-10-17 A | 2022-10-18 |  | 1d | 25.25d |
| 885 | 1.3.2.1.1.5.7 | Exportación de dashboard Excel | 1d | 2022-10-18 A | 2022-10-19 |  | 1d | 24.31d |
| 886 | 1.3.2.1.1.5.8 | Paginación Dashboard | 1d | 2022-10-19 A | 2022-10-20 |  | 1d | 23.38d |
| 887 | 1.3.2.1.1.5.9 | Busqueda Dash board | 1d | 2022-10-20 A | 2022-10-21 |  | 1d | 22.44d |
| 888 | 1.3.2.1.1.5.10 | Ventanas emergentes de validación | 1d | 2022-10-21 A | 2022-10-24 |  | 1d | 21.5d |

| ID | WBS | Task | Duration | Start | Finish | Predecessors | Complete | Remaining | Total slack |
| --- | --- | --- | --- | --- | --- | --- | --- | --- | --- |
| 889 | 1.3.2.2 | **sprint 5** | 24.44d | 2022-10-11 A | 2022-11-16 | 31 | 36% | 15.69d | 19.56d |
| 890 | 1.3.2.2.1 | **Módulo CPH** | 24.44d | 2022-10-11 A | 2022-11-16 |  | 36% | 15.69d | 19.56d |
| 891 | 1.3.2.2.1.1 | **Base** | 3.81d | 2022-10-11 A | 2022-10-17 |  | 25% | 2.86d | 40.19d |
| 892 | 1.3.2.2.1.1.1 | Perfil | 1d | 2022-10-11 A | 2022-10-12 |  |  | 1d | 43d |
| 893 | 1.3.2.2.1.1.2 | Pop up Notificaciones | 1d | 2022-10-12 A | 2022-10-13 |  |  | 1d | 42.06d |
| 894 | 1.3.2.2.1.1.3 | Contador de Notificaciones (Icono campanita) | 1d | 2022-10-13 A | 2022-10-13 A |  | 100% |  |  |
| 895 | 1.3.2.2.1.1.4 | Bandeja entrada de Notificaciones | 1d | 2022-10-14 A | 2022-10-17 |  |  | 1d | 40.19d |
| 896 | 1.3.2.2.1.2 | **Administración de Municipios** | 7.56d | 2022-10-12 A | 2022-10-24 |  |  | 7.56d | 35.5d |
| 897 | 1.3.2.2.1.2.1 | Pantalla Principal | 1d | 2022-10-12 A | 2022-10-13 |  |  | 1d | 42.06d |
| 898 | 1.3.2.2.1.2.2 | Agregar | 1d | 2022-10-13 A | 2022-10-14 |  |  | 1d | 41.12d |
| 899 | 1.3.2.2.1.2.3 | Editar | 1d | 2022-10-14 A | 2022-10-17 |  |  | 1d | 40.19d |
| 900 | 1.3.2.2.1.2.4 | Eliminar | 1d | 2022-10-15 A | 2022-10-18 |  |  | 1d | 39.25d |
| 901 | 1.3.2.2.1.2.5 | Configuración de Dashboard | 1d | 2022-10-16 A | 2022-10-18 |  |  | 1d | 39.25d |
| 902 | 1.3.2.2.1.2.6 | Exportación de dashboard PDF | 1d | 2022-10-17 A | 2022-10-18 |  |  | 1d | 39.25d |
| 903 | 1.3.2.2.1.2.7 | Exportación de dashboard Excel | 1d | 2022-10-18 A | 2022-10-19 |  |  | 1d | 38.31d |
| 904 | 1.3.2.2.1.2.8 | Paginación Dashboard | 1d | 2022-10-19 A | 2022-10-20 |  |  | 1d | 37.38d |
| 905 | 1.3.2.2.1.2.9 | Busqueda Dash board | 1d | 2022-10-20 A | 2022-10-21 |  |  | 1d | 36.44d |
| 906 | 1.3.2.2.1.2.10 | Ventanas emergentes de validación | 1d | 2022-10-21 A | 2022-10-24 |  |  | 1d | 35.5d |
| 907 | 1.3.2.2.1.3 | **Administración de Fondos** | 9.38d | 2022-10-13 A | 2022-10-26 A |  | 100% |  |  |
| 908 | 1.3.2.2.1.3.1 | Pantalla Principal | 1d | 2022-10-13 A | 2022-10-13 A |  | 100% |  |  |
| 909 | 1.3.2.2.1.3.2 | Agregar | 1d | 2022-10-14 A | 2022-10-14 A |  | 100% |  |  |
| 910 | 1.3.2.2.1.3.3 | Editar | 1d | 2022-10-17 A | 2022-10-17 A |  | 100% |  |  |
| 911 | 1.3.2.2.1.3.4 | Eliminar | 1d | 2022-10-18 A | 2022-10-18 A |  | 100% |  |  |
| 912 | 1.3.2.2.1.3.5 | Configuración de Dashboard | 1d | 2022-10-19 A | 2022-10-19 A |  | 100% |  |  |
| 913 | 1.3.2.2.1.3.6 | Exportación de dashboard PDF | 1d | 2022-10-20 A | 2022-10-20 A |  | 100% |  |  |
| 914 | 1.3.2.2.1.3.7 | Exportación de dashboard Excel | 1d | 2022-10-21 A | 2022-10-21 A |  | 100% |  |  |
| 915 | 1.3.2.2.1.3.8 | Paginación Dashboard | 1d | 2022-10-24 A | 2022-10-24 A |  | 100% |  |  |
| 916 | 1.3.2.2.1.3.9 | Busqueda Dash board | 1d | 2022-10-25 A | 2022-10-25 A |  | 100% |  |  |
| 917 | 1.3.2.2.1.3.10 | Ventanas emergentes de validación | 1d | 2022-10-26 A | 2022-10-26 A |  | 100% |  |  |

| ID | WBS | Task | Duration | Start | Finish | Complete | Remaining | Total slack |
| --- | --- | --- | --- | --- | --- | --- | --- | --- |
| 918 | 1.3.2.2.1.4 | **Administración de Presupuesto** | 9.44d | 2022-10-14 A | 2022-10-28 |  | 9.44d | 31.75d |
| 919 | 1.3.2.2.1.4.1 | Pantalla Principal | 1d | 2022-10-14 A | 2022-10-17 |  | 1d | 40.19d |
| 920 | 1.3.2.2.1.4.2 | Agregar | 1d | 2022-10-17 A | 2022-10-18 |  | 1d | 39.25d |
| 921 | 1.3.2.2.1.4.3 | Editar | 1d | 2022-10-18 A | 2022-10-19 |  | 1d | 38.31d |
| 922 | 1.3.2.2.1.4.4 | Eliminar | 1d | 2022-10-19 A | 2022-10-20 |  | 1d | 37.38d |
| 923 | 1.3.2.2.1.4.5 | Configuración de Dashboard | 1d | 2022-10-20 A | 2022-10-21 |  | 1d | 36.44d |
| 924 | 1.3.2.2.1.4.6 | Exportación de dashboard PDF | 1d | 2022-10-21 A | 2022-10-24 |  | 1d | 35.5d |
| 925 | 1.3.2.2.1.4.7 | Exportación de dashboard Excel | 1d | 2022-10-24 A | 2022-10-25 |  | 1d | 34.56d |
| 926 | 1.3.2.2.1.4.8 | Paginación Dashboard | 1d | 2022-10-25 A | 2022-10-26 |  | 1d | 33.62d |
| 927 | 1.3.2.2.1.4.9 | Busqueda Dash board | 1d | 2022-10-26 A | 2022-10-27 |  | 1d | 32.69d |
| 928 | 1.3.2.2.1.4.10 | Ventanas emergentes de validación | 1d | 2022-10-27 A | 2022-10-28 |  | 1d | 31.75d |
| 929 | 1.3.2.2.1.5 | **Administración de UMA** | 9.38d | 2022-10-17 A | 2022-10-28 A | 100% |  |  |
| 930 | 1.3.2.2.1.5.1 | Pantalla Principal | 1d | 2022-10-17 A | 2022-10-17 A | 100% |  |  |
| 931 | 1.3.2.2.1.5.2 | Agregar | 1d | 2022-10-18 A | 2022-10-18 A | 100% |  |  |
| 932 | 1.3.2.2.1.5.3 | Editar | 1d | 2022-10-19 A | 2022-10-19 A | 100% |  |  |
| 933 | 1.3.2.2.1.5.4 | Eliminar | 1d | 2022-10-20 A | 2022-10-20 A | 100% |  |  |
| 934 | 1.3.2.2.1.5.5 | Configuración de Dashboard | 1d | 2022-10-21 A | 2022-10-21 A | 100% |  |  |
| 935 | 1.3.2.2.1.5.6 | Exportación de dashboard PDF | 1d | 2022-10-24 A | 2022-10-24 A | 100% |  |  |
| 936 | 1.3.2.2.1.5.7 | Exportación de dashboard Excel | 1d | 2022-10-25 A | 2022-10-25 A | 100% |  |  |
| 937 | 1.3.2.2.1.5.8 | Paginación Dashboard | 1d | 2022-10-26 A | 2022-10-26 A | 100% |  |  |
| 938 | 1.3.2.2.1.5.9 | Busqueda Dashboard | 1d | 2022-10-27 A | 2022-10-27 A | 100% |  |  |
| 939 | 1.3.2.2.1.5.10 | Ventanas emergentes de validación | 1d | 2022-10-28 A | 2022-10-28 A | 100% |  |  |
| 940 | 1.3.2.2.1.6 | **Administración de Inflación** | 11.25d | 2022-10-17 A | 2022-11-01 A | 100% |  |  |
| 941 | 1.3.2.2.1.6.1 | Pantalla Principal | 1d | 2022-10-17 A | 2022-10-17 A | 100% |  |  |
| 942 | 1.3.2.2.1.6.2 | Plantilla Carga Masiva Inflación | 1d | 2022-10-18 A | 2022-10-18 A | 100% |  |  |
| 943 | 1.3.2.2.1.6.3 | Api Plantilla caga masiva Municipio - Inflación | 1d | 2022-10-19 A | 2022-10-19 A | 100% |  |  |
| 944 | 1.3.2.2.1.6.4 | Agregar | 1d | 2022-10-20 A | 2022-10-20 A | 100% |  |  |
| 945 | 1.3.2.2.1.6.5 | Editar | 1d | 2022-10-21 A | 2022-10-21 A | 100% |  |  |
| 946 | 1.3.2.2.1.6.6 | Eliminar | 1d | 2022-10-24 A | 2022-10-24 A | 100% |  |  |
| 947 | 1.3.2.2.1.6.7 | Configuración de Dashboard | 1d | 2022-10-25 A | 2022-10-25 A | 100% |  |  |
| 948 | 1.3.2.2.1.6.8 | Exportación de dashboard PDF | 1d | 2022-10-26 A | 2022-10-26 A | 100% |  |  |
| 949 | 1.3.2.2.1.6.9 | Exportación de dashboard Excel | 1d | 2022-10-27 A | 2022-10-27 A | 100% |  |  |
| 950 | 1.3.2.2.1.6.10 | Paginación Dashboard | 1d | 2022-10-28 A | 2022-10-28 A | 100% |  |  |
| 951 | 1.3.2.2.1.6.11 | Busqueda Dash board | 1d | 2022-10-31 A | 2022-10-31 A | 100% |  |  |
| 952 | 1.3.2.2.1.6.12 | Ventanas emergentes de validación | 1d | 2022-11-01 A | 2022-11-01 A | 100% |  |  |

| ID | WBS | Task | Duration | Start | Finish | Complete | Remaining | Total slack |
| --- | --- | --- | --- | --- | --- | --- | --- | --- |
| 953 | 1.3.2.2.1.7 | **Administración de Crecimiento** | 11.25d | 2022-10-18 A | 2022-11-02 | 92% | 0.94d | 28.06d |
| 954 | 1.3.2.2.1.7.1 | Pantalla Principal | 1d | 2022-10-18 A | 2022-10-19 |  | 1d | 38.31d |
| 955 | 1.3.2.2.1.7.2 | Plantilla Carga Masiva Crecimiento | 1d | 2022-10-19 A | 2022-10-19 A | 100% |  |  |
| 956 | 1.3.2.2.1.7.3 | Api Plantilla caga masiva Municipio - Crecimiento | 1d | 2022-10-20 A | 2022-10-20 A | 100% |  |  |
| 957 | 1.3.2.2.1.7.4 | Agregar | 1d | 2022-10-21 A | 2022-10-21 A | 100% |  |  |
| 958 | 1.3.2.2.1.7.5 | Editar | 1d | 2022-10-24 A | 2022-10-24 A | 100% |  |  |
| 959 | 1.3.2.2.1.7.6 | Eliminar | 1d | 2022-10-25 A | 2022-10-25 A | 100% |  |  |
| 960 | 1.3.2.2.1.7.7 | Configuración de Dashboard | 1d | 2022-10-26 A | 2022-10-26 A | 100% |  |  |
| 961 | 1.3.2.2.1.7.8 | Exportación de dashboard PDF | 1d | 2022-10-27 A | 2022-10-27 A | 100% |  |  |
| 962 | 1.3.2.2.1.7.9 | Exportación de dashboard Excel | 1d | 2022-10-28 A | 2022-10-28 A | 100% |  |  |
| 963 | 1.3.2.2.1.7.10 | Paginación Dashboard | 1d | 2022-10-31 A | 2022-10-31 A | 100% |  |  |
| 964 | 1.3.2.2.1.7.11 | Busqueda Dash board | 1d | 2022-11-01 A | 2022-11-01 A | 100% |  |  |
| 965 | 1.3.2.2.1.7.12 | Ventanas emergentes de validación | 1d | 2022-11-02 A | 2022-11-02 A | 100% |  |  |
| 966 | 1.3.2.2.1.8 | **Administración de Facturación** | 8.44d | 2022-10-19 A | 2022-10-31 A | 100% |  |  |
| 967 | 1.3.2.2.1.8.1 | Pantalla Principal | 1d | 2022-10-19 A | 2022-10-19 A | 100% |  |  |
| 968 | 1.3.2.2.1.8.2 | Agregar | 1d | 2022-10-20 A | 2022-10-20 A | 100% |  |  |
| 969 | 1.3.2.2.1.8.3 | Editar | 1d | 2022-10-21 A | 2022-10-21 A | 100% |  |  |
| 970 | 1.3.2.2.1.8.4 | Eliminar | 1d | 2022-10-24 A | 2022-10-24 A | 100% |  |  |
| 971 | 1.3.2.2.1.8.5 | Configuración de Dashboard | 1d | 2022-10-25 A | 2022-10-25 A | 100% |  |  |
| 972 | 1.3.2.2.1.8.6 | Exportación de dashboard PDF | 1d | 2022-10-26 A | 2022-10-26 A | 100% |  |  |
| 973 | 1.3.2.2.1.8.7 | Exportación de dashboard Excel | 1d | 2022-10-27 A | 2022-10-27 A | 100% |  |  |
| 974 | 1.3.2.2.1.8.8 | Paginación Dashboard | 1d | 2022-10-28 A | 2022-10-28 A | 100% |  |  |
| 975 | 1.3.2.2.1.8.9 | Busqueda Dash board | 1d | 2022-10-29 A | 2022-10-31 A | 100% |  |  |
| 976 | 1.3.2.2.1.8.10 | Ventanas emergentes de validación | 1d | 2022-10-30 A | 2022-10-31 A | 100% |  |  |

| ID | WBS | Task | Duration | Start | Finish | Complete |
| --- | --- | --- | --- | --- | --- | --- |
| 977 | 1.3.2.2.1.9 | **Administración de Recaudación** | 11.25d | 2022-10-20 A | 2022-11-04 A | 100% |
| 978 | 1.3.2.2.1.9.1 | Pantalla Principal | 1d | 2022-10-20 A | 2022-10-20 A | 100% |
| 979 | 1.3.2.2.1.9.2 | Plantilla Carga Masiva Recaudación | 1d | 2022-10-21 A | 2022-10-21 A | 100% |
| 980 | 1.3.2.2.1.9.3 | Api Plantilla caga masiva Municipio - Recaudación | 1d | 2022-10-24 A | 2022-10-24 A | 100% |
| 981 | 1.3.2.2.1.9.4 | Agregar | 1d | 2022-10-25 A | 2022-10-25 A | 100% |
| 982 | 1.3.2.2.1.9.5 | Editar | 1d | 2022-10-26 A | 2022-10-26 A | 100% |
| 983 | 1.3.2.2.1.9.6 | Eliminar | 1d | 2022-10-27 A | 2022-10-27 A | 100% |
| 984 | 1.3.2.2.1.9.7 | Configuración de Dashboard | 1d | 2022-10-28 A | 2022-10-28 A | 100% |
| 985 | 1.3.2.2.1.9.8 | Exportación de dashboard PDF | 1d | 2022-10-31 A | 2022-10-31 A | 100% |
| 986 | 1.3.2.2.1.9.9 | Exportación de dashboard Excel | 1d | 2022-11-01 A | 2022-11-01 A | 100% |
| 987 | 1.3.2.2.1.9.10 | Paginación Dashboard | 1d | 2022-11-02 A | 2022-11-02 A | 100% |
| 988 | 1.3.2.2.1.9.11 | Busqueda Dash board | 1d | 2022-11-03 A | 2022-11-03 A | 100% |
| 989 | 1.3.2.2.1.9.12 | Ventanas emergentes de validación | 1d | 2022-11-04 A | 2022-11-04 A | 100% |
| 990 | 1.3.2.2.1.10 | **Administración de Población** | 9.38d | 2022-10-21 A | 2022-11-03 A | 100% |
| 991 | 1.3.2.2.1.10.1 | Pantalla Principal | 1d | 2022-10-21 A | 2022-10-21 A | 100% |
| 992 | 1.3.2.2.1.10.2 | Agregar | 1d | 2022-10-24 A | 2022-10-24 A | 100% |
| 993 | 1.3.2.2.1.10.3 | Editar | 1d | 2022-10-25 A | 2022-10-25 A | 100% |
| 994 | 1.3.2.2.1.10.4 | Eliminar | 1d | 2022-10-26 A | 2022-10-26 A | 100% |
| 995 | 1.3.2.2.1.10.5 | Configuración de Dashboard | 1d | 2022-10-27 A | 2022-10-27 A | 100% |
| 996 | 1.3.2.2.1.10.6 | Exportación de dashboard PDF | 1d | 2022-10-28 A | 2022-10-28 A | 100% |
| 997 | 1.3.2.2.1.10.7 | Exportación de dashboard Excel | 1d | 2022-10-31 A | 2022-10-31 A | 100% |
| 998 | 1.3.2.2.1.10.8 | Paginación Dashboard | 1d | 2022-11-01 A | 2022-11-01 A | 100% |
| 999 | 1.3.2.2.1.10.9 | Busqueda Dash board | 1d | 2022-11-02 A | 2022-11-02 A | 100% |
| 1000 | 1.3.2.2.1.10.10 | Ventanas emergentes de validación | 1d | 2022-11-03 A | 2022-11-03 A | 100% |

| ID | WBS | Task | Duration | Start | Finish | Complete |
| --- | --- | --- | --- | --- | --- | --- |
| 1001 | 1.3.2.2.1.11 | **Administración de Territorio** | 11.25d | 2022-10-24 A | 2022-11-08 A | 100% |
| 1002 | 1.3.2.2.1.11.1 | Pantalla Principal | 1d | 2022-10-24 A | 2022-10-24 A | 100% |
| 1003 | 1.3.2.2.1.11.2 | Plantilla Carga Masiva Territorio | 1d | 2022-10-25 A | 2022-10-25 A | 100% |
| 1004 | 1.3.2.2.1.11.3 | Api Plantilla caga masiva Municipio - Territorio | 1d | 2022-10-26 A | 2022-10-26 A | 100% |
| 1005 | 1.3.2.2.1.11.4 | Agregar | 1d | 2022-10-27 A | 2022-10-27 A | 100% |
| 1006 | 1.3.2.2.1.11.5 | Editar | 1d | 2022-10-28 A | 2022-10-28 A | 100% |
| 1007 | 1.3.2.2.1.11.6 | Eliminar | 1d | 2022-10-31 A | 2022-10-31 A | 100% |
| 1008 | 1.3.2.2.1.11.7 | Configuración de Dashboard | 1d | 2022-11-01 A | 2022-11-01 A | 100% |
| 1009 | 1.3.2.2.1.11.8 | Exportación de dashboard PDF | 1d | 2022-11-02 A | 2022-11-02 A | 100% |
| 1010 | 1.3.2.2.1.11.9 | Exportación de dashboard Excel | 1d | 2022-11-03 A | 2022-11-03 A | 100% |
| 1011 | 1.3.2.2.1.11.10 | Paginación Dashboard | 1d | 2022-11-04 A | 2022-11-04 A | 100% |
| 1012 | 1.3.2.2.1.11.11 | Busqueda Dash board | 1d | 2022-11-07 A | 2022-11-07 A | 100% |
| 1013 | 1.3.2.2.1.11.12 | Ventanas emergentes de validación | 1d | 2022-11-08 A | 2022-11-08 A | 100% |
| 1014 | 1.3.2.2.1.12 | **Administración de pobreza** | 11.25d | 2022-10-26 A | 2022-11-10 A | 100% |
| 1015 | 1.3.2.2.1.12.1 | Pantalla Principal | 1d | 2022-10-26 A | 2022-10-26 A | 100% |
| 1016 | 1.3.2.2.1.12.2 | Plantilla Carga Masiva Pobreza | 1d | 2022-10-27 A | 2022-10-27 A | 100% |
| 1017 | 1.3.2.2.1.12.3 | Api Plantilla caga masiva Municipio - Pobreza | 1d | 2022-10-28 A | 2022-10-28 A | 100% |
| 1018 | 1.3.2.2.1.12.4 | Agregar | 1d | 2022-10-31 A | 2022-10-31 A | 100% |
| 1019 | 1.3.2.2.1.12.5 | Editar | 1d | 2022-11-01 A | 2022-11-01 A | 100% |
| 1020 | 1.3.2.2.1.12.6 | Eliminar | 1d | 2022-11-02 A | 2022-11-02 A | 100% |
| 1021 | 1.3.2.2.1.12.7 | Configuración de Dashboard | 1d | 2022-11-03 A | 2022-11-03 A | 100% |
| 1022 | 1.3.2.2.1.12.8 | Exportación de dashboard PDF | 1d | 2022-11-04 A | 2022-11-04 A | 100% |
| 1023 | 1.3.2.2.1.12.9 | Exportación de dashboard Excel | 1d | 2022-11-07 A | 2022-11-07 A | 100% |
| 1024 | 1.3.2.2.1.12.10 | Paginación Dashboard | 1d | 2022-11-08 A | 2022-11-08 A | 100% |
| 1025 | 1.3.2.2.1.12.11 | Busqueda Dash board | 1d | 2022-11-09 A | 2022-11-09 A | 100% |
| 1026 | 1.3.2.2.1.12.12 | Ventanas emergentes de validación | 1d | 2022-11-10 A | 2022-11-10 A | 100% |

| ID | WBS | Task | Duration | Start | Finish | Complete | Remaining | Total slack |
| --- | --- | --- | --- | --- | --- | --- | --- | --- |
| 1027 | 1.3.2.2.1.13 | **Administración de Pobreza Extrema** | 1.88d | 2022-10-26 A | 2022-10-27 A | 100% |  |  |
| 1028 | 1.3.2.2.1.13.1 | Plantilla Carga Masiva Pobreza Extrema | 1d | 2022-10-26 A | 2022-10-26 A | 100% |  |  |
| 1029 | 1.3.2.2.1.13.2 | Api Plantilla caga masiva Municipio - Pobreza Extrema | 1d | 2022-10-27 A | 2022-10-27 A | 100% |  |  |
| 1030 | 1.3.2.2.1.14 | **Administración de Pobreza Moderada** | 1.88d | 2022-10-27 A | 2022-10-28 A | 100% |  |  |
| 1031 | 1.3.2.2.1.14.1 | Plantilla Carga Masiva Pobreza Moderada | 1d | 2022-10-27 A | 2022-10-27 A | 100% |  |  |
| 1032 | 1.3.2.2.1.14.2 | Api Plantilla caga masiva Municipio - Pobreza Moderada | 1d | 2022-10-28 A | 2022-10-28 A | 100% |  |  |
| 1033 | 1.3.2.2.1.15 | **Administración de Proyección** | 4.69d | 2022-10-28 A | 2022-11-03 A | 100% |  |  |
| 1034 | 1.3.2.2.1.15.1 | Pantalla Principal | 1d | 2022-10-28 A | 2022-10-28 A | 100% |  |  |
| 1035 | 1.3.2.2.1.15.2 | Agregar | 1d | 2022-10-28 A | 2022-10-28 A | 100% |  |  |
| 1036 | 1.3.2.2.1.15.3 | Editar | 1d | 2022-10-31 A | 2022-10-31 A | 100% |  |  |
| 1037 | 1.3.2.2.1.15.4 | Eliminar | 1d | 2022-11-01 A | 2022-11-01 A | 100% |  |  |
| 1038 | 1.3.2.2.1.15.5 | Plantilla Carga Masiva Proyección | 1d | 2022-11-02 A | 2022-11-02 A | 100% |  |  |
| 1039 | 1.3.2.2.1.15.6 | Api Plantilla caga masiva Municipio - Proyección | 1d | 2022-11-03 A | 2022-11-03 A | 100% |  |  |
| 1040 | 1.3.2.2.1.16 | **Dashboard Articulo 14 Fracción I** | 10.38d | 2022-11-01 A | 2022-11-16 |  | 10.38d | 19.56d |
| 1041 | 1.3.2.2.1.16.1 | Pantalla Principal | 1d | 2022-11-01 A | 2022-11-02 |  | 1d | 28.94d |
| 1042 | 1.3.2.2.1.16.2 | Generar plantilla | 1d | 2022-11-02 A | 2022-11-03 |  | 1d | 28d |
| 1043 | 1.3.2.2.1.16.3 | Carga masiva - plantilla | 1d | 2022-11-03 A | 2022-11-04 |  | 1d | 27.06d |
| 1044 | 1.3.2.2.1.16.4 | Recálculo de coeficiente | 1d | 2022-11-04 A | 2022-11-07 |  | 1d | 26.12d |
| 1045 | 1.3.2.2.1.16.5 | Editar información | 1d | 2022-11-07 A | 2022-11-08 |  | 1d | 25.19d |
| 1046 | 1.3.2.2.1.16.6 | Dashboard predial | 1d | 2022-11-08 A | 2022-11-09 |  | 1d | 24.25d |
| 1047 | 1.3.2.2.1.16.7 | Dashboard población y territorio | 1d | 2022-11-09 A | 2022-11-10 |  | 1d | 23.31d |
| 1048 | 1.3.2.2.1.16.8 | Dashboard carencia social | 1d | 2022-11-10 A | 2022-11-11 |  | 1d | 22.38d |
| 1049 | 1.3.2.2.1.16.9 | Cálculo de coeficiente | 1d | 2022-11-11 A | 2022-11-14 |  | 1d | 21.44d |
| 1050 | 1.3.2.2.1.16.10 | Proceso Autorización | 1d | 2022-11-14 A | 2022-11-15 |  | 1d | 20.5d |
| 1051 | 1.3.2.2.1.16.11 | Ventanas emergentes de validación | 1d | 2022-11-15 A | 2022-11-16 |  | 1d | 19.56d |

| ID | WBS | Task | Duration | Start | Finish | Remaining | Total slack |
| --- | --- | --- | --- | --- | --- | --- | --- |
| 1052 | 1.3.2.2.1.17 | **Dashboard Articulo 14 Fracción II** | 9.44d | 2022-11-02 A | 2022-11-16 | 9.44d | 19.56d |
| 1053 | 1.3.2.2.1.17.1 | Pantalla Principal | 1d | 2022-11-02 A | 2022-11-03 | 1d | 28d |
| 1054 | 1.3.2.2.1.17.2 | Dashboard población | 1d | 2022-11-03 A | 2022-11-04 | 1d | 27.06d |
| 1055 | 1.3.2.2.1.17.3 | generar plantilla | 1d | 2022-11-04 A | 2022-11-07 | 1d | 26.12d |
| 1056 | 1.3.2.2.1.17.4 | Carga masiva - plantilla | 1d | 2022-11-07 A | 2022-11-08 | 1d | 25.19d |
| 1057 | 1.3.2.2.1.17.5 | Recálculo de coeficiente | 1d | 2022-11-08 A | 2022-11-09 | 1d | 24.25d |
| 1058 | 1.3.2.2.1.17.6 | Editar información individual | 1d | 2022-11-09 A | 2022-11-10 | 1d | 23.31d |
| 1059 | 1.3.2.2.1.17.7 | Dashboard proyección población | 1d | 2022-11-10 A | 2022-11-11 | 1d | 22.38d |
| 1060 | 1.3.2.2.1.17.8 | Carga masiva - plantilla | 1d | 2022-11-11 A | 2022-11-14 | 1d | 21.44d |
| 1061 | 1.3.2.2.1.17.9 | Recálculo de coeficiente | 1d | 2022-11-14 A | 2022-11-15 | 1d | 20.5d |
| 1062 | 1.3.2.2.1.17.10 | Editar información individual | 1d | 2022-11-15 A | 2022-11-16 | 1d | 19.56d |
| 1063 | 1.3.2.2.1.17.11 | Cálculo de coeficiente | 1d | 2022-11-15 A | 2022-11-16 | 1d | 19.56d |
| 1064 | 1.3.2.2.1.17.12 | Proceso Autorización | 1d | 2022-11-15 A | 2022-11-16 | 1d | 19.56d |
| 1065 | 1.3.2.2.1.17.13 | Ventanas emergentes de validación | 1d | 2022-11-15 A | 2022-11-16 | 1d | 19.56d |
| 1066 | 1.3.2.2.1.18 | **Dashboard Articulo 14 Fracción III** | 8.5d | 2022-11-03 A | 2022-11-16 | 8.5d | 19.56d |
| 1067 | 1.3.2.2.1.18.1 | Pantalla Principal | 1d | 2022-11-03 A | 2022-11-04 | 1d | 27.06d |
| 1068 | 1.3.2.2.1.18.2 | Dashboard eficiencia recaudatoria | 1d | 2022-11-04 A | 2022-11-07 | 1d | 26.12d |
| 1069 | 1.3.2.2.1.18.3 | generar plantilla | 1d | 2022-11-07 A | 2022-11-08 | 1d | 25.19d |
| 1070 | 1.3.2.2.1.18.4 | Carga masiva - plantilla | 1d | 2022-11-08 A | 2022-11-09 | 1d | 24.25d |
| 1071 | 1.3.2.2.1.18.5 | Recálculo de coeficiente | 1d | 2022-11-09 A | 2022-11-10 | 1d | 23.31d |
| 1072 | 1.3.2.2.1.18.6 | Editar información individual | 1d | 2022-11-10 A | 2022-11-11 | 1d | 22.38d |
| 1073 | 1.3.2.2.1.18.7 | Dashboard crecimiento recaudación | 1d | 2022-11-11 A | 2022-11-14 | 1d | 21.44d |
| 1074 | 1.3.2.2.1.18.8 | Carga masiva - plantilla | 1d | 2022-11-14 A | 2022-11-15 | 1d | 20.5d |
| 1075 | 1.3.2.2.1.18.9 | Recálculo de coeficiente | 1d | 2022-11-15 A | 2022-11-16 | 1d | 19.56d |
| 1076 | 1.3.2.2.1.18.10 | Editar información individual | 1d | 2022-11-15 A | 2022-11-16 | 1d | 19.56d |
| 1077 | 1.3.2.2.1.18.11 | Cálculo de coeficiente | 1d | 2022-11-15 A | 2022-11-16 | 1d | 19.56d |
| 1078 | 1.3.2.2.1.18.12 | Proceso Autorización | 1d | 2022-11-15 A | 2022-11-16 | 1d | 19.56d |
| 1079 | 1.3.2.2.1.18.13 | Ventanas emergentes de validación | 1d | 2022-11-15 A | 2022-11-16 | 1d | 19.56d |
| 1080 | 1.3.2.2.1.18.14 | Participaciones Federales | 1d | 2022-11-15 A | 2022-11-16 | 1d | 19.56d |
| 1081 | 1.3.2.2.1.18.15 | Dashboard Participaciones Federales | 1d | 2022-11-15 A | 2022-11-16 | 1d | 19.56d |
| 1082 | 1.3.2.2.1.18.16 | Proceso Envío general Participaciones Federales | 1d | 2022-11-15 A | 2022-11-16 | 1d | 19.56d |
| 1083 | 1.3.2.2.1.18.17 | Track general Participaciones Federales | 1d | 2022-11-15 A | 2022-11-16 | 1d | 19.56d |

| ID | WBS | Task | Duration | Start | Finish | Remaining | Total slack |
| --- | --- | --- | --- | --- | --- | --- | --- |
| 1084 | 1.3.2.2.1.19 | **Dashboard FG** | 7.56d | 2022-11-04 A | 2022-11-16 | 7.56d | 19.56d |
| 1085 | 1.3.2.2.1.19.1 | Configuración inicial Fondo General (FG) | 1d | 2022-11-04 A | 2022-11-07 | 1d | 26.12d |
| 1086 | 1.3.2.2.1.19.2 | Carga inicial | 1d | 2022-11-07 A | 2022-11-08 | 1d | 25.19d |
| 1087 | 1.3.2.2.1.19.3 | Pantalla Principal | 1d | 2022-11-08 A | 2022-11-09 | 1d | 24.25d |
| 1088 | 1.3.2.2.1.19.4 | Proceso cálculo | 1d | 2022-11-09 A | 2022-11-10 | 1d | 23.31d |
| 1089 | 1.3.2.2.1.19.5 | Proceso autorización | 1d | 2022-11-10 A | 2022-11-11 | 1d | 22.38d |
| 1090 | 1.3.2.2.1.19.6 | Proceso envío | 1d | 2022-11-11 A | 2022-11-14 | 1d | 21.44d |
| 1091 | 1.3.2.2.1.19.7 | Avance programático Fondo General | 1d | 2022-11-14 A | 2022-11-15 | 1d | 20.5d |
| 1092 | 1.3.2.2.1.19.8 | Proceso Cancelación Fondo General | 1d | 2022-11-15 A | 2022-11-16 | 1d | 19.56d |
| 1093 | 1.3.2.2.1.19.9 | Ventanas emergentes de validación | 1d | 2022-11-15 A | 2022-11-16 | 1d | 19.56d |
| 1094 | 1.3.2.2.1.20 | **Dashboard FFM 70** | 13.19d | 2022-10-12 A | 2022-11-01 | 13.19d | 29.88d |
| 1095 | 1.3.2.2.1.20.1 | Configuración inicial Fondo Fomento Municipal 70 % (FFM 70% ) | 1d | 2022-10-12 A | 2022-10-13 | 1d | 42.06d |
| 1096 | 1.3.2.2.1.20.2 | Carga inicial | 1d | 2022-10-13 A | 2022-10-14 | 1d | 41.12d |
| 1097 | 1.3.2.2.1.20.3 | Pantalla Principal | 1d | 2022-10-14 A | 2022-10-17 | 1d | 40.19d |
| 1098 | 1.3.2.2.1.20.4 | Proceso cálculo | 1d | 2022-10-17 A | 2022-10-18 | 1d | 39.25d |
| 1099 | 1.3.2.2.1.20.5 | Proceso autorización | 1d | 2022-10-18 A | 2022-10-19 | 1d | 38.31d |
| 1100 | 1.3.2.2.1.20.6 | Proceso envío | 1d | 2022-10-19 A | 2022-10-20 | 1d | 37.38d |
| 1101 | 1.3.2.2.1.20.7 | Track | 1d | 2022-10-20 A | 2022-10-21 | 1d | 36.44d |
| 1102 | 1.3.2.2.1.20.8 | Ventanas emergentes de validación | 1d | 2022-10-21 A | 2022-10-24 | 1d | 35.5d |
| 1103 | 1.3.2.2.1.20.9 | Configuración inicial Fondo Fomento Municipal 30 % (FFM 30% ) | 1d | 2022-10-31 A | 2022-11-01 | 1d | 29.88d |
| 1104 | 1.3.2.2.1.21 | **Dashboard FFM 30** | 7.56d | 2022-10-13 A | 2022-10-25 | 7.56d | 34.56d |
| 1105 | 1.3.2.2.1.21.1 | Pantalla Principal | 1d | 2022-10-13 A | 2022-10-14 | 1d | 41.12d |
| 1106 | 1.3.2.2.1.21.2 | Carga Inicial | 1d | 2022-10-14 A | 2022-10-17 | 1d | 40.19d |
| 1107 | 1.3.2.2.1.21.3 | Proceso cálculo | 1d | 2022-10-17 A | 2022-10-18 | 1d | 39.25d |
| 1108 | 1.3.2.2.1.21.4 | Proceso autorización | 1d | 2022-10-18 A | 2022-10-19 | 1d | 38.31d |
| 1109 | 1.3.2.2.1.21.5 | Proceso envío | 1d | 2022-10-19 A | 2022-10-20 | 1d | 37.38d |
| 1110 | 1.3.2.2.1.21.6 | Track | 1d | 2022-10-20 A | 2022-10-21 | 1d | 36.44d |
| 1111 | 1.3.2.2.1.21.7 | Ventanas emergentes de validación | 1d | 2022-10-21 A | 2022-10-24 | 1d | 35.5d |
| 1112 | 1.3.2.2.1.21.8 | Configuración inicial Impuesto Especial sobre Producción y Servicios (IEPS) | 1d | 2022-10-24 A | 2022-10-25 | 1d | 34.56d |

| ID | WBS | Task | Duration | Start | Finish | Remaining | Total slack |
| --- | --- | --- | --- | --- | --- | --- | --- |
| 1113 | 1.3.2.2.1.22 | **Dashboard IEPS** | 7.56d | 2022-10-14 A | 2022-10-26 | 7.56d | 33.62d |
| 1114 | 1.3.2.2.1.22.1 | Carga inicial | 1d | 2022-10-14 A | 2022-10-17 | 1d | 40.19d |
| 1115 | 1.3.2.2.1.22.2 | Pantalla Principal | 1d | 2022-10-17 A | 2022-10-18 | 1d | 39.25d |
| 1116 | 1.3.2.2.1.22.3 | Proceso cálculo | 1d | 2022-10-18 A | 2022-10-19 | 1d | 38.31d |
| 1117 | 1.3.2.2.1.22.4 | Proceso autorización | 1d | 2022-10-19 A | 2022-10-20 | 1d | 37.38d |
| 1118 | 1.3.2.2.1.22.5 | Proceso envío | 1d | 2022-10-20 A | 2022-10-21 | 1d | 36.44d |
| 1119 | 1.3.2.2.1.22.6 | Track | 1d | 2022-10-21 A | 2022-10-24 | 1d | 35.5d |
| 1120 | 1.3.2.2.1.22.7 | Ventanas emergentes de validación | 1d | 2022-10-24 A | 2022-10-25 | 1d | 34.56d |
| 1121 | 1.3.2.2.1.22.8 | Configuración inicial Impuesto sobre la Venta Final de Gasolinas y Diesel (IEPS GyD) | 1d | 2022-10-25 A | 2022-10-26 | 1d | 33.62d |
| 1122 | 1.3.2.2.1.23 | **Dashboard IEPS GyD** | 6.62d | 2022-10-14 A | 2022-10-25 | 6.62d | 34.56d |
| 1123 | 1.3.2.2.1.23.1 | Carga inicial | 1d | 2022-10-14 A | 2022-10-17 | 1d | 40.19d |
| 1124 | 1.3.2.2.1.23.2 | Pantalla Principal | 1d | 2022-10-17 A | 2022-10-18 | 1d | 39.25d |
| 1125 | 1.3.2.2.1.23.3 | Proceso cálculo | 1d | 2022-10-18 A | 2022-10-19 | 1d | 38.31d |
| 1126 | 1.3.2.2.1.23.4 | Proceso autorización | 1d | 2022-10-19 A | 2022-10-20 | 1d | 37.38d |
| 1127 | 1.3.2.2.1.23.5 | Proceso envío | 1d | 2022-10-20 A | 2022-10-21 | 1d | 36.44d |
| 1128 | 1.3.2.2.1.23.6 | Track | 1d | 2022-10-21 A | 2022-10-24 | 1d | 35.5d |
| 1129 | 1.3.2.2.1.23.7 | Ventanas emergentes de validación | 1d | 2022-10-22 A | 2022-10-25 | 1d | 34.56d |
| 1130 | 1.3.2.2.1.24 | **Dashboard ISR Bienes Inmuebles** | 7.56d | 2022-10-17 A | 2022-10-27 | 7.56d | 32.69d |
| 1131 | 1.3.2.2.1.24.1 | Pantalla Principal | 1d | 2022-10-17 A | 2022-10-18 | 1d | 39.25d |
| 1132 | 1.3.2.2.1.24.2 | Carga inicial | 1d | 2022-10-18 A | 2022-10-19 | 1d | 38.31d |
| 1133 | 1.3.2.2.1.24.3 | Configuración inicial ISR Bienes Inmuebles | 1d | 2022-10-19 A | 2022-10-20 | 1d | 37.38d |
| 1134 | 1.3.2.2.1.24.4 | Proceso cálculo | 1d | 2022-10-20 A | 2022-10-21 | 1d | 36.44d |
| 1135 | 1.3.2.2.1.24.5 | Proceso autorización | 1d | 2022-10-21 A | 2022-10-24 | 1d | 35.5d |
| 1136 | 1.3.2.2.1.24.6 | Proceso envío | 1d | 2022-10-24 A | 2022-10-25 | 1d | 34.56d |
| 1137 | 1.3.2.2.1.24.7 | Track | 1d | 2022-10-25 A | 2022-10-26 | 1d | 33.62d |
| 1138 | 1.3.2.2.1.24.8 | Ventanas emergentes de validación | 1d | 2022-10-26 A | 2022-10-27 | 1d | 32.69d |

| ID | WBS | Task | Duration | Start | Finish | Complete | Remaining | Total slack |
| --- | --- | --- | --- | --- | --- | --- | --- | --- |
| 1139 | 1.3.2.2.1.25 | **Dashboard FOFIR** | 7.56d | 2022-10-18 A | 2022-10-28 |  | 7.56d | 31.75d |
| 1140 | 1.3.2.2.1.25.1 | Pantalla Principal | 1d | 2022-10-18 A | 2022-10-19 |  | 1d | 38.31d |
| 1141 | 1.3.2.2.1.25.2 | Carga inicial | 1d | 2022-10-19 A | 2022-10-20 |  | 1d | 37.38d |
| 1142 | 1.3.2.2.1.25.3 | Configuración inicial Fondo de Fiscalización y Recaudación (FOFIR) | 1d | 2022-10-20 A | 2022-10-21 |  | 1d | 36.44d |
| 1143 | 1.3.2.2.1.25.4 | Proceso cálculo | 1d | 2022-10-21 A | 2022-10-24 |  | 1d | 35.5d |
| 1144 | 1.3.2.2.1.25.5 | Proceso autorización | 1d | 2022-10-24 A | 2022-10-25 |  | 1d | 34.56d |
| 1145 | 1.3.2.2.1.25.6 | Proceso envío | 1d | 2022-10-25 A | 2022-10-26 |  | 1d | 33.62d |
| 1146 | 1.3.2.2.1.25.7 | Track | 1d | 2022-10-26 A | 2022-10-27 |  | 1d | 32.69d |
| 1147 | 1.3.2.2.1.25.8 | Ventanas emergentes de validación | 1d | 2022-10-27 A | 2022-10-28 |  | 1d | 31.75d |
| 1148 | 1.3.2.2.1.26 | **Dashboard ISAN** | 9.44d | 2022-10-19 A | 2022-11-02 | 20% | 7.55d | 28.94d |
| 1149 | 1.3.2.2.1.26.1 | Pantalla Principal | 1d | 2022-10-19 A | 2022-10-20 |  | 1d | 37.38d |
| 1150 | 1.3.2.2.1.26.2 | Plantilla Carga Masiva ISAN | 1d | 2022-10-20 A | 2022-10-20 A | 100% |  |  |
| 1151 | 1.3.2.2.1.26.3 | Api Plantilla caga masiva Municipio - ISAN | 1d | 2022-10-21 A | 2022-10-21 A | 100% |  |  |
| 1152 | 1.3.2.2.1.26.4 | Carga inicial | 1d | 2022-10-24 A | 2022-10-25 |  | 1d | 34.56d |
| 1153 | 1.3.2.2.1.26.5 | Configuración inicial Impuesto sobre Automóviles Nuevos (ISAN) | 1d | 2022-10-25 A | 2022-10-26 |  | 1d | 33.62d |
| 1154 | 1.3.2.2.1.26.6 | Proceso cálculo | 1d | 2022-10-26 A | 2022-10-27 |  | 1d | 32.69d |
| 1155 | 1.3.2.2.1.26.7 | Proceso autorización | 1d | 2022-10-27 A | 2022-10-28 |  | 1d | 31.75d |
| 1156 | 1.3.2.2.1.26.8 | Proceso envío | 1d | 2022-10-28 A | 2022-10-31 |  | 1d | 30.81d |
| 1157 | 1.3.2.2.1.26.9 | Track | 1d | 2022-10-31 A | 2022-11-01 |  | 1d | 29.88d |
| 1158 | 1.3.2.2.1.26.10 | Ventanas emergentes de validación | 1d | 2022-11-01 A | 2022-11-02 |  | 1d | 28.94d |
| 1159 | 1.3.2.2.1.27 | **Dashboard Comp. ISAN** | 7.56d | 2022-10-20 A | 2022-11-01 |  | 7.56d | 29.88d |
| 1160 | 1.3.2.2.1.27.1 | Pantalla Principal | 1d | 2022-10-20 A | 2022-10-21 |  | 1d | 36.44d |
| 1161 | 1.3.2.2.1.27.2 | Carga inicial | 1d | 2022-10-21 A | 2022-10-24 |  | 1d | 35.5d |
| 1162 | 1.3.2.2.1.27.3 | Configuración inicial Compensación ISAN | 1d | 2022-10-24 A | 2022-10-25 |  | 1d | 34.56d |
| 1163 | 1.3.2.2.1.27.4 | Proceso cálculo | 1d | 2022-10-25 A | 2022-10-26 |  | 1d | 33.62d |
| 1164 | 1.3.2.2.1.27.5 | Proceso autorización | 1d | 2022-10-26 A | 2022-10-27 |  | 1d | 32.69d |
| 1165 | 1.3.2.2.1.27.6 | Proceso envío | 1d | 2022-10-27 A | 2022-10-28 |  | 1d | 31.75d |
| 1166 | 1.3.2.2.1.27.7 | Track | 1d | 2022-10-28 A | 2022-10-31 |  | 1d | 30.81d |
| 1167 | 1.3.2.2.1.27.8 | Ventanas emergentes de validación | 1d | 2022-10-31 A | 2022-11-01 |  | 1d | 29.88d |

| ID | WBS | Task | Duration | Start | Finish | Remaining | Total slack |
| --- | --- | --- | --- | --- | --- | --- | --- |
| 1168 | 1.3.2.2.1.28 | **Dashboard ISN** | 6.62d | 2022-10-21 A | 2022-11-01 | 6.62d | 29.88d |
| 1169 | 1.3.2.2.1.28.1 | Pantalla Principal | 1d | 2022-10-21 A | 2022-10-24 | 1d | 35.5d |
| 1170 | 1.3.2.2.1.28.2 | Carga configuración inicial fondo ISN | 1d | 2022-10-24 A | 2022-10-25 | 1d | 34.56d |
| 1171 | 1.3.2.2.1.28.3 | Proceso de cálculo | 1d | 2022-10-25 A | 2022-10-26 | 1d | 33.62d |
| 1172 | 1.3.2.2.1.28.4 | Proceso de Autorización | 1d | 2022-10-26 A | 2022-10-27 | 1d | 32.69d |
| 1173 | 1.3.2.2.1.28.5 | Proceso de Envío | 1d | 2022-10-27 A | 2022-10-28 | 1d | 31.75d |
| 1174 | 1.3.2.2.1.28.6 | Track | 1d | 2022-10-28 A | 2022-10-31 | 1d | 30.81d |
| 1175 | 1.3.2.2.1.28.7 | Ventanas emergentes de validación | 1d | 2022-10-31 A | 2022-11-01 | 1d | 29.88d |
| 1176 | 1.3.2.2.1.29 | **Dashboard ICV** | 7.56d | 2022-10-24 A | 2022-11-03 | 7.56d | 28d |
| 1177 | 1.3.2.2.1.29.1 | Pantalla Principal | 1d | 2022-10-24 A | 2022-10-25 | 1d | 34.56d |
| 1178 | 1.3.2.2.1.29.2 | Carga Configuración inicial ICV | 1d | 2022-10-25 A | 2022-10-26 | 1d | 33.62d |
| 1179 | 1.3.2.2.1.29.3 | Carga masiva de ICV - (Plantilla) | 1d | 2022-10-26 A | 2022-10-27 | 1d | 32.69d |
| 1180 | 1.3.2.2.1.29.4 | Proceso de cálculo | 1d | 2022-10-27 A | 2022-10-28 | 1d | 31.75d |
| 1181 | 1.3.2.2.1.29.5 | Proceso de Autorización | 1d | 2022-10-28 A | 2022-10-31 | 1d | 30.81d |
| 1182 | 1.3.2.2.1.29.6 | Proceso de Envío | 1d | 2022-10-31 A | 2022-11-01 | 1d | 29.88d |
| 1183 | 1.3.2.2.1.29.7 | Track | 1d | 2022-11-01 A | 2022-11-02 | 1d | 28.94d |
| 1184 | 1.3.2.2.1.29.8 | Ventanas emergentes de validación | 1d | 2022-11-02 A | 2022-11-03 | 1d | 28d |
| 1185 | 1.3.2.2.1.30 | **Dashboard Fondo Ultracrecmiento** | 6.62d | 2022-10-25 A | 2022-11-03 | 6.62d | 28d |
| 1186 | 1.3.2.2.1.30.1 | Pantalla Principal | 1d | 2022-10-25 A | 2022-10-26 | 1d | 33.62d |
| 1187 | 1.3.2.2.1.30.2 | Carga configuración inicial Fondo Ultracrecimiento | 1d | 2022-10-26 A | 2022-10-27 | 1d | 32.69d |
| 1188 | 1.3.2.2.1.30.3 | Proceso de Autorización | 1d | 2022-10-27 A | 2022-10-28 | 1d | 31.75d |
| 1189 | 1.3.2.2.1.30.4 | Proceso de Envío | 1d | 2022-10-28 A | 2022-10-31 | 1d | 30.81d |
| 1190 | 1.3.2.2.1.30.5 | Track | 1d | 2022-10-31 A | 2022-11-01 | 1d | 29.88d |
| 1191 | 1.3.2.2.1.30.6 | Ventanas emergentes de validación | 1d | 2022-11-01 A | 2022-11-02 | 1d | 28.94d |
| 1192 | 1.3.2.2.1.30.7 | Generación de reporte | 1d | 2022-11-02 A | 2022-11-03 | 1d | 28d |

| ID | WBS | Task | Duration | Start | Finish | Remaining | Total slack | Constraint |
| --- | --- | --- | --- | --- | --- | --- | --- | --- |
| 1193 | 1.3.2.2.1.31 | **Dashboard Fondos Descentralizado** | 5.69d | 2022-10-11 A | 2022-10-19 | 5.69d | 38.31d |  |
| 1194 | 1.3.2.2.1.31.1 | Pantalla Principal | 1d | 2022-10-11 | 2022-10-12 |  | 114.31d | start no earlier than 2022-10-11 |
| 1195 | 1.3.2.2.1.31.2 | Carga configuración inicial Fondo Ultracrecimiento | 1d | 2022-10-11 | 2022-10-12 |  | 114.31d | start no earlier than 2022-10-11 |
| 1196 | 1.3.2.2.1.31.3 | Proceso de cálculo | 1d | 2022-10-12 A | 2022-10-13 | 1d | 42.06d |  |
| 1197 | 1.3.2.2.1.31.4 | Proceso de Autorización | 1d | 2022-10-13 A | 2022-10-14 | 1d | 41.12d |  |
| 1198 | 1.3.2.2.1.31.5 | Proceso de Envío | 1d | 2022-10-14 A | 2022-10-17 | 1d | 40.19d |  |
| 1199 | 1.3.2.2.1.31.6 | Track | 1d | 2022-10-17 A | 2022-10-18 | 1d | 39.25d |  |
| 1200 | 1.3.2.2.1.31.7 | Ventanas emergentes de validación | 1d | 2022-10-18 A | 2022-10-19 | 1d | 38.31d |  |
| 1201 | 1.3.2.2.1.32 | **Dashboard Fondos Seguridad** | 7.56d | 2022-10-12 A | 2022-10-24 | 7.56d | 35.5d |  |
| 1202 | 1.3.2.2.1.32.1 | Pantalla Principal | 1d | 2022-10-12 A | 2022-10-13 | 1d | 42.06d |  |
| 1203 | 1.3.2.2.1.32.2 | Carga configuración inicial Fondo Seguridad | 1d | 2022-10-13 A | 2022-10-14 | 1d | 41.12d |  |
| 1204 | 1.3.2.2.1.32.3 | Proceso de cálculo | 1d | 2022-10-14 A | 2022-10-17 | 1d | 40.19d |  |
| 1205 | 1.3.2.2.1.32.4 | Proceso de Autorización | 1d | 2022-10-17 A | 2022-10-18 | 1d | 39.25d |  |
| 1206 | 1.3.2.2.1.32.5 | Proceso de Envío | 1d | 2022-10-18 A | 2022-10-19 | 1d | 38.31d |  |
| 1207 | 1.3.2.2.1.32.6 | Track | 1d | 2022-10-19 A | 2022-10-20 | 1d | 37.38d |  |
| 1208 | 1.3.2.2.1.32.7 | Ventanas emergentes de validación | 1d | 2022-10-20 A | 2022-10-21 | 1d | 36.44d |  |
| 1209 | 1.3.2.2.1.32.8 | Generación de reporte | 1d | 2022-10-21 A | 2022-10-24 | 1d | 35.5d |  |
| 1210 | 1.3.2.2.1.33 | **Dashboard Fondos de Desarrollo Municipal** | 7.56d | 2022-10-13 A | 2022-10-25 | 7.56d | 34.56d |  |
| 1211 | 1.3.2.2.1.33.1 | Pantalla Principal | 1d | 2022-10-13 A | 2022-10-14 | 1d | 41.12d |  |
| 1212 | 1.3.2.2.1.33.2 | Carga configuración inicial Fondo Desarrollo Municipal | 1d | 2022-10-14 A | 2022-10-17 | 1d | 40.19d |  |
| 1213 | 1.3.2.2.1.33.3 | Proceso de cálculo | 1d | 2022-10-17 A | 2022-10-18 | 1d | 39.25d |  |
| 1214 | 1.3.2.2.1.33.4 | Proceso de Autorización | 1d | 2022-10-18 A | 2022-10-19 | 1d | 38.31d |  |
| 1215 | 1.3.2.2.1.33.5 | Proceso de Envío | 1d | 2022-10-19 A | 2022-10-20 | 1d | 37.38d |  |
| 1216 | 1.3.2.2.1.33.6 | Track | 1d | 2022-10-20 A | 2022-10-21 | 1d | 36.44d |  |
| 1217 | 1.3.2.2.1.33.7 | Ventanas emergentes de validación | 1d | 2022-10-21 A | 2022-10-24 | 1d | 35.5d |  |
| 1218 | 1.3.2.2.1.33.8 | Generación de reporte | 1d | 2022-10-24 A | 2022-10-25 | 1d | 34.56d |  |

| ID | WBS | Task | Duration | Start | Finish | Predecessors | Complete | Remaining | Total slack |
| --- | --- | --- | --- | --- | --- | --- | --- | --- | --- |
| 1219 | 1.3.2.2.1.34 | **Dashboard Fondos FORTAMUN** | 7.56d | 2022-10-14 A | 2022-10-26 |  |  | 7.56d | 33.62d |
| 1220 | 1.3.2.2.1.34.1 | Pantalla Principal | 1d | 2022-10-14 A | 2022-10-17 |  |  | 1d | 40.19d |
| 1221 | 1.3.2.2.1.34.2 | Carga configuración inicial Fondo FORTAMUN | 1d | 2022-10-17 A | 2022-10-18 |  |  | 1d | 39.25d |
| 1222 | 1.3.2.2.1.34.3 | Proceso de cálculo | 1d | 2022-10-18 A | 2022-10-19 |  |  | 1d | 38.31d |
| 1223 | 1.3.2.2.1.34.4 | Proceso de Autorización | 1d | 2022-10-19 A | 2022-10-20 |  |  | 1d | 37.38d |
| 1224 | 1.3.2.2.1.34.5 | Proceso de Envío | 1d | 2022-10-20 A | 2022-10-21 |  |  | 1d | 36.44d |
| 1225 | 1.3.2.2.1.34.6 | Track | 1d | 2022-10-21 A | 2022-10-24 |  |  | 1d | 35.5d |
| 1226 | 1.3.2.2.1.34.7 | Ventanas emergentes de validación | 1d | 2022-10-24 A | 2022-10-25 |  |  | 1d | 34.56d |
| 1227 | 1.3.2.2.1.34.8 | Generación de reporte | 1d | 2022-10-25 A | 2022-10-26 |  |  | 1d | 33.62d |
| 1228 | 1.3.2.2.1.35 | **Dashboard Fondos FISM** | 9.44d | 2022-10-17 A | 2022-10-31 |  |  | 9.44d | 30.81d |
| 1229 | 1.3.2.2.1.35.1 | Pantalla Principal | 1d | 2022-10-17 A | 2022-10-18 |  |  | 1d | 39.25d |
| 1230 | 1.3.2.2.1.35.2 | Carga configuración inicial Fondo FISM | 1d | 2022-10-18 A | 2022-10-19 |  |  | 1d | 38.31d |
| 1231 | 1.3.2.2.1.35.3 | Proceso de cálculo | 1d | 2022-10-19 A | 2022-10-20 |  |  | 1d | 37.38d |
| 1232 | 1.3.2.2.1.35.4 | Proceso de Autorización | 1d | 2022-10-20 A | 2022-10-21 |  |  | 1d | 36.44d |
| 1233 | 1.3.2.2.1.35.5 | Proceso de Envío | 1d | 2022-10-21 A | 2022-10-24 |  |  | 1d | 35.5d |
| 1234 | 1.3.2.2.1.35.6 | Track | 1d | 2022-10-24 A | 2022-10-25 |  |  | 1d | 34.56d |
| 1235 | 1.3.2.2.1.35.7 | Ventanas emergentes de validación | 1d | 2022-10-25 A | 2022-10-26 |  |  | 1d | 33.62d |
| 1236 | 1.3.2.2.1.35.8 | Generación de reporte | 1d | 2022-10-26 A | 2022-10-27 |  |  | 1d | 32.69d |
| 1237 | 1.3.2.2.1.35.9 | Generador de estadísticas | 1d | 2022-10-27 A | 2022-10-28 |  |  | 1d | 31.75d |
| 1238 | 1.3.2.2.1.35.10 | Generador de reportes | 1d | 2022-10-28 A | 2022-10-31 |  |  | 1d | 30.81d |
| 1239 | 1.3.2.3 | **sprint 6** | 24.44d | 2022-10-11 A | 2022-11-16 | 31 | 5% | 23.2d | 19.56d |
| 1240 | 1.3.2.3.1 | **Módulo DAMOP** | 24.44d | 2022-10-11 A | 2022-11-16 |  | 5% | 23.2d | 19.56d |
| 1241 | 1.3.2.3.1.1 | **Base** | 3.81d | 2022-10-11 A | 2022-10-17 |  | 25% | 2.86d | 40.19d |
| 1242 | 1.3.2.3.1.1.1 | Pantalla Principal | 1d | 2022-10-11 A | 2022-10-12 |  |  | 1d | 43d |
| 1243 | 1.3.2.3.1.1.2 | Pop up Notificaciones | 1d | 2022-10-12 A | 2022-10-13 |  |  | 1d | 42.06d |
| 1244 | 1.3.2.3.1.1.3 | Contador de Notificaciones (Icono campanita) | 1d | 2022-10-13 A | 2022-10-13 A |  | 100% |  |  |
| 1245 | 1.3.2.3.1.1.4 | Bandeja entrada de Notificaciones | 1d | 2022-10-14 A | 2022-10-17 |  |  | 1d | 40.19d |

| ID | WBS | Task | Duration | Start | Finish | Complete | Remaining | Total slack |
| --- | --- | --- | --- | --- | --- | --- | --- | --- |
| 1246 | 1.3.2.3.1.2 | **Administración de Municipios** | 12.25d | 2022-10-12 A | 2022-10-31 | 15% | 10.37d | 30.81d |
| 1247 | 1.3.2.3.1.2.1 | Pantalla principal | 1d | 2022-10-12 A | 2022-10-13 |  | 1d | 42.06d |
| 1248 | 1.3.2.3.1.2.2 | Insertar | 1d | 2022-10-13 A | 2022-10-13 A | 100% |  |  |
| 1249 | 1.3.2.3.1.2.3 | Contactar Municipio | 1d | 2022-10-14 A | 2022-10-17 |  | 1d | 40.19d |
| 1250 | 1.3.2.3.1.2.4 | Ver Detalles | 1d | 2022-10-17 A | 2022-10-18 |  | 1d | 39.25d |
| 1251 | 1.3.2.3.1.2.5 | Configuración de Dashboard | 1d | 2022-10-18 A | 2022-10-19 |  | 1d | 38.31d |
| 1252 | 1.3.2.3.1.2.6 | Exportación de dashboard PDF | 1d | 2022-10-19 A | 2022-10-20 |  | 1d | 37.38d |
| 1253 | 1.3.2.3.1.2.7 | Exportación de dashboard Excel | 1d | 2022-10-20 A | 2022-10-21 |  | 1d | 36.44d |
| 1254 | 1.3.2.3.1.2.8 | Paginación Dashboard | 1d | 2022-10-21 A | 2022-10-24 |  | 1d | 35.5d |
| 1255 | 1.3.2.3.1.2.9 | Busqueda Dash board | 1d | 2022-10-24 A | 2022-10-25 |  | 1d | 34.56d |
| 1256 | 1.3.2.3.1.2.10 | Ventanas emergentes de validación | 1d | 2022-10-25 A | 2022-10-26 |  | 1d | 33.62d |
| 1257 | 1.3.2.3.1.2.11 | Modificar | 1d | 2022-10-26 A | 2022-10-26 A | 100% |  |  |
| 1258 | 1.3.2.3.1.2.12 | Subida de Archivos | 1d | 2022-10-27 A | 2022-10-28 |  | 1d | 31.75d |
| 1259 | 1.3.2.3.1.2.13 | Descarga de PDF | 1d | 2022-10-28 A | 2022-10-31 |  | 1d | 30.81d |
| 1260 | 1.3.2.3.1.3 | **Administración de Avisos** | 9.44d | 2022-10-13 A | 2022-10-27 |  | 9.44d | 32.69d |
| 1261 | 1.3.2.3.1.3.1 | Pantalla principal | 1d | 2022-10-13 A | 2022-10-14 |  | 1d | 41.12d |
| 1262 | 1.3.2.3.1.3.2 | Agregar | 1d | 2022-10-14 A | 2022-10-17 |  | 1d | 40.19d |
| 1263 | 1.3.2.3.1.3.3 | Eliminar | 1d | 2022-10-17 A | 2022-10-18 |  | 1d | 39.25d |
| 1264 | 1.3.2.3.1.3.4 | Editar | 1d | 2022-10-18 A | 2022-10-19 |  | 1d | 38.31d |
| 1265 | 1.3.2.3.1.3.5 | Configuración de Dashboard | 1d | 2022-10-19 A | 2022-10-20 |  | 1d | 37.38d |
| 1266 | 1.3.2.3.1.3.6 | Exportación de dashboard PDF | 1d | 2022-10-20 A | 2022-10-21 |  | 1d | 36.44d |
| 1267 | 1.3.2.3.1.3.7 | Exportación de dashboard Excel | 1d | 2022-10-21 A | 2022-10-24 |  | 1d | 35.5d |
| 1268 | 1.3.2.3.1.3.8 | Paginación Dashboard | 1d | 2022-10-24 A | 2022-10-25 |  | 1d | 34.56d |
| 1269 | 1.3.2.3.1.3.9 | Busqueda Dash board | 1d | 2022-10-25 A | 2022-10-26 |  | 1d | 33.62d |
| 1270 | 1.3.2.3.1.3.10 | Ventanas emergentes de validación | 1d | 2022-10-26 A | 2022-10-27 |  | 1d | 32.69d |

| ID | WBS | Task | Duration | Start | Finish | Complete | Remaining | Total slack |
| --- | --- | --- | --- | --- | --- | --- | --- | --- |
| 1271 | 1.3.2.3.1.4 | **Administración de Eventos** | 9.44d | 2022-10-14 A | 2022-10-28 |  | 9.44d | 31.75d |
| 1272 | 1.3.2.3.1.4.1 | Pantalla principal | 1d | 2022-10-14 A | 2022-10-17 |  | 1d | 40.19d |
| 1273 | 1.3.2.3.1.4.2 | Agregar | 1d | 2022-10-17 A | 2022-10-18 |  | 1d | 39.25d |
| 1274 | 1.3.2.3.1.4.3 | Eliminar | 1d | 2022-10-18 A | 2022-10-19 |  | 1d | 38.31d |
| 1275 | 1.3.2.3.1.4.4 | Editar | 1d | 2022-10-19 A | 2022-10-20 |  | 1d | 37.38d |
| 1276 | 1.3.2.3.1.4.5 | Configuración de Dashboard | 1d | 2022-10-20 A | 2022-10-21 |  | 1d | 36.44d |
| 1277 | 1.3.2.3.1.4.6 | Exportación de dashboard PDF | 1d | 2022-10-21 A | 2022-10-24 |  | 1d | 35.5d |
| 1278 | 1.3.2.3.1.4.7 | Exportación de dashboard Excel | 1d | 2022-10-24 A | 2022-10-25 |  | 1d | 34.56d |
| 1279 | 1.3.2.3.1.4.8 | Paginación Dashboard | 1d | 2022-10-25 A | 2022-10-26 |  | 1d | 33.62d |
| 1280 | 1.3.2.3.1.4.9 | Busqueda Dash board | 1d | 2022-10-26 A | 2022-10-27 |  | 1d | 32.69d |
| 1281 | 1.3.2.3.1.4.10 | Ventanas emergentes de validación | 1d | 2022-10-27 A | 2022-10-28 |  | 1d | 31.75d |
| 1282 | 1.3.2.3.1.5 | **Administración de Conceptos** | 3.81d | 2022-10-17 A | 2022-10-21 |  | 3.81d | 36.44d |
| 1283 | 1.3.2.3.1.5.1 | Pantalla principal | 1d | 2022-10-17 A | 2022-10-18 |  | 1d | 39.25d |
| 1284 | 1.3.2.3.1.5.2 | Agregar | 1d | 2022-10-18 A | 2022-10-19 |  | 1d | 38.31d |
| 1285 | 1.3.2.3.1.5.3 | Eliminar | 1d | 2022-10-19 A | 2022-10-20 |  | 1d | 37.38d |
| 1286 | 1.3.2.3.1.5.4 | Editar | 1d | 2022-10-20 A | 2022-10-21 |  | 1d | 36.44d |
| 1287 | 1.3.2.3.1.6 | **Administración tasa interés BANXICO** | 5.62d | 2022-10-18 A | 2022-10-25 A | 100% |  |  |
| 1288 | 1.3.2.3.1.6.1 | Pantalla principal | 1d | 2022-10-18 A | 2022-10-18 A | 100% |  |  |
| 1289 | 1.3.2.3.1.6.2 | Insertar | 1d | 2022-10-19 A | 2022-10-19 A | 100% |  |  |
| 1290 | 1.3.2.3.1.6.3 | Modificar | 1d | 2022-10-20 A | 2022-10-20 A | 100% |  |  |
| 1291 | 1.3.2.3.1.6.4 | Eliminar | 1d | 2022-10-21 A | 2022-10-21 A | 100% |  |  |
| 1292 | 1.3.2.3.1.6.5 | Visualizar | 1d | 2022-10-24 A | 2022-10-24 A | 100% |  |  |
| 1293 | 1.3.2.3.1.6.6 | Job de Ejecucion automatica | 1d | 2022-10-25 A | 2022-10-25 A | 100% |  |  |
| 1294 | 1.3.2.3.1.7 | **Anticipo Participaciones** | 14.12d | 2022-10-19 A | 2022-11-09 |  | 14.12d | 24.25d |
| 1295 | 1.3.2.3.1.7.1 | Pantalla principal | 1d | 2022-10-19 A | 2022-10-20 |  | 1d | 37.38d |
| 1296 | 1.3.2.3.1.7.2 | Agregar | 1d | 2022-10-20 A | 2022-10-21 |  | 1d | 36.44d |
| 1297 | 1.3.2.3.1.7.3 | Eliminar | 1d | 2022-10-21 A | 2022-10-24 |  | 1d | 35.5d |
| 1298 | 1.3.2.3.1.7.4 | Editar | 1d | 2022-10-24 A | 2022-10-25 |  | 1d | 34.56d |
| 1299 | 1.3.2.3.1.7.5 | Configuración de Dashboard | 1d | 2022-10-25 A | 2022-10-26 |  | 1d | 33.62d |
| 1300 | 1.3.2.3.1.7.6 | Exportación de dashboard PDF | 1d | 2022-10-26 A | 2022-10-27 |  | 1d | 32.69d |
| 1301 | 1.3.2.3.1.7.7 | Exportación de dashboard Excel | 1d | 2022-10-27 A | 2022-10-28 |  | 1d | 31.75d |
| 1302 | 1.3.2.3.1.7.8 | Paginación Dashboard | 1d | 2022-10-28 A | 2022-10-31 |  | 1d | 30.81d |
| 1303 | 1.3.2.3.1.7.9 | Busqueda Dash board | 1d | 2022-10-31 A | 2022-11-01 |  | 1d | 29.88d |
| 1304 | 1.3.2.3.1.7.10 | Ventanas emergentes de validación | 1d | 2022-11-01 A | 2022-11-02 |  | 1d | 28.94d |
| 1305 | 1.3.2.3.1.7.11 | Carga masiva | 1d | 2022-11-02 A | 2022-11-03 |  | 1d | 28d |
| 1306 | 1.3.2.3.1.7.12 | Copiar información del mes anterior | 1d | 2022-11-03 A | 2022-11-04 |  | 1d | 27.06d |
| 1307 | 1.3.2.3.1.7.13 | Proceso de Ajuste | 1d | 2022-11-04 A | 2022-11-07 |  | 1d | 26.12d |
| 1308 | 1.3.2.3.1.7.14 | Proceso de Enviar | 1d | 2022-11-07 A | 2022-11-08 |  | 1d | 25.19d |
| 1309 | 1.3.2.3.1.7.15 | Track | 1d | 2022-11-08 A | 2022-11-09 |  | 1d | 24.25d |

| ID | WBS | Task | Duration | Start | Finish | Remaining | Total slack | Constraint |
| --- | --- | --- | --- | --- | --- | --- | --- | --- |
| 1310 | 1.3.2.3.1.8 | **Solicitud de Recursos** | 13.19d | 2022-10-20 A | 2022-11-09 | 13.19d | 24.25d |  |
| 1311 | 1.3.2.3.1.8.1 | Pantalla principal | 1d | 2022-10-20 | 2022-10-21 |  | 107.75d | start no earlier than 2022-10-20 |
| 1312 | 1.3.2.3.1.8.2 | Agregar | 1d | 2022-10-20 | 2022-10-21 |  | 107.75d | start no earlier than 2022-10-20 |
| 1313 | 1.3.2.3.1.8.3 | Eliminar | 1d | 2022-10-24 | 2022-10-25 |  | 105.88d | start no earlier than 2022-10-24 |
| 1314 | 1.3.2.3.1.8.4 | Editar | 1d | 2022-10-24 | 2022-10-25 |  | 105.88d | start no earlier than 2022-10-24 |
| 1315 | 1.3.2.3.1.8.5 | Configuración de Dashboard | 1d | 2022-10-25 A | 2022-10-26 | 1d | 33.62d |  |
| 1316 | 1.3.2.3.1.8.6 | Exportación de dashboard PDF | 1d | 2022-10-26 A | 2022-10-27 | 1d | 32.69d |  |
| 1317 | 1.3.2.3.1.8.7 | Exportación de dashboard Excel | 1d | 2022-10-27 A | 2022-10-28 | 1d | 31.75d |  |
| 1318 | 1.3.2.3.1.8.8 | Paginación Dashboard | 1d | 2022-10-28 A | 2022-10-31 | 1d | 30.81d |  |
| 1319 | 1.3.2.3.1.8.9 | Busqueda Dash board | 1d | 2022-10-31 A | 2022-11-01 | 1d | 29.88d |  |
| 1320 | 1.3.2.3.1.8.10 | Ventanas emergentes de validación | 1d | 2022-11-01 A | 2022-11-02 | 1d | 28.94d |  |
| 1321 | 1.3.2.3.1.8.11 | Carga de documento | 1d | 2022-11-02 A | 2022-11-03 | 1d | 28d |  |
| 1322 | 1.3.2.3.1.8.12 | Copiar información del mes anterior | 1d | 2022-11-03 A | 2022-11-04 | 1d | 27.06d |  |
| 1323 | 1.3.2.3.1.8.13 | Dashboard de Solicitud de Recursos sección Solicitudes Pendientes | 1d | 2022-11-04 A | 2022-11-07 | 1d | 26.12d |  |
| 1324 | 1.3.2.3.1.8.14 | Dashboard de Solicitud de Recursos sección Solicitudes en trámite | 1d | 2022-11-07 A | 2022-11-08 | 1d | 25.19d |  |
| 1325 | 1.3.2.3.1.8.15 | Track | 1d | 2022-11-08 A | 2022-11-09 | 1d | 24.25d |  |
| 1326 | 1.3.2.3.1.9 | **Dashboard Participaciones Federales** | 8.5d | 2022-10-21 A | 2022-11-03 | 8.5d | 28d |  |
| 1327 | 1.3.2.3.1.9.1 | Pantalla principal | 1d | 2022-10-21 A | 2022-10-24 | 1d | 35.5d |  |
| 1328 | 1.3.2.3.1.9.2 | Busqueda de Mes | 1d | 2022-10-24 A | 2022-10-25 | 1d | 34.56d |  |
| 1329 | 1.3.2.3.1.9.3 | Busqueda de Año | 1d | 2022-10-25 A | 2022-10-26 | 1d | 33.62d |  |
| 1330 | 1.3.2.3.1.9.4 | Busqueda general | 1d | 2022-10-26 A | 2022-10-27 | 1d | 32.69d |  |
| 1331 | 1.3.2.3.1.9.5 | Editar | 1d | 2022-10-27 A | 2022-10-28 | 1d | 31.75d |  |
| 1332 | 1.3.2.3.1.9.6 | Proceso de Autorizar | 1d | 2022-10-28 A | 2022-10-31 | 1d | 30.81d |  |
| 1333 | 1.3.2.3.1.9.7 | Proceso de Enviar | 1d | 2022-10-31 A | 2022-11-01 | 1d | 29.88d |  |
| 1334 | 1.3.2.3.1.9.8 | Track | 1d | 2022-11-01 A | 2022-11-02 | 1d | 28.94d |  |
| 1335 | 1.3.2.3.1.9.9 | Ventanas emergentes de validación | 1d | 2022-11-02 A | 2022-11-03 | 1d | 28d |  |

| ID | WBS | Task | Duration | Start | Finish | Remaining | Total slack |
| --- | --- | --- | --- | --- | --- | --- | --- |
| 1336 | 1.3.2.3.1.10 | **Dashboard ISN** | 7.56d | 2022-10-24 A | 2022-11-03 | 7.56d | 28d |
| 1337 | 1.3.2.3.1.10.1 | Pantalla principal | 1d | 2022-10-24 A | 2022-10-25 | 1d | 34.56d |
| 1338 | 1.3.2.3.1.10.2 | Busqueda de Mes | 1d | 2022-10-25 A | 2022-10-26 | 1d | 33.62d |
| 1339 | 1.3.2.3.1.10.3 | Busqueda de Año | 1d | 2022-10-26 A | 2022-10-27 | 1d | 32.69d |
| 1340 | 1.3.2.3.1.10.4 | Busqueda | 1d | 2022-10-27 A | 2022-10-28 | 1d | 31.75d |
| 1341 | 1.3.2.3.1.10.5 | Proceso de Autorización | 1d | 2022-10-28 A | 2022-10-31 | 1d | 30.81d |
| 1342 | 1.3.2.3.1.10.6 | Proceso de Envío | 1d | 2022-10-31 A | 2022-11-01 | 1d | 29.88d |
| 1343 | 1.3.2.3.1.10.7 | Track | 1d | 2022-11-01 A | 2022-11-02 | 1d | 28.94d |
| 1344 | 1.3.2.3.1.10.8 | Ventanas emergentes de validación | 1d | 2022-11-02 A | 2022-11-03 | 1d | 28d |
| 1345 | 1.3.2.3.1.11 | **Dashboard ICV** | 7.56d | 2022-10-25 A | 2022-11-04 | 7.56d | 27.06d |
| 1346 | 1.3.2.3.1.11.1 | Pantalla principal | 1d | 2022-10-25 A | 2022-10-26 | 1d | 33.62d |
| 1347 | 1.3.2.3.1.11.2 | Busqueda de Mes | 1d | 2022-10-26 A | 2022-10-27 | 1d | 32.69d |
| 1348 | 1.3.2.3.1.11.3 | Busqueda de Año | 1d | 2022-10-27 A | 2022-10-28 | 1d | 31.75d |
| 1349 | 1.3.2.3.1.11.4 | Busqueda | 1d | 2022-10-28 A | 2022-10-31 | 1d | 30.81d |
| 1350 | 1.3.2.3.1.11.5 | Proceso de Autorización | 1d | 2022-10-31 A | 2022-11-01 | 1d | 29.88d |
| 1351 | 1.3.2.3.1.11.6 | Proceso de Envío | 1d | 2022-11-01 A | 2022-11-02 | 1d | 28.94d |
| 1352 | 1.3.2.3.1.11.7 | Track | 1d | 2022-11-02 A | 2022-11-03 | 1d | 28d |
| 1353 | 1.3.2.3.1.11.8 | Ventanas emergentes de validación | 1d | 2022-11-03 A | 2022-11-04 | 1d | 27.06d |
| 1354 | 1.3.2.3.1.12 | **Dashboard Fondos FORTAMUN** | 7.56d | 2022-10-26 A | 2022-11-07 | 7.56d | 26.12d |
| 1355 | 1.3.2.3.1.12.1 | Pantalla principal | 1d | 2022-10-26 A | 2022-10-27 | 1d | 32.69d |
| 1356 | 1.3.2.3.1.12.2 | Busqueda de Mes | 1d | 2022-10-27 A | 2022-10-28 | 1d | 31.75d |
| 1357 | 1.3.2.3.1.12.3 | Busqueda de Año | 1d | 2022-10-28 A | 2022-10-31 | 1d | 30.81d |
| 1358 | 1.3.2.3.1.12.4 | Busqueda | 1d | 2022-10-31 A | 2022-11-01 | 1d | 29.88d |
| 1359 | 1.3.2.3.1.12.5 | Proceso de Autorización | 1d | 2022-11-01 A | 2022-11-02 | 1d | 28.94d |
| 1360 | 1.3.2.3.1.12.6 | Proceso de Envío | 1d | 2022-11-02 A | 2022-11-03 | 1d | 28d |
| 1361 | 1.3.2.3.1.12.7 | Track | 1d | 2022-11-03 A | 2022-11-04 | 1d | 27.06d |
| 1362 | 1.3.2.3.1.12.8 | Ventanas emergentes de validación | 1d | 2022-11-04 A | 2022-11-07 | 1d | 26.12d |

| ID | WBS | Task | Duration | Start | Finish | Remaining | Total slack |
| --- | --- | --- | --- | --- | --- | --- | --- |
| 1363 | 1.3.2.3.1.13 | **Dashboard Fondos FISM** | 7.56d | 2022-10-27 A | 2022-11-08 | 7.56d | 25.19d |
| 1364 | 1.3.2.3.1.13.1 | Pantalla principal | 1d | 2022-10-27 A | 2022-10-28 | 1d | 31.75d |
| 1365 | 1.3.2.3.1.13.2 | Busqueda de Mes | 1d | 2022-10-28 A | 2022-10-31 | 1d | 30.81d |
| 1366 | 1.3.2.3.1.13.3 | Busqueda de Año | 1d | 2022-10-31 A | 2022-11-01 | 1d | 29.88d |
| 1367 | 1.3.2.3.1.13.4 | Busqueda | 1d | 2022-11-01 A | 2022-11-02 | 1d | 28.94d |
| 1368 | 1.3.2.3.1.13.5 | Proceso de Autorización | 1d | 2022-11-02 A | 2022-11-03 | 1d | 28d |
| 1369 | 1.3.2.3.1.13.6 | Proceso de Envío | 1d | 2022-11-03 A | 2022-11-04 | 1d | 27.06d |
| 1370 | 1.3.2.3.1.13.7 | Track | 1d | 2022-11-04 A | 2022-11-07 | 1d | 26.12d |
| 1371 | 1.3.2.3.1.13.8 | Ventanas emergentes de validación | 1d | 2022-11-05 A | 2022-11-08 | 1d | 25.19d |
| 1372 | 1.3.2.3.1.14 | **Administración de Fondo ultra crecimiento Zona metropolitana y no Metropolitana** | 12.25d | 2022-10-28 A | 2022-11-16 | 12.25d | 19.56d |
| 1373 | 1.3.2.3.1.14.1 | Pantalla principal | 1d | 2022-10-28 A | 2022-10-31 | 1d | 30.81d |
| 1374 | 1.3.2.3.1.14.2 | Filtro mes | 1d | 2022-10-31 A | 2022-11-01 | 1d | 29.88d |
| 1375 | 1.3.2.3.1.14.3 | Filtro año | 1d | 2022-11-01 A | 2022-11-02 | 1d | 28.94d |
| 1376 | 1.3.2.3.1.14.4 | Filtro busqueda | 1d | 2022-11-02 A | 2022-11-03 | 1d | 28d |
| 1377 | 1.3.2.3.1.14.5 | Configuración de Dashboard | 1d | 2022-11-03 A | 2022-11-04 | 1d | 27.06d |
| 1378 | 1.3.2.3.1.14.6 | Exportación de dashboard PDF | 1d | 2022-11-04 A | 2022-11-07 | 1d | 26.12d |
| 1379 | 1.3.2.3.1.14.7 | Exportación de dashboard Excel | 1d | 2022-11-05 A | 2022-11-08 | 1d | 25.19d |
| 1380 | 1.3.2.3.1.14.8 | Paginación Dashboard | 1d | 2022-11-07 A | 2022-11-08 | 1d | 25.19d |
| 1381 | 1.3.2.3.1.14.9 | Busqueda Dash board | 1d | 2022-11-08 A | 2022-11-09 | 1d | 24.25d |
| 1382 | 1.3.2.3.1.14.10 | Ventanas emergentes de Autorizar por municipio | 1d | 2022-11-09 A | 2022-11-10 | 1d | 23.31d |
| 1383 | 1.3.2.3.1.14.11 | Ventanas emergentes de Track por municipio | 1d | 2022-11-10 A | 2022-11-11 | 1d | 22.38d |
| 1384 | 1.3.2.3.1.14.12 | Ventanas emergentes de detalles por municipio | 1d | 2022-11-11 A | 2022-11-14 | 1d | 21.44d |
| 1385 | 1.3.2.3.1.14.13 | Ventanas emergentes de Adjuntar oficio por municipio | 1d | 2022-11-14 A | 2022-11-15 | 1d | 20.5d |
| 1386 | 1.3.2.3.1.14.14 | Ventana repositorio de oficios por municipio | 1d | 2022-11-15 A | 2022-11-16 | 1d | 19.56d |
| 1387 | 1.3.2.3.1.14.15 | boton borrar oficio | 1d | 2022-11-15 A | 2022-11-16 | 1d | 19.56d |
| 1388 | 1.3.2.3.1.14.16 | boton configurar oficio | 1d | 2022-11-15 A | 2022-11-16 | 1d | 19.56d |

| ID | WBS | Task | Duration | Start | Finish | Remaining | Total slack |
| --- | --- | --- | --- | --- | --- | --- | --- |
| 1389 | 1.3.2.3.1.15 | **Administración de Fondo descentralizado Zona Metropolitana y no Metropolitana** | 15.06d | 2022-10-11 A | 2022-11-02 | 15.06d | 28.94d |
| 1390 | 1.3.2.3.1.15.1 | Pantalla principal | 1d | 2022-10-11 A | 2022-10-12 | 1d | 43d |
| 1391 | 1.3.2.3.1.15.2 | Filtro mes | 1d | 2022-10-12 A | 2022-10-13 | 1d | 42.06d |
| 1392 | 1.3.2.3.1.15.3 | Filtro año | 1d | 2022-10-13 A | 2022-10-14 | 1d | 41.12d |
| 1393 | 1.3.2.3.1.15.4 | Filtro busqueda | 1d | 2022-10-14 A | 2022-10-17 | 1d | 40.19d |
| 1394 | 1.3.2.3.1.15.5 | Configuración de Dashboard | 1d | 2022-10-17 A | 2022-10-18 | 1d | 39.25d |
| 1395 | 1.3.2.3.1.15.6 | Exportación de dashboard PDF | 1d | 2022-10-18 A | 2022-10-19 | 1d | 38.31d |
| 1396 | 1.3.2.3.1.15.7 | Exportación de dashboard Excel | 1d | 2022-10-19 A | 2022-10-20 | 1d | 37.38d |
| 1397 | 1.3.2.3.1.15.8 | Paginación Dashboard | 1d | 2022-10-20 A | 2022-10-21 | 1d | 36.44d |
| 1398 | 1.3.2.3.1.15.9 | Busqueda Dash board | 1d | 2022-10-21 A | 2022-10-24 | 1d | 35.5d |
| 1399 | 1.3.2.3.1.15.10 | Ventanas emergentes de Autorizar por municipio | 1d | 2022-10-24 A | 2022-10-25 | 1d | 34.56d |
| 1400 | 1.3.2.3.1.15.11 | Ventanas emergentes de Track por municipio | 1d | 2022-10-25 A | 2022-10-26 | 1d | 33.62d |
| 1401 | 1.3.2.3.1.15.12 | Ventanas emergentes de detalles por municipio | 1d | 2022-10-26 A | 2022-10-27 | 1d | 32.69d |
| 1402 | 1.3.2.3.1.15.13 | Ventanas emergentes de Adjuntar oficio por municipio | 1d | 2022-10-27 A | 2022-10-28 | 1d | 31.75d |
| 1403 | 1.3.2.3.1.15.14 | Ventana repositorio de oficios por municipio | 1d | 2022-10-28 A | 2022-10-31 | 1d | 30.81d |
| 1404 | 1.3.2.3.1.15.15 | boton borrar oficio | 1d | 2022-10-31 A | 2022-11-01 | 1d | 29.88d |
| 1405 | 1.3.2.3.1.15.16 | boton configurar oficio | 1d | 2022-11-01 A | 2022-11-02 | 1d | 28.94d |
| 1406 | 1.3.2.3.1.16 | **Administración de Fondo de seguridad para municipios Metropolitanos y no Metropolitanos** | 11.31d | 2022-10-12 A | 2022-10-28 | 11.31d | 31.75d |
| 1407 | 1.3.2.3.1.16.1 | Pantalla principal | 1d | 2022-10-12 A | 2022-10-13 | 1d | 42.06d |
| 1408 | 1.3.2.3.1.16.2 | Filtro mes | 1d | 2022-10-13 A | 2022-10-14 | 1d | 41.12d |
| 1409 | 1.3.2.3.1.16.3 | Filtro año | 1d | 2022-10-14 A | 2022-10-17 | 1d | 40.19d |
| 1410 | 1.3.2.3.1.16.4 | Filtro busqueda | 1d | 2022-10-17 A | 2022-10-18 | 1d | 39.25d |
| 1411 | 1.3.2.3.1.16.5 | Configuración de Dashboard | 1d | 2022-10-18 A | 2022-10-19 | 1d | 38.31d |
| 1412 | 1.3.2.3.1.16.6 | Exportación de dashboard PDF | 1d | 2022-10-19 A | 2022-10-20 | 1d | 37.38d |
| 1413 | 1.3.2.3.1.16.7 | Exportación de dashboard Excel | 1d | 2022-10-20 A | 2022-10-21 | 1d | 36.44d |
| 1414 | 1.3.2.3.1.16.8 | Paginación Dashboard | 1d | 2022-10-21 A | 2022-10-24 | 1d | 35.5d |
| 1415 | 1.3.2.3.1.16.9 | Busqueda Dash board | 1d | 2022-10-24 A | 2022-10-25 | 1d | 34.56d |
| 1416 | 1.3.2.3.1.16.10 | Ventanas emergentes de Autorizar | 1d | 2022-10-25 A | 2022-10-26 | 1d | 33.62d |
| 1417 | 1.3.2.3.1.16.11 | Ventanas emergentes de Enviar | 1d | 2022-10-26 A | 2022-10-27 | 1d | 32.69d |
| 1418 | 1.3.2.3.1.16.12 | Ventanas emergentes de Track | 1d | 2022-10-27 A | 2022-10-28 | 1d | 31.75d |

| ID | WBS | Task | Duration | Start | Finish | Predecessors | Complete | Remaining | Total slack |
| --- | --- | --- | --- | --- | --- | --- | --- | --- | --- |
| 1419 | 1.3.2.3.1.17 | **Administración de Fondo de desarrollo municipal Metropolitanos y no Metropolitanos** | 15.06d | 2022-10-13 A | 2022-11-04 |  |  | 15.06d | 27.06d |
| 1420 | 1.3.2.3.1.17.1 | Pantalla principal | 1d | 2022-10-13 A | 2022-10-14 |  |  | 1d | 41.12d |
| 1421 | 1.3.2.3.1.17.2 | Filtro mes | 1d | 2022-10-14 A | 2022-10-17 |  |  | 1d | 40.19d |
| 1422 | 1.3.2.3.1.17.3 | Filtro año | 1d | 2022-10-17 A | 2022-10-18 |  |  | 1d | 39.25d |
| 1423 | 1.3.2.3.1.17.4 | Filtro busqueda | 1d | 2022-10-18 A | 2022-10-19 |  |  | 1d | 38.31d |
| 1424 | 1.3.2.3.1.17.5 | Configuración de Dashboard | 1d | 2022-10-19 A | 2022-10-20 |  |  | 1d | 37.38d |
| 1425 | 1.3.2.3.1.17.6 | Exportación de dashboard PDF | 1d | 2022-10-20 A | 2022-10-21 |  |  | 1d | 36.44d |
| 1426 | 1.3.2.3.1.17.7 | Exportación de dashboard Excel | 1d | 2022-10-21 A | 2022-10-24 |  |  | 1d | 35.5d |
| 1427 | 1.3.2.3.1.17.8 | Paginación Dashboard | 1d | 2022-10-24 A | 2022-10-25 |  |  | 1d | 34.56d |
| 1428 | 1.3.2.3.1.17.9 | Busqueda Dash board | 1d | 2022-10-25 A | 2022-10-26 |  |  | 1d | 33.62d |
| 1429 | 1.3.2.3.1.17.10 | Ventanas emergentes de Autorizar | 1d | 2022-10-26 A | 2022-10-27 |  |  | 1d | 32.69d |
| 1430 | 1.3.2.3.1.17.11 | Ventanas emergentes de Enviar | 1d | 2022-10-27 A | 2022-10-28 |  |  | 1d | 31.75d |
| 1431 | 1.3.2.3.1.17.12 | Ventanas emergentes de Track | 1d | 2022-10-28 A | 2022-10-31 |  |  | 1d | 30.81d |
| 1432 | 1.3.2.3.1.17.13 | Módulo contacto con municipios | 1d | 2022-10-31 A | 2022-11-01 |  |  | 1d | 29.88d |
| 1433 | 1.3.2.3.1.17.14 | Generador de reportes | 1d | 2022-11-01 A | 2022-11-02 |  |  | 1d | 28.94d |
| 1434 | 1.3.2.3.1.17.15 | Generador de Estadísticas | 1d | 2022-11-02 A | 2022-11-03 |  |  | 1d | 28d |
| 1435 | 1.3.2.3.1.17.16 | Dashboard Calendario | 1d | 2022-11-03 A | 2022-11-04 |  |  | 1d | 27.06d |
| 1436 | 1.3.2.4 | **sprint 7** | 4.81d | 2022-11-15 A | 2022-11-23 | 459 | 30% | 3.35d | 15.75d |
| 1437 | 1.3.2.4.1 | **Módulo DCCP** | 4.75d | 2022-11-15 A | 2022-11-23 |  | 30% | 3.3d |  |
| 1438 | 1.3.2.4.1.1 | **Dashboard Perfil DCCP** | 4.75d | 2022-11-15 A | 2022-11-23 |  | 30% | 3.3d |  |
| 1439 | 1.3.2.4.1.1.1 | Bloqueo de Sesión | 1d | 2022-11-15 A | 2022-11-16 |  |  | 1d | 19.56d |
| 1440 | 1.3.2.4.1.1.2 | Perfil | 1d | 2022-11-16 A | 2022-11-17 |  |  | 1d | 18.62d |
| 1441 | 1.3.2.4.1.1.3 | Pop up Notificaciones | 1d | 2022-11-17 A | 2022-11-18 |  |  | 1d | 17.69d |
| 1442 | 1.3.2.4.1.1.4 | Contador de Notificaciones (Icono campanita) | 2.19d | 2022-11-18 A | 2022-11-23 A |  | 100% |  |  |
| 1443 | 1.3.2.4.1.1.5 | Bandeja entrada de Notificaciones | 1d | 2022-11-21 A | 2022-11-23 |  |  | 1d | 15.81d |
| 1444 | 1.3.2.4.1.1.6 | Configuración de Consulta | 1d | 2022-11-22 A | 2022-11-23 |  |  | 1d | 15.81d |

| ID | WBS | Task | Duration | Start | Finish | Predecessors | Complete | Remaining | Total slack |
| --- | --- | --- | --- | --- | --- | --- | --- | --- | --- |
| 1445 | 1.3.2.5 | **sprint 8** | 4.81d | 2022-11-15 A | 2022-11-23 | 459 | 27% | 3.53d | 15.75d |
| 1446 | 1.3.2.5.1 | **Módulo DAF** | 4.81d | 2022-11-15 A | 2022-11-23 |  | 27% | 3.53d | 15.75d |
| 1447 | 1.3.2.5.1.1 | **Dashboard Perfil DAF** | 4.81d | 2022-11-15 A | 2022-11-23 |  | 27% | 3.53d | 15.75d |
| 1448 | 1.3.2.5.1.1.1 | Pantalla Perfil | 1d | 2022-11-16 A | 2022-11-17 |  |  | 1d | 18.56d |
| 1449 | 1.3.2.5.1.1.2 | Pop up Notificaciones | 1d | 2022-11-17 A | 2022-11-18 |  |  | 1d | 17.69d |
| 1450 | 1.3.2.5.1.1.3 | Contador de Notificaciones (Icono campanita) | 2.19d | 2022-11-18 A | 2022-11-23 A |  | 100% |  |  |
| 1451 | 1.3.2.5.1.1.4 | Bandeja entrada de Notificaciones | 1d | 2022-11-19 A | 2022-11-23 |  |  | 1d | 15.81d |
| 1452 | 1.3.2.5.1.1.5 | Carga de Speis | 1d | 2022-11-15 A | 2022-11-17 |  |  | 1d | 18.56d |
| 1453 | 1.3.2.5.1.1.6 | Generación de Estadísticas | 1d | 2022-11-15 A | 2022-11-17 |  |  | 1d | 18.56d |
| 1454 | 1.3.2.5.1.1.7 | Generacion de graficas | 1d | 2022-11-15 A | 2022-11-17 |  |  | 1d | 18.56d |
| 1455 | 1.3.2.6 | **sprint 9** | 5.69d | 2022-11-18 A | 2022-11-29 | 459 | 17% | 4.69d | 12.06d |
| 1456 | 1.3.2.6.1 | **Módulo DPCP** | 5.69d | 2022-11-18 A | 2022-11-29 |  | 17% | 4.69d | 12.06d |
| 1457 | 1.3.2.6.1.1 | **Dashboard Perfil DPCP** | 5.69d | 2022-11-18 A | 2022-11-29 |  | 17% | 4.69d | 12.06d |
| 1458 | 1.3.2.6.1.1.1 | Pantalla Perfil | 1d | 2022-11-18 A | 2022-11-22 |  |  | 1d | 16.75d |
| 1459 | 1.3.2.6.1.1.2 | Pop up Notificaciones | 1.19d | 2022-11-21 A | 2022-11-23 |  |  | 1.19d | 15.62d |
| 1460 | 1.3.2.6.1.1.3 | Contador de Notificaciones (Icono campanita) | 1.31d | 2022-11-22 A | 2022-11-24 A |  | 100% |  |  |
| 1461 | 1.3.2.6.1.1.4 | Bandeja entrada de Notificaciones | 1d | 2022-11-23 A | 2022-11-24 |  |  | 1d | 14.88d |
| 1462 | 1.3.2.6.1.1.5 | Asignación de Presupuesto | 1d | 2022-11-24 A | 2022-11-25 |  |  | 1d | 13.94d |
| 1463 | 1.3.2.6.1.1.6 | Generación de Estadísticas | 1d | 2022-11-25 A | 2022-11-28 |  |  | 1d | 13d |
| 1464 | 1.3.2.6.1.1.7 | Generación de graficas | 1d | 2022-11-28 A | 2022-11-29 |  |  | 1d | 12.06d |
| 1465 | 1.3.2.7 | **sprint 10** | 19.75d | 2022-11-15 A | 2022-12-15 | 459 | 5% | 18.81d | 0.81d |
| 1466 | 1.3.2.7.1 | **Módulo Municipios** | 19.75d | 2022-11-15 A | 2022-12-15 |  | 5% | 18.81d | 0.81d |
| 1467 | 1.3.2.7.1.1 | **Base** | 3.81d | 2022-11-18 A | 2022-11-25 |  | 54% | 1.74d | 13.94d |
| 1468 | 1.3.2.7.1.1.1 | Buzon | 1d | 2022-11-18 A | 2022-11-22 |  |  | 1d | 16.75d |
| 1469 | 1.3.2.7.1.1.2 | Login | 2.19d | 2022-11-21 A | 2022-11-23 A |  | 100% |  |  |
| 1470 | 1.3.2.7.1.1.3 | Logout | 1.38d | 2022-11-22 A | 2022-11-23 A |  | 100% |  |  |
| 1471 | 1.3.2.7.1.1.4 | Bloqueo de Sesión | 1d | 2022-11-23 A | 2022-11-24 |  |  | 1d | 14.88d |
| 1472 | 1.3.2.7.1.1.5 | Perfil | 1d | 2022-11-24 A | 2022-11-25 |  |  | 1d | 13.94d |

| ID | WBS | Task | Duration | Start | Finish | Remaining | Total slack |
| --- | --- | --- | --- | --- | --- | --- | --- |
| 1473 | 1.3.2.7.1.2 | **Dashboard Inicio** | 4.75d | 2022-11-28 A | 2022-12-05 | 4.75d | 8.31d |
| 1474 | 1.3.2.7.1.2.1 | Pantalla Principal | 1d | 2022-11-28 A | 2022-11-29 | 1d | 12.06d |
| 1475 | 1.3.2.7.1.2.2 | Configuración de Dashboard | 1d | 2022-11-29 A | 2022-11-30 | 1d | 11.12d |
| 1476 | 1.3.2.7.1.2.3 | Ventanas emergentes de validación | 1d | 2022-11-30 A | 2022-12-01 | 1d | 10.19d |
| 1477 | 1.3.2.7.1.2.4 | Ruleta imágenes | 1d | 2022-12-01 A | 2022-12-02 | 1d | 9.25d |
| 1478 | 1.3.2.7.1.2.5 | Mensaje de Bienvenida | 1d | 2022-12-02 A | 2022-12-05 | 1d | 8.31d |
| 1479 | 1.3.2.7.1.3 | **Mis Cuentas** | 19.75d | 2022-11-15 A | 2022-12-15 | 19.75d | 0.81d |
| 1480 | 1.3.2.7.1.3.1 | Pantalla Principal | 1d | 2022-12-06 A | 2022-12-07 | 1d | 6.44d |
| 1481 | 1.3.2.7.1.3.2 | Agregar | 1d | 2022-12-07 A | 2022-12-08 | 1d | 5.5d |
| 1482 | 1.3.2.7.1.3.3 | Editar | 1d | 2022-12-08 A | 2022-12-09 | 1d | 4.56d |
| 1483 | 1.3.2.7.1.3.4 | Eliminar | 1d | 2022-12-09 A | 2022-12-12 | 1d | 3.62d |
| 1484 | 1.3.2.7.1.3.5 | Configuración de Dashboard | 1d | 2022-12-12 A | 2022-12-13 | 1d | 2.69d |
| 1485 | 1.3.2.7.1.3.6 | Exportación de dashboard PDF | 1d | 2022-12-13 A | 2022-12-14 | 1d | 1.75d |
| 1486 | 1.3.2.7.1.3.7 | Exportación de dashboard Excel | 1d | 2022-12-14 A | 2022-12-15 | 1d | 0.81d |
| 1487 | 1.3.2.7.1.3.8 | Paginación Dashboard | 1d | 2022-11-15 A | 2022-11-17 | 1d | 18.56d |
| 1488 | 1.3.2.7.1.3.9 | Busqueda Dash board | 1d | 2022-11-16 A | 2022-11-17 | 1d | 18.56d |
| 1489 | 1.3.2.7.1.3.10 | Ventanas emergentes de validación | 1d | 2022-11-17 A | 2022-11-18 | 1d | 17.69d |
| 1490 | 1.3.2.7.1.4 | **Solicitud de Recursos** | 9.44d | 2022-11-21 A | 2022-12-06 | 9.44d | 7.38d |
| 1491 | 1.3.2.7.1.4.1 | Pantalla Principal | 1d | 2022-11-21 A | 2022-11-23 | 1d | 15.81d |
| 1492 | 1.3.2.7.1.4.2 | Agregar | 1d | 2022-11-22 A | 2022-11-23 | 1d | 15.81d |
| 1493 | 1.3.2.7.1.4.3 | Editar | 1d | 2022-11-23 A | 2022-11-24 | 1d | 14.88d |
| 1494 | 1.3.2.7.1.4.4 | Eliminar | 1d | 2022-11-24 A | 2022-11-25 | 1d | 13.94d |
| 1495 | 1.3.2.7.1.4.5 | Configuración de Dashboard | 1d | 2022-11-25 A | 2022-11-28 | 1d | 13d |
| 1496 | 1.3.2.7.1.4.6 | Exportación de dashboard PDF | 1d | 2022-11-28 A | 2022-11-29 | 1d | 12.06d |
| 1497 | 1.3.2.7.1.4.7 | Exportación de dashboard Excel | 1d | 2022-11-29 A | 2022-11-30 | 1d | 11.12d |
| 1498 | 1.3.2.7.1.4.8 | Paginación Dashboard | 1d | 2022-11-30 A | 2022-12-01 | 1d | 10.19d |
| 1499 | 1.3.2.7.1.4.9 | Busqueda Dash board | 1d | 2022-12-01 A | 2022-12-02 | 1d | 9.25d |
| 1500 | 1.3.2.7.1.4.10 | Ventanas emergentes de validación | 1d | 2022-12-02 A | 2022-12-05 | 1d | 8.31d |
| 1501 | 1.3.2.7.1.4.11 | Boton Detalles | 1d | 2022-12-05 A | 2022-12-06 | 1d | 7.38d |

| ID | WBS | Task | Duration | Start | Finish | Remaining | Total slack |
| --- | --- | --- | --- | --- | --- | --- | --- |
| 1502 | 1.3.2.7.1.5 | **Dashboard Ayuda** | 1.94d | 2022-12-07 A | 2022-12-09 | 1.94d | 4.56d |
| 1503 | 1.3.2.7.1.5.1 | Pantalla principal | 1d | 2022-12-07 A | 2022-12-08 | 1d | 5.5d |
| 1504 | 1.3.2.7.1.5.2 | Configuracion de Enlaces | 1d | 2022-12-08 A | 2022-12-09 | 1d | 4.56d |
| 1505 | 1.3.2.7.1.6 | **Recepcion de Recursos Participaciones Federales** | 19.75d | 2022-11-15 A | 2022-12-15 | 19.75d | 0.81d |
| 1506 | 1.3.2.7.1.6.1 | Pantalla Principal | 1d | 2022-12-12 A | 2022-12-13 | 1d | 2.69d |
| 1507 | 1.3.2.7.1.6.2 | Agregar | 1d | 2022-12-13 A | 2022-12-14 | 1d | 1.75d |
| 1508 | 1.3.2.7.1.6.3 | Editar | 1d | 2022-12-14 A | 2022-12-15 | 1d | 0.81d |
| 1509 | 1.3.2.7.1.6.4 | Eliminar | 1d | 2022-11-15 A | 2022-11-17 | 1d | 18.56d |
| 1510 | 1.3.2.7.1.6.5 | Configuración de Dashboard | 1d | 2022-11-16 A | 2022-11-17 | 1d | 18.56d |
| 1511 | 1.3.2.7.1.6.6 | Exportación de dashboard PDF | 1d | 2022-11-17 A | 2022-11-18 | 1d | 17.69d |
| 1512 | 1.3.2.7.1.6.7 | Exportación de dashboard Excel | 1d | 2022-11-18 A | 2022-11-22 | 1d | 16.75d |
| 1513 | 1.3.2.7.1.6.8 | Paginación Dashboard | 1d | 2022-11-21 A | 2022-11-23 | 1d | 15.81d |
| 1514 | 1.3.2.7.1.6.9 | Busqueda Dash board | 1d | 2022-11-22 A | 2022-11-23 | 1d | 15.81d |
| 1515 | 1.3.2.7.1.6.10 | Ventanas emergentes de validación | 1d | 2022-11-23 A | 2022-11-24 | 1d | 14.88d |
| 1516 | 1.3.2.7.1.7 | **Recepcion de Recursos Participaciones Estatales** | 9.44d | 2022-11-25 A | 2022-12-09 | 9.44d | 4.56d |
| 1517 | 1.3.2.7.1.7.1 | Pantalla Principal | 1d | 2022-11-25 A | 2022-11-28 | 1d | 13d |
| 1518 | 1.3.2.7.1.7.2 | Agregar | 1d | 2022-11-28 A | 2022-11-29 | 1d | 12.06d |
| 1519 | 1.3.2.7.1.7.3 | Editar | 1d | 2022-11-29 A | 2022-11-30 | 1d | 11.12d |
| 1520 | 1.3.2.7.1.7.4 | Eliminar | 1d | 2022-11-30 A | 2022-12-01 | 1d | 10.19d |
| 1521 | 1.3.2.7.1.7.5 | Configuración de Dashboard | 1d | 2022-12-01 A | 2022-12-02 | 1d | 9.25d |
| 1522 | 1.3.2.7.1.7.6 | Exportación de dashboard PDF | 1d | 2022-12-02 A | 2022-12-05 | 1d | 8.31d |
| 1523 | 1.3.2.7.1.7.7 | Exportación de dashboard Excel | 1d | 2022-12-05 A | 2022-12-06 | 1d | 7.38d |
| 1524 | 1.3.2.7.1.7.8 | Paginación Dashboard | 1d | 2022-12-06 A | 2022-12-07 | 1d | 6.44d |
| 1525 | 1.3.2.7.1.7.9 | Busqueda Dash board | 1d | 2022-12-07 A | 2022-12-08 | 1d | 5.5d |
| 1526 | 1.3.2.7.1.7.10 | Ventanas emergentes de validación | 1d | 2022-12-08 A | 2022-12-09 | 1d | 4.56d |

| ID | WBS | Task | Duration | Start | Finish | Predecessors | Complete | Remaining | Total slack |
| --- | --- | --- | --- | --- | --- | --- | --- | --- | --- |
| 1527 | 1.3.2.7.1.8 | **Recepcion de Recursos Aportaciones Federales** | 19.75d | 2022-11-15 A | 2022-12-15 |  |  | 19.75d | 0.81d |
| 1528 | 1.3.2.7.1.8.1 | Pantalla Principal | 1d | 2022-12-12 A | 2022-12-13 |  |  | 1d | 2.69d |
| 1529 | 1.3.2.7.1.8.2 | Agregar | 1d | 2022-12-13 A | 2022-12-14 |  |  | 1d | 1.75d |
| 1530 | 1.3.2.7.1.8.3 | Editar | 1d | 2022-12-14 A | 2022-12-15 |  |  | 1d | 0.81d |
| 1531 | 1.3.2.7.1.8.4 | Eliminar | 1d | 2022-11-15 A | 2022-11-17 |  |  | 1d | 18.56d |
| 1532 | 1.3.2.7.1.8.5 | Configuración de Dashboard | 1d | 2022-11-16 A | 2022-11-17 |  |  | 1d | 18.56d |
| 1533 | 1.3.2.7.1.8.6 | Exportación de dashboard PDF | 1d | 2022-11-17 A | 2022-11-18 |  |  | 1d | 17.69d |
| 1534 | 1.3.2.7.1.8.7 | Exportación de dashboard Excel | 1d | 2022-11-18 A | 2022-11-22 |  |  | 1d | 16.75d |
| 1535 | 1.3.2.7.1.8.8 | Paginación Dashboard | 1d | 2022-11-21 A | 2022-11-23 |  |  | 1d | 15.81d |
| 1536 | 1.3.2.7.1.8.9 | Busqueda Dash board | 1d | 2022-11-22 A | 2022-11-23 |  |  | 1d | 15.81d |
| 1537 | 1.3.2.7.1.8.10 | Ventanas emergentes de validación | 1d | 2022-11-23 A | 2022-11-24 |  |  | 1d | 14.88d |
| 1538 | 1.3.2.7.1.9 | **Recepcion de Recursos Aportaciones Estatales** | 8.5d | 2022-11-25 A | 2022-12-08 |  |  | 8.5d | 5.5d |
| 1539 | 1.3.2.7.1.9.1 | Pantalla Principal | 1d | 2022-11-25 A | 2022-11-28 |  |  | 1d | 13d |
| 1540 | 1.3.2.7.1.9.2 | Agregar | 1d | 2022-11-25 A | 2022-11-28 |  |  | 1d | 13d |
| 1541 | 1.3.2.7.1.9.3 | Editar | 1d | 2022-11-28 A | 2022-11-29 |  |  | 1d | 12.06d |
| 1542 | 1.3.2.7.1.9.4 | Eliminar | 1d | 2022-11-29 A | 2022-11-30 |  |  | 1d | 11.12d |
| 1543 | 1.3.2.7.1.9.5 | Configuración de Dashboard | 1d | 2022-11-30 A | 2022-12-01 |  |  | 1d | 10.19d |
| 1544 | 1.3.2.7.1.9.6 | Exportación de dashboard PDF | 1d | 2022-12-01 A | 2022-12-02 |  |  | 1d | 9.25d |
| 1545 | 1.3.2.7.1.9.7 | Exportación de dashboard Excel | 1d | 2022-12-02 A | 2022-12-05 |  |  | 1d | 8.31d |
| 1546 | 1.3.2.7.1.9.8 | Paginación Dashboard | 1d | 2022-12-05 A | 2022-12-06 |  |  | 1d | 7.38d |
| 1547 | 1.3.2.7.1.9.9 | Busqueda Dash board | 1d | 2022-12-06 A | 2022-12-07 |  |  | 1d | 6.44d |
| 1548 | 1.3.2.7.1.9.10 | Ventanas emergentes de validación | 1d | 2022-12-07 A | 2022-12-08 |  |  | 1d | 5.5d |
| 1549 | 1.3.2.8 | **sprint 11** | 19.75d | 2022-11-15 A | 2022-12-15 | 459 | 3% | 19.1d | 0.81d |
| 1550 | 1.3.2.8.1 | **Módulo OPD** | 19.75d | 2022-11-15 A | 2022-12-15 |  | 3% | 19.1d | 0.81d |
| 1551 | 1.3.2.8.1.1 | **Base** | 5.19d | 2022-11-15 A | 2022-11-23 |  | 42% | 3d | 15.37d |
| 1552 | 1.3.2.8.1.1.1 | Perfil | 1d | 2022-11-15 A | 2022-11-17 |  |  | 1d | 18.56d |
| 1553 | 1.3.2.8.1.1.2 | Pop up Notificaciones | 1d | 2022-11-16 A | 2022-11-17 |  |  | 1d | 18.56d |
| 1554 | 1.3.2.8.1.1.3 | Contador de Notificaciones (Icono campanita) | 2.19d | 2022-11-17 A | 2022-11-23 A |  | 100% |  |  |
| 1555 | 1.3.2.8.1.1.4 | Bandeja entrada de Notificaciones | 1d | 2022-11-18 A | 2022-11-22 |  |  | 1d | 16.75d |

| ID | WBS | Task | Duration | Start | Finish | Remaining | Total slack |
| --- | --- | --- | --- | --- | --- | --- | --- |
| 1556 | 1.3.2.8.1.2 | **Dashboard mis cuentas** | 9.44d | 2022-11-22 A | 2022-12-06 | 9.44d | 7.38d |
| 1557 | 1.3.2.8.1.2.1 | Pantalla Principal | 1d | 2022-11-22 A | 2022-11-23 | 1d | 15.81d |
| 1558 | 1.3.2.8.1.2.2 | Configuración de Dashboard | 1d | 2022-11-23 A | 2022-11-24 | 1d | 14.88d |
| 1559 | 1.3.2.8.1.2.3 | Exportación de dashboard PDF | 1d | 2022-11-24 A | 2022-11-25 | 1d | 13.94d |
| 1560 | 1.3.2.8.1.2.4 | Exportación de dashboard Excel | 1d | 2022-11-25 A | 2022-11-28 | 1d | 13d |
| 1561 | 1.3.2.8.1.2.5 | Paginación Dashboard | 1d | 2022-11-28 A | 2022-11-29 | 1d | 12.06d |
| 1562 | 1.3.2.8.1.2.6 | Busqueda Dashboard | 1d | 2022-11-29 A | 2022-11-30 | 1d | 11.12d |
| 1563 | 1.3.2.8.1.2.7 | Agregar | 1d | 2022-11-30 A | 2022-12-01 | 1d | 10.19d |
| 1564 | 1.3.2.8.1.2.8 | Editar | 1d | 2022-12-01 A | 2022-12-02 | 1d | 9.25d |
| 1565 | 1.3.2.8.1.2.9 | Eliminar | 1d | 2022-12-02 A | 2022-12-05 | 1d | 8.31d |
| 1566 | 1.3.2.8.1.2.10 | Ventanas emergentes de validación | 1d | 2022-12-05 A | 2022-12-06 | 1d | 7.38d |
| 1567 | 1.3.2.8.1.3 | **Dashboard Facturación** | 19.75d | 2022-11-15 A | 2022-12-15 | 19.75d | 0.81d |
| 1568 | 1.3.2.8.1.3.1 | Pantalla Principal | 1d | 2022-12-06 A | 2022-12-07 | 1d | 6.44d |
| 1569 | 1.3.2.8.1.3.2 | Configuración de Dashboard | 1d | 2022-12-07 A | 2022-12-08 | 1d | 5.5d |
| 1570 | 1.3.2.8.1.3.3 | Exportación de dashboard PDF | 1d | 2022-12-08 A | 2022-12-09 | 1d | 4.56d |
| 1571 | 1.3.2.8.1.3.4 | Exportación de dashboard Excel | 1d | 2022-12-09 A | 2022-12-12 | 1d | 3.62d |
| 1572 | 1.3.2.8.1.3.5 | Paginación Dashboard | 1d | 2022-12-12 A | 2022-12-13 | 1d | 2.69d |
| 1573 | 1.3.2.8.1.3.6 | Busqueda Dashboard | 1d | 2022-12-13 A | 2022-12-14 | 1d | 1.75d |
| 1574 | 1.3.2.8.1.3.7 | Ventanas de visualización de detalle | 1d | 2022-12-14 A | 2022-12-15 | 1d | 0.81d |
| 1575 | 1.3.2.8.1.3.8 | Busqueda por Año | 1d | 2022-11-15 A | 2022-11-17 | 1d | 18.56d |
| 1576 | 1.3.2.8.1.4 | **Dashboard Solicitud de recursos** | 3.81d | 2022-11-16 A | 2022-11-23 | 3.81d | 15.81d |
| 1577 | 1.3.2.8.1.4.1 | Pantalla Principal | 1d | 2022-11-16 A | 2022-11-17 | 1d | 18.56d |
| 1578 | 1.3.2.8.1.4.2 | Configuración de Dashboard | 1d | 2022-11-17 A | 2022-11-18 | 1d | 17.69d |
| 1579 | 1.3.2.8.1.4.3 | Exportación de dashboard PDF | 1d | 2022-11-18 A | 2022-11-22 | 1d | 16.75d |
| 1580 | 1.3.2.8.1.4.4 | Exportación de dashboard Excel | 1d | 2022-11-21 A | 2022-11-23 | 1d | 15.81d |
| 1581 | 1.3.2.8.1.4.5 | Paginación Dashboard | 1d | 2022-11-22 A | 2022-11-23 | 1d | 15.81d |

| ID | WBS | Task | Duration | Start | Finish | Remaining | Total slack |
| --- | --- | --- | --- | --- | --- | --- | --- |
| 1582 | 1.3.2.8.1.5 | **Busqueda Dashboard** | 7.56d | 2022-11-23 A | 2022-12-05 | 7.56d | 8.31d |
| 1583 | 1.3.2.8.1.5.1 | Pantalla Principal | 1d | 2022-11-23 A | 2022-11-24 | 1d | 14.88d |
| 1584 | 1.3.2.8.1.5.2 | Agregar | 1d | 2022-11-24 A | 2022-11-25 | 1d | 13.94d |
| 1585 | 1.3.2.8.1.5.3 | Editar | 1d | 2022-11-25 A | 2022-11-28 | 1d | 13d |
| 1586 | 1.3.2.8.1.5.4 | Eliminar | 1d | 2022-11-28 A | 2022-11-29 | 1d | 12.06d |
| 1587 | 1.3.2.8.1.5.5 | Ventanas emergentes de validación | 1d | 2022-11-29 A | 2022-11-30 | 1d | 11.12d |
| 1588 | 1.3.2.8.1.5.6 | Busqueda por Año | 1d | 2022-11-30 A | 2022-12-01 | 1d | 10.19d |
| 1589 | 1.3.2.8.1.5.7 | Carga de documentos | 1d | 2022-12-01 A | 2022-12-02 | 1d | 9.25d |
| 1590 | 1.3.2.8.1.5.8 | PDF generado por la solicitud de recursos | 1d | 2022-12-02 A | 2022-12-05 | 1d | 8.31d |
| 1591 | 1.3.2.8.1.6 | **Dashboard menu preguntas frecuentes** | 1.94d | 2022-12-05 A | 2022-12-07 | 1.94d | 6.44d |
| 1592 | 1.3.2.8.1.6.1 | Pantalla Principal | 1d | 2022-12-05 A | 2022-12-06 | 1d | 7.38d |
| 1593 | 1.3.2.8.1.6.2 | Configuracion de dashboard | 1d | 2022-12-06 A | 2022-12-07 | 1d | 6.44d |
| 1594 | 1.3.2.8.1.7 | **Dashboard Recepción de recursos** | 19.75d | 2022-11-15 A | 2022-12-15 | 19.75d | 0.81d |
| 1595 | 1.3.2.8.1.7.1 | Pantalla Principal | 1d | 2022-12-08 A | 2022-12-09 | 1d | 4.56d |
| 1596 | 1.3.2.8.1.7.2 | Configuracion de dashboard | 1d | 2022-12-09 A | 2022-12-12 | 1d | 3.62d |
| 1597 | 1.3.2.8.1.7.3 | Exportación de dashboard PDF | 1d | 2022-12-12 A | 2022-12-13 | 1d | 2.69d |
| 1598 | 1.3.2.8.1.7.4 | Exportación de dashboard Excel | 1d | 2022-12-13 A | 2022-12-14 | 1d | 1.75d |
| 1599 | 1.3.2.8.1.7.5 | Paginación Dashboard | 1d | 2022-12-14 A | 2022-12-15 | 1d | 0.81d |
| 1600 | 1.3.2.8.1.7.6 | Busqueda Dashboard | 1d | 2022-11-15 A | 2022-11-17 | 1d | 18.56d |
| 1601 | 1.3.2.8.1.7.7 | Subida de Archivo | 1d | 2022-11-16 A | 2022-11-17 | 1d | 18.56d |
| 1602 | 1.3.2.8.1.8 | **Dashboard Recepción de recursos sección participaciones estatales** | 5.69d | 2022-11-17 A | 2022-11-28 | 5.69d | 13d |
| 1603 | 1.3.2.8.1.8.1 | Pantalla Principal | 1d | 2022-11-17 A | 2022-11-18 | 1d | 17.69d |
| 1604 | 1.3.2.8.1.8.2 | Configuracion de dashboard | 1d | 2022-11-18 A | 2022-11-22 | 1d | 16.75d |
| 1605 | 1.3.2.8.1.8.3 | Exportación de dashboard PDF | 1d | 2022-11-21 A | 2022-11-23 | 1d | 15.81d |
| 1606 | 1.3.2.8.1.8.4 | Exportación de dashboard Excel | 1d | 2022-11-22 A | 2022-11-23 | 1d | 15.81d |
| 1607 | 1.3.2.8.1.8.5 | Paginación Dashboard | 1d | 2022-11-23 A | 2022-11-24 | 1d | 14.88d |
| 1608 | 1.3.2.8.1.8.6 | Busqueda Dashboard | 1d | 2022-11-24 A | 2022-11-25 | 1d | 13.94d |
| 1609 | 1.3.2.8.1.8.7 | Subida de Archivo | 1d | 2022-11-25 A | 2022-11-28 | 1d | 13d |

| ID | WBS | Task | Duration | Start | Finish | Predecessors | Remaining | Total slack | Constraint |
| --- | --- | --- | --- | --- | --- | --- | --- | --- | --- |
| 1610 | 1.3.2.8.1.9 | **Dashboard Recepción de recursos sección aportaciones federales** | 6.62d | 2022-11-28 A | 2022-12-07 |  | 6.62d | 6.44d |  |
| 1611 | 1.3.2.8.1.9.1 | Pantalla Principal | 1d | 2022-11-28 A | 2022-11-29 |  | 1d | 12.06d |  |
| 1612 | 1.3.2.8.1.9.2 | Configuracion de dashboard | 1d | 2022-11-29 A | 2022-11-30 |  | 1d | 11.12d |  |
| 1613 | 1.3.2.8.1.9.3 | Exportación de dashboard PDF | 1d | 2022-11-30 A | 2022-12-01 |  | 1d | 10.19d |  |
| 1614 | 1.3.2.8.1.9.4 | Exportación de dashboard Excel | 1d | 2022-12-01 A | 2022-12-02 |  | 1d | 9.25d |  |
| 1615 | 1.3.2.8.1.9.5 | Paginación Dashboard | 1d | 2022-12-02 A | 2022-12-05 |  | 1d | 8.31d |  |
| 1616 | 1.3.2.8.1.9.6 | Busqueda Dashboard | 1d | 2022-12-05 A | 2022-12-06 |  | 1d | 7.38d |  |
| 1617 | 1.3.2.8.1.9.7 | Subida de Archivo | 1d | 2022-12-06 A | 2022-12-07 |  | 1d | 6.44d |  |
| 1618 | 1.3.2.8.1.10 | **Dashboard Recepción de recursos sección aportaciones estatales** | 5.69d | 2022-12-07 A | 2022-12-15 |  | 5.69d | 0.81d |  |
| 1619 | 1.3.2.8.1.10.1 | Pantalla Principal | 1d | 2022-12-07 A | 2022-12-08 |  | 1d | 5.5d |  |
| 1620 | 1.3.2.8.1.10.2 | Configuracion de dashboard | 1d | 2022-12-08 A | 2022-12-09 |  | 1d | 4.56d |  |
| 1621 | 1.3.2.8.1.10.3 | Exportación de dashboard PDF | 1d | 2022-12-09 A | 2022-12-12 |  | 1d | 3.62d |  |
| 1622 | 1.3.2.8.1.10.4 | Exportación de dashboard Excel | 1d | 2022-12-12 A | 2022-12-13 |  | 1d | 2.69d |  |
| 1623 | 1.3.2.8.1.10.5 | Paginación Dashboard | 1d | 2022-12-13 A | 2022-12-14 |  | 1d | 1.75d |  |
| 1624 | 1.3.2.8.1.10.6 | Busqueda Dashboard | 1d | 2022-12-14 A | 2022-12-15 |  | 1d | 0.81d |  |
| 1625 | 1.3.2.8.1.10.7 | Subida de Archivo | 1d | 2022-12-09 A | 2022-12-12 |  | 1d | 3.62d |  |
| 1626 | 1.4 | **Fase 3 Pruebas Unitarias e Integrales** | 14.62d | 2022-11-16 | 2022-12-08 | 847 |  | 0d |  |
| 1627 | 1.4.1 | **Pruebas Unitarias** | 5.94d | 2022-11-16 | 2022-11-25 |  |  | 8.69d |  |
| 1628 | 1.4.1.1 | Métodos | 5d | 2022-11-16 | 2022-11-24 |  |  | 80.94d | start no earlier than 2022-11-16 |
| 1629 | 1.4.1.2 | Funciones y Calculos individuales de las clases | 5d | 2022-11-17 | 2022-11-25 |  |  | 80d | start no earlier than 2022-11-17 |
| 1630 | 1.4.2 | **Pruebas de Integrales** | 5.94d | 2022-11-18 | 2022-11-29 |  |  | 6.81d |  |
| 1631 | 1.4.2.1 | Consultas a la base de datos | 5d | 2022-11-18 | 2022-11-28 |  |  | 79.06d | start no earlier than 2022-11-18 |
| 1632 | 1.4.2.2 | Microservicios | 5d | 2022-11-22 | 2022-11-29 |  |  | 78.12d | start no earlier than 2022-11-19 |
| 1633 | 1.4.3 | **Pruebas de Funcionales** | 5d | 2022-11-23 | 2022-11-30 |  |  | 5.88d |  |
| 1634 | 1.4.3.1 | Interacción con la base de datos | 5d | 2022-11-23 | 2022-11-30 |  |  | 77.19d | start no earlier than 2022-11-23 |

| ID | WBS | Task | Type | Duration | Start | Finish | Predecessors | Total slack | Constraint |
| --- | --- | --- | --- | --- | --- | --- | --- | --- | --- |
| 1635 | 1.4.4 | **Integraciones y Web Services** |  | 9.94d | 2022-11-24 | 2022-12-08 |  | 0d |  |
| 1636 | 1.4.4.1 | Implementation |  | 5d | 2022-11-24 | 2022-12-01 |  | 76.25d | start no earlier than 2022-11-24 |
| 1637 | 1.4.4.2 | Pruebas |  | 9d | 2022-11-25 | 2022-12-08 |  | 0d | start no earlier than 2022-11-25 |
| 1638 | 1.4.4.3 | Ajustes |  | 5d | 2022-11-28 | 2022-12-05 |  | 74.38d | start no earlier than 2022-11-28 |
| 1639 | 1.5 | **Fase 4 Públicación y Puesta a Punto** |  | 5d | 2022-12-08 | 2022-12-15 | 1626 | 0d |  |
| 1640 | 1.5.1 | Manuales de Usuario |  | 5d | 2022-12-08 | 2022-12-15 |  | 0d | start no earlier than 2022-12-01 |
| 1641 | 1.5.2 | Informe de cumplimiento de capacitación |  | 5d | 2022-12-08 | 2022-12-15 |  | 0d | start no earlier than 2022-12-01 |
| 1642 | 1.5.3 | Evidencia de Procesos de Inicialización |  | 5d | 2022-12-08 | 2022-12-15 |  | 0d | start no earlier than 2022-12-01 |
| 1643 | 1.5.4 | Evidencia de Ejecución de Procesos |  | 5d | 2022-12-08 | 2022-12-15 |  | 0d | start no earlier than 2022-12-01 |
| 1644 | 1.5.5 | Carta de Aceptación de Procesos Implementados |  | 5d | 2022-12-08 | 2022-12-15 |  | 0d | start no earlier than 2022-12-01 |
| 1645 | 1.5.6 | Plan de soporte Post-productivo |  | 5d | 2022-12-08 | 2022-12-15 |  | 0d | start no earlier than 2022-12-01 |
| 1646 | 1.6 | Fin | milestone, manual | 0d | 2022-12-15 | 2022-12-15 |  |  | start no earlier than 2022-12-15 |
