# PROJECT PDRMyE 4.0 nuevo 5

Schedule from MS Project, 2022-05-11 to 2023-01-31, 24 hours a day, A marks actual dates.

## Calendars

- 24 horas: Mon-Fri 00:00-24:00; Sat-Sun off.

## Schedule

| ID | WBS | Task | Duration | Start | Finish | Complete | Remaining | Total slack | Constraint |
| --- | --- | --- | --- | --- | --- | --- | --- | --- | --- |
| 1 | 1 | **Proyecto PDRMyE** | 189d? | 2022-05-11 A | 2023-01-31 | 93% | 12.99d? | 0d |  |
| 2 | 1.1 | **Fase 1 Inicio y Planificación** | 107d | 2022-05-11 A | 2022-10-07 A | 100% |  |  |  |
| 3 | 1.1.1 | **Levantamiento de Generalidades Técnicas** | 47d | 2022-05-11 A | 2022-07-15 A | 100% |  |  |  |
| 4 | 1.1.1.1 | **sprint 1** | 47d | 2022-05-11 A | 2022-07-15 A | 100% |  |  |  |
| 5 | 1.1.1.1.1 | Reunión Kick Off . Coordinacion de Gestion de Informacion | 1d | 2022-05-11 A | 2022-05-12 A | 100% |  |  | start no earlier than 2022-05-11 |
| 6 | 1.1.1.1.2 | Reunión Kick Off - Coordinacion de Planeacion Hacendaria | 1d | 2022-05-12 A | 2022-05-13 A | 100% |  |  | start no earlier than 2022-05-12 |
| 7 | 1.1.1.1.3 | Reunión Kick Off - Direccion de Contabilidad y Cuenta Publica | 1d | 2022-05-12 A | 2022-05-13 A | 100% |  |  | start no earlier than 2022-05-12 |
| 8 | 1.1.1.1.4 | Integración de Equipo de Desarrollo | 1d | 2022-05-16 A | 2022-05-17 A | 100% |  |  |  |
| 9 | 1.1.1.1.5 | Reunión Kick Off - Direccion de Atencion a Municipios y Organismos Paraestatales | 1d | 2022-05-16 A | 2022-05-17 A | 100% |  |  |  |
| 10 | 1.1.1.1.6 | Primera Reunión con Área CPH obtención de formulas y documentación | 1d | 2022-05-16 A | 2022-05-17 A | 100% |  |  |  |
| 11 | 1.1.1.1.7 | Segunda Reunión con Área CPH obtención de formulas y documentación | 1d | 2022-05-17 A | 2022-05-18 A | 100% |  |  | start no earlier than 2022-05-17 |
| 12 | 1.1.1.1.8 | Reunión SIREGOB proyeccion de web service PDRMyE | 1d | 2022-05-18 A | 2022-05-19 A | 100% |  |  | start no earlier than 2022-05-18 |
| 13 | 1.1.1.1.9 | Reunión DAF levantamiento de requerimientos para plataforma PDRMyE | 1d | 2022-05-18 A | 2022-05-19 A | 100% |  |  | start no earlier than 2022-05-18 |
| 14 | 1.1.1.1.10 | Reunión Presupuestos levantamiento de requerimientos para plataforma PDRMyE | 1d | 2022-05-18 A | 2022-05-19 A | 100% |  |  | start no earlier than 2022-05-18 |
| 15 | 1.1.1.1.11 | Requerimientos funcionalidad area de CPH | 1d | 2022-05-19 A | 2022-05-20 A | 100% |  |  | start no earlier than 2022-05-16 |
| 16 | 1.1.1.1.12 | requerimientos funcionalidad area de DAMOP | 1d | 2022-05-20 A | 2022-05-21 A | 100% |  |  | start no earlier than 2022-05-19 |
| 17 | 1.1.1.1.13 | Integracion de la información CPH | 1d | 2022-05-23 A | 2022-05-24 A | 100% |  |  | start no earlier than 2022-05-23 |
| 18 | 1.1.1.1.14 | Integracion de la información DAMOP | 1d | 2022-05-26 A | 2022-05-27 A | 100% |  |  | start no earlier than 2022-05-26 |
| 19 | 1.1.1.1.15 | Integración de plan de trabajo y desarrollo equipo PDRMyE | 1d | 2022-06-01 A | 2022-06-02 A | 100% |  |  | start no earlier than 2022-06-01 |
| 20 | 1.1.1.1.16 | Puesta a punto equipo equipo de computo, instalación de Hardware | 1d | 2022-06-02 A | 2022-06-03 A | 100% |  |  | start no earlier than 2022-10-04 |
| 21 | 1.1.1.1.17 | Implementación de aplicaciones para el proyecto Visual SC, Laravel, Xampp, HeidiSQL, MariaDB, MySQLWorkbench | 1d | 2022-06-03 A | 2022-06-04 A | 100% |  |  | start no earlier than 2022-10-04 |
| 22 | 1.1.1.1.18 | Reunión INAP Estructura oficial de trabajo, organigrama y avances | 4d | 2022-06-06 A | 2022-06-10 A | 100% |  |  | start no earlier than 2022-06-06 |
| 23 | 1.1.1.1.19 | Reunion de Presentación del proyecto con el equipo INAP | 1d | 2022-06-14 A | 2022-06-15 A | 100% |  |  | start no earlier than 2022-06-14 |
| 24 | 1.1.1.1.20 | Reunión Proyección de levantamiento con Áreas CPH, DAMOP, DAF, DPCP, DCCP | 1d | 2022-06-15 A | 2022-06-16 A | 100% |  |  | start no earlier than 2022-05-11 |
| 25 | 1.1.1.1.21 | Reunión de Levantamiento de Requerimientos CPH - Participaciones Estatales (ISN) | 1d | 2022-06-15 A | 2022-06-16 A | 100% |  |  | start no earlier than 2022-06-15 |
| 26 | 1.1.1.1.22 | Reunión de Levantamiento de Requerimientos DAMOP - Participaciones Federales (Fondo General) | 1d | 2022-06-16 A | 2022-06-17 A | 100% |  |  | start no earlier than 2022-06-16 |
| 27 | 1.1.1.1.23 | Reunión de Levantamiento de Requerimientos CPH - Participaciones Estatales (ICV, Predial), Participaciones Federales (FFM 70) | 1d | 2022-06-17 A | 2022-06-18 A | 100% |  |  | start no earlier than 2022-06-17 |
| 28 | 1.1.1.1.24 | Reunión de Levantamiento de Requerimientos CPH - Participaciones Estatales (Fondo General, FFM70, FFM30, FOFIR, IEPS, ISAN, Comp ISAN, IEPS GyD, ISR Bienes, ISR NOMINA) | 1d | 2022-06-20 A | 2022-06-21 A | 100% |  |  | start no earlier than 2022-06-20 |
| 29 | 1.1.1.1.25 | Reunión de Levantamiento de Requerimientos CPH - Participaciones Estatales (Fondo desarrollo Municipal, Fondo Ultra Crecimiento, Fondo Descentralizados, Fondos de Seguridad para Municipios, Fortamun y Fism) | 1d | 2022-06-21 A | 2022-06-22 A | 100% |  |  | start no earlier than 2022-06-21 |
| 30 | 1.1.1.1.26 | Reunión de Levantamiento de Requerimientos DAMOP - Participaciones Federales (Anticipos, Complementos, IEPS GyD) | 1d | 2022-06-22 A | 2022-06-23 A | 100% |  |  | start no earlier than 2022-06-22 |
| 31 | 1.1.1.1.27 | Reunión de Levantamiento de Requerimientos DAMOP Participaciones Federales (Participaciones Ramo28, Proceso de calculo de interes) | 1d | 2022-06-24 A | 2022-06-25 A | 100% |  |  | start no earlier than 2022-06-24 |
| 32 | 1.1.1.1.28 | Reunión de Levantamiento de Requerimientos DAMOP - Aportaciones Estatales (Anticipos, Provisiones Economicas, Trasferencia Predial, Fondos Estatales, Capufe) | 1d | 2022-06-30 A | 2022-07-01 A | 100% |  |  | start no earlier than 2022-06-30 |
| 33 | 1.1.1.1.29 | Reunión de Levantamiento de Requerimientos DAMOP - Participaciones Federales (Descuentos a fondos, Anticipo y Complemento, Validacion de Informacion a Municipios) | 1d | 2022-07-12 A | 2022-07-13 A | 100% |  |  | start no earlier than 2022-07-13 |
| 34 | 1.1.1.1.30 | Reunión de Levantamiento de Requerimientos DAF - (Metodo de pago de SP, Autorizacion de Pagos, SPEI´s, API´s SIREGOB) | 1d | 2022-07-13 A | 2022-07-14 A | 100% |  |  | start no earlier than 2022-07-13 |
| 35 | 1.1.1.1.31 | Reunión de Levantamiento de Requerimientos DCCP - (Participacion del area de Contabilidad, Resguardo de Polizas, Soporte de Ingresos, Cuenta Comprobada) | 1d | 2022-07-14 A | 2022-07-15 A | 100% |  |  | start no earlier than 2022-07-14 |
| 36 | 1.1.1.1.32 | Reunión de Levantamiento de Requerimientos DPCP - (Participacion de area de Presupuestos, Metodos de Autorizacion de Suficiencia en Plataforma, Reportes) | 1d | 2022-07-14 A | 2022-07-15 A | 100% |  |  | start no earlier than 2022-07-14 |

| ID | WBS | Task | Duration | Start | Finish | Complete | Constraint |
| --- | --- | --- | --- | --- | --- | --- | --- |
| 37 | 1.1.2 | **Objeto y Proyección del Alcance** | 73d | 2022-06-28 A | 2022-10-07 A | 100% |  |
| 38 | 1.1.2.1 | **sprint 2** | 14d | 2022-06-28 A | 2022-07-16 A | 100% |  |
| 39 | 1.1.2.1.1 | Reunión para definición de Base de Datos - (Muesta de Avances, Base de Datos, Diseño de Plataforma, Seguridad, Entregable) | 1d | 2022-06-28 A | 2022-06-29 A | 100% | start no earlier than 2022-06-28 |
| 40 | 1.1.2.1.2 | Reunion_AVANCES_Semanal | 1d | 2022-07-01 A | 2022-07-02 A | 100% | start no earlier than 2022-07-01 |
| 41 | 1.1.2.1.3 | Integracion de Maqueta para Plataforma de PDRMyE | 1d | 2022-07-06 A | 2022-07-07 A | 100% | start no earlier than 2022-07-06 |
| 42 | 1.1.2.1.4 | Revisión de cambios a maqueta | 1d | 2022-07-07 A | 2022-07-08 A | 100% | start no earlier than 2022-07-07 |
| 43 | 1.1.2.1.5 | Reunion_AVANCES_Semanal - (Funciones modulo Administracion, Administracion de Calculos, Seguridad, Control de Proyecto) | 1d | 2022-07-08 A | 2022-07-09 A | 100% | start no earlier than 2022-07-08 |
| 44 | 1.1.2.1.6 | Reunión sobre Seguridad de la Plataforma | 1d | 2022-07-11 A | 2022-07-12 A | 100% | start no earlier than 2022-07-11 |
| 45 | 1.1.2.1.7 | Retroalimentación de maquetaDAMOP - (Descuento a fondos, Anticipo y Complemento, Validacion de Informacion a Municipios) | 1d | 2022-07-12 A | 2022-07-13 A | 100% | start no earlier than 2022-07-12 |
| 46 | 1.1.2.1.8 | Retroalimentación DAF - (Metodo de pago de SP, SPEI´s, API´s SIREGOB) | 1d | 2022-07-13 A | 2022-07-14 A | 100% | start no earlier than 2022-07-13 |
| 47 | 1.1.2.1.9 | Retroalimentación DCCP - (Resguardo de Polizas, Soporte de Ingresos, Cuenta Comprobada) | 1d | 2022-07-14 A | 2022-07-15 A | 100% | start no earlier than 2022-07-14 |
| 48 | 1.1.2.1.10 | Retroalimentación DPCP - (Metodo de Autorizacion de Suficiencia en Plataforma, Reportes) | 1d | 2022-07-15 A | 2022-07-16 A | 100% | start no earlier than 2022-07-15 |
| 49 | 1.1.2.1.11 | Reunion_AVANCES_Semanal - (Desarrollo de Servidor, Seguridad Oauth2.0, Flujos de Proceso por Area, Roles y Permisos) | 1d | 2022-07-15 A | 2022-07-16 A | 100% | start no earlier than 2022-07-15 |
| 50 | 1.1.2.2 | **sprint 3** | 59d | 2022-07-18 A | 2022-10-07 A | 100% |  |
| 51 | 1.1.2.2.1 | Atencion de Observaciones de maquetas CPH, DPCP, DAMOP, DCCP, DAF, Municipios | 4d | 2022-07-18 A | 2022-07-22 A | 100% | start no earlier than 2022-07-18 |
| 52 | 1.1.2.2.2 | Reunion_AVANCES_Semanal | 1d | 2022-07-22 A | 2022-07-23 A | 100% | start no earlier than 2022-07-22 |
| 53 | 1.1.2.2.3 | Definición de la arquitectura a utilizar | 1d | 2022-07-25 A | 2022-07-26 A | 100% | start no earlier than 2022-07-25 |
| 54 | 1.1.2.2.4 | Presentación de Propuesta Arquitectura para Aplicaciones de la SFTGE - (Estructura de Arquitectura, Estructura de Base de Datos, QA, Caracteristicas de Equipo) | 1d | 2022-07-26 A | 2022-07-27 A | 100% | start no earlier than 2022-07-26 |
| 55 | 1.1.2.2.5 | Aprobación de Propuesta de Arquitectura para Aplicaciones de la SFTGE - Aprobacion Director de Proyecto | 1d | 2022-07-27 A | 2022-07-28 A | 100% | start no earlier than 2022-07-27 |
| 56 | 1.1.2.2.6 | Integración y Desarrollo de Propuesta de Arquitectura para Aplicaciones de la SFTGE - (Estructura de Arquitectura, Estructura de Base de Datos, QA, Caracteristicas de Equipo) | 1d | 2022-07-28 A | 2022-07-29 A | 100% | start no earlier than 2022-07-28 |
| 57 | 1.1.2.2.7 | Presentación de Maqueta con Cambios (PDRMyE) CPH | 1d | 2022-07-27 A | 2022-07-28 A | 100% | start no earlier than 2022-07-27 |
| 58 | 1.1.2.2.8 | Reunion_AVANCES_Semanal - (Se presento la Propuesta de Arquitectura, Se presento la Maqueta de "PDRMyE") | 1d | 2022-07-29 A | 2022-07-30 A | 100% | start no earlier than 2022-07-29 |
| 59 | 1.1.2.2.9 | Retroalimentación de maquetado con CPH | 1d | 2022-08-01 A | 2022-08-02 A | 100% | start no earlier than 2022-08-01 |
| 60 | 1.1.2.2.10 | Propuesta de arquitectura para aplicaciones Coordinación de TI | 1d | 2022-08-02 A | 2022-08-03 A | 100% | start no earlier than 2022-08-02 |
| 61 | 1.1.2.2.11 | Retroalimentación de maquetado con DAMOP - (Funciones Generales, Menus y Alertas, Articulos, Participaciones y Aportaciones, Calendario y Generador de Estadisticas) | 1d | 2022-08-04 A | 2022-08-05 A | 100% | start no earlier than 2022-08-04 |
| 62 | 1.1.2.2.12 | Retroalimentación de maquetado con DCCP - (Funciones Generales, Menus y Alertas, Particiones y Aportaciones, Calendario y Generador de Estadisticas) | 1d | 2022-08-05 A | 2022-08-06 A | 100% | start no earlier than 2022-08-05 |
| 63 | 1.1.2.2.13 | Reunion_AVANCES_Semanal - (Avance de Identidad de la Maqueta CPH y DAMOP, Integracion de Arquitecutra) | 1d | 2022-08-05 A | 2022-08-06 A | 100% | start no earlier than 2022-08-05 |
| 64 | 1.1.2.2.14 | Revisión de avances de maquetas CPH y DAMOP, Avance en BD | 1d | 2022-08-10 A | 2022-08-11 A | 100% | start no earlier than 2022-08-10 |
| 65 | 1.1.2.2.15 | Revisión de avances de maquetas CPH y DAMOP | 1d | 2022-08-12 A | 2022-08-13 A | 100% | start no earlier than 2022-08-12 |
| 66 | 1.1.2.2.16 | Reunion_AVANCES_Semanal - (Workflow del proeso de autorizacion, Proceso visual de autorizacion, Generacion de token y E.firma, Codigo QR, Avance de desempeño) | 1d | 2022-08-12 A | 2022-08-13 A | 100% | start no earlier than 2022-08-12 |
| 67 | 1.1.2.2.17 | Aclaración dudas con la maqueta de firma electrónica, propuesta para implementar cambios a la maqueta e.firma | 1d | 2022-08-15 A | 2022-08-16 A | 100% | start no earlier than 2022-08-15 |
| 68 | 1.1.2.2.18 | Retroalimentación de maquetado con DAMOP - (Funciones Generales, Menus y Alertas, Articulos, Participaciones y Aportaciones, Calendario y Generador de Estadisticas) | 1d | 2022-08-17 A | 2022-08-18 A | 100% | start no earlier than 2022-08-17 |
| 69 | 1.1.2.2.19 | Revisión de maqueta de firma electrónica Coordinación de TI, Proceso de firmado, notificaciones por correo, Bandeja y estatus | 1d | 2022-08-18 A | 2022-08-19 A | 100% | start no earlier than 2022-08-18 |
| 70 | 1.1.2.2.20 | Reunion_AVANCES_Semanal - (Retroalimentacion de maquetas CPH y DAMOP, Maqueta de Municipios, Maqueta de documentos electronicos, Configuracion de Productivo y QA) | 1d | 2022-08-19 A | 2022-08-20 A | 100% | start no earlier than 2022-08-19 |
| 71 | 1.1.2.2.21 | reunión de presentación de plataforma ingresos y recaudación Ing. Marisol | 1d | 2022-08-22 A | 2022-08-23 A | 100% | start no earlier than 2022-08-22 |
| 72 | 1.1.2.2.22 | Avance de funcionalidad de Exportación de Dashboard en PDF | 1d | 2022-08-22 A | 2022-08-23 A | 100% | start no earlier than 2022-08-22 |
| 73 | 1.1.2.2.23 | Avance de funcionalidad Exportación de Dashboard en Excel | 1d | 2022-08-22 A | 2022-08-23 A | 100% | start no earlier than 2022-08-22 |
| 74 | 1.1.2.2.24 | Avance de funcionalidad Paginación de Dashboard | 1d | 2022-08-22 A | 2022-08-23 A | 100% | start no earlier than 2022-08-22 |
| 75 | 1.1.2.2.25 | Levantamiento de Generalidades Técnicas MUNICIPIOS - (Necesidades de los OPD´s, Informacion requerida, Formatos y procesos) | 1d | 2022-08-25 A | 2022-08-26 A | 100% | start no earlier than 2022-08-25 |
| 76 | 1.1.2.2.26 | Levantamiento de Generalidades Técnicas OPDs - (Programar Reuniones, Necesidades de OPD´s, Formatos y procesos) | 1d | 2022-08-25 A | 2022-08-26 A | 100% | start no earlier than 2022-08-25 |
| 77 | 1.1.2.2.27 | Avance del control de sprint y control de proyecto | 1d | 2022-08-29 A | 2022-08-30 A | 100% | start no earlier than 2022-08-29 |
| 78 | 1.1.2.2.28 | Reunion_AVANCES_Semanal - | 1d | 2022-09-02 A | 2022-09-03 A | 100% | start no earlier than 2022-09-02 |
| 79 | 1.1.2.2.29 | Levantamiento de Generalidades Técnicas MUNICIPIOS | 1d | 2022-09-06 A | 2022-09-07 A | 100% | start no earlier than 2022-09-06 |
| 80 | 1.1.2.2.30 | Levantamiento de Generalidades Técnicas OPDs | 1d | 2022-09-06 A | 2022-09-07 A | 100% | start no earlier than 2022-09-06 |
| 81 | 1.1.2.2.31 | Levantamiento de Generalidades Técnicas OPDs | 1d | 2022-09-07 A | 2022-09-08 A | 100% | start no earlier than 2022-09-07 |
| 82 | 1.1.2.2.32 | Levantamiento de Generalidades Técnicas OPDs | 1d | 2022-09-08 A | 2022-09-09 A | 100% | start no earlier than 2022-09-08 |
| 83 | 1.1.2.2.33 | Levantamiento de Generalidades Técnicas OPDs | 1d | 2022-09-09 A | 2022-09-10 A | 100% | start no earlier than 2022-09-09 |
| 84 | 1.1.2.2.34 | Reunion_AVANCES_Semanal | 1d | 2022-09-09 A | 2022-09-10 A | 100% | start no earlier than 2022-09-09 |
| 85 | 1.1.2.2.35 | Levantamiento de Generalidades Técnicas OPDs | 1d | 2022-09-13 A | 2022-09-14 A | 100% | start no earlier than 2022-09-13 |
| 86 | 1.1.2.2.36 | Levantamiento de Generalidades Técnicas OPDs | 1d | 2022-09-14 A | 2022-09-15 A | 100% | start no earlier than 2022-09-14 |
| 87 | 1.1.2.2.37 | Levantamiento de Generalidades Técnicas OPDs | 1d | 2022-09-19 A | 2022-09-20 A | 100% | start no earlier than 2022-09-19 |
| 88 | 1.1.2.2.38 | Presentacion de maqueta OPD´s - Atencion de Observaciones | 1d | 2022-10-06 A | 2022-10-07 A | 100% |  |

| ID | WBS | Task | Duration | Start | Finish | Complete | Remaining | Total slack | Constraint |
| --- | --- | --- | --- | --- | --- | --- | --- | --- | --- |
| 89 | 1.2 | **Fase 2 Diseño y Desarrollo** | 164d | 2022-06-15 A | 2023-01-31 | 96% | 6.5d | 0d |  |
| 90 | 1.2.1 | **sprint 4** | 22d | 2022-06-15 A | 2022-07-15 A | 100% |  |  |  |
| 91 | 1.2.1.1 | **BACK** | 22d | 2022-06-15 A | 2022-07-15 A | 100% |  |  |  |
| 92 | 1.2.1.1.1 | **Actividades Administracion** | 1d | 2022-06-15 A | 2022-06-16 A | 100% |  |  |  |
| 93 | 1.2.1.1.1.1 | **Configuración Ambiente Desarrollo** | 1d | 2022-06-15 A | 2022-06-16 A | 100% |  |  |  |
| 94 | 1.2.1.1.1.1.1 | Configuración Ambiente PHP | 1d | 2022-06-15 A | 2022-06-16 A | 100% |  |  |  |
| 95 | 1.2.1.1.1.1.2 | Configuración Ambiente Maria DB | 1d | 2022-06-15 A | 2022-06-16 A | 100% |  |  |  |
| 96 | 1.2.1.1.1.2 | **Configuracion Ambiente QA** | 1d | 2022-06-15 A | 2022-06-16 A | 100% |  |  |  |
| 97 | 1.2.1.1.1.2.1 | Configuración Ambiente Maria DB | 1d | 2022-06-15 A | 2022-06-16 A | 100% |  |  |  |
| 98 | 1.2.1.1.1.2.2 | Configuración Ambiente PHP | 1d | 2022-06-15 A | 2022-06-16 A | 100% |  |  |  |
| 99 | 1.2.1.1.1.3 | **Configuración Ambiente Produccion** | 1d | 2022-06-15 A | 2022-06-16 A | 100% |  |  |  |
| 100 | 1.2.1.1.1.3.1 | Configuración Ambiente PHP | 1d | 2022-06-15 A | 2022-06-16 A | 100% |  |  |  |
| 101 | 1.2.1.1.1.3.2 | Configuración Ambiente Maria DB | 1d | 2022-06-15 A | 2022-06-16 A | 100% |  |  |  |
| 102 | 1.2.1.1.1.4 | **Correos** | 1d | 2022-06-15 A | 2022-06-16 A | 100% |  |  |  |
| 103 | 1.2.1.1.1.4.1 | Creacion de correos para el equipo de desarrollo | 1d | 2022-06-15 A | 2022-06-16 A | 100% |  |  |  |
| 104 | 1.2.1.1.1.5 | **Conexión AS400** | 1d | 2022-06-15 A | 2022-06-16 A | 100% |  |  |  |
| 105 | 1.2.1.1.1.5.1 | <Tarea nueva> | 1d | 2022-06-15 A | 2022-06-16 A | 100% |  |  |  |
| 106 | 1.2.1.1.1.6 | **Migraciones a BD** | 1d | 2022-06-15 A | 2022-06-16 A | 100% |  |  |  |
| 107 | 1.2.1.1.1.6.1 | <Tarea nueva> | 1d | 2022-06-15 A | 2022-06-16 A | 100% |  |  |  |
| 108 | 1.2.1.1.1.7 | **Documentacion de Código** | 1d | 2022-06-15 A | 2022-06-16 A | 100% |  |  |  |
| 109 | 1.2.1.1.1.7.1 | <Tarea nueva> | 1d | 2022-06-15 A | 2022-06-16 A | 100% |  |  |  |
| 110 | 1.2.1.1.1.8 | **Diccionario de Datos** | 1d | 2022-06-15 A | 2022-06-16 A | 100% |  |  |  |
| 111 | 1.2.1.1.1.8.1 | <Tarea nueva> | 1d | 2022-06-15 A | 2022-06-16 A | 100% |  |  |  |
| 112 | 1.2.1.1.2 | **Módulo de Administración** | 22d | 2022-06-15 A | 2022-07-15 A | 100% |  |  |  |
| 113 | 1.2.1.1.2.1 | **Base** | 5d | 2022-06-15 A | 2022-06-22 A | 100% |  |  |  |
| 114 | 1.2.1.1.2.1.1 | Login | 3d | 2022-06-15 A | 2022-06-18 A | 100% |  |  | start no earlier than 2022-10-04 |
| 115 | 1.2.1.1.2.1.2 | Logout | 3d | 2022-06-16 A | 2022-06-21 A | 100% |  |  | start no earlier than 2022-10-04 |
| 116 | 1.2.1.1.2.1.3 | Bloqueo de Sesión | 3d | 2022-06-17 A | 2022-06-22 A | 100% |  |  | start no earlier than 2022-09-05 |

| ID | WBS | Task | Duration | Start | Finish | Complete | Constraint |
| --- | --- | --- | --- | --- | --- | --- | --- |
| 117 | 1.2.1.1.2.2 | **Administración de Usuarios** | 12d | 2022-06-20 A | 2022-07-06 A | 100% |  |
| 118 | 1.2.1.1.2.2.1 | Agregar | 3d | 2022-06-20 A | 2022-06-23 A | 100% | start no earlier than 2022-09-07 |
| 119 | 1.2.1.1.2.2.2 | Pantalla Principal | 3d | 2022-06-21 A | 2022-06-24 A | 100% | start no earlier than 2022-09-08 |
| 120 | 1.2.1.1.2.2.3 | Editar | 3d | 2022-06-22 A | 2022-06-25 A | 100% | start no earlier than 2022-09-09 |
| 121 | 1.2.1.1.2.2.4 | Eliminar | 3d | 2022-06-23 A | 2022-06-28 A | 100% | start no earlier than 2022-09-12 |
| 122 | 1.2.1.1.2.2.5 | Configuración de Dashboard | 3d | 2022-06-24 A | 2022-06-29 A | 100% | start no earlier than 2022-09-13 |
| 123 | 1.2.1.1.2.2.6 | Exportación de dashboard PDF | 3d | 2022-06-27 A | 2022-06-30 A | 100% | start no earlier than 2022-09-14 |
| 124 | 1.2.1.1.2.2.7 | Exportación de dashboard Excel | 3d | 2022-06-28 A | 2022-07-01 A | 100% | start no earlier than 2022-09-15 |
| 125 | 1.2.1.1.2.2.8 | Paginación Dashboard | 3d | 2022-06-29 A | 2022-07-02 A | 100% | start no earlier than 2022-09-16 |
| 126 | 1.2.1.1.2.2.9 | Búsqueda Dash board | 3d | 2022-06-30 A | 2022-07-05 A | 100% | start no earlier than 2022-09-19 |
| 127 | 1.2.1.1.2.2.10 | Ventanas emergentes de validación | 3d | 2022-07-01 A | 2022-07-06 A | 100% | start no earlier than 2022-09-20 |
| 128 | 1.2.1.1.2.3 | **Administración de Roles y Permisos** | 22d | 2022-06-15 A | 2022-07-15 A | 100% |  |
| 129 | 1.2.1.1.2.3.1 | Pantalla Principal | 3d | 2022-07-01 A | 2022-07-06 A | 100% | start no earlier than 2022-09-21 |
| 130 | 1.2.1.1.2.3.2 | Agregar | 3d | 2022-07-04 A | 2022-07-07 A | 100% | start no earlier than 2022-09-22 |
| 131 | 1.2.1.1.2.3.3 | Editar | 3d | 2022-07-05 A | 2022-07-08 A | 100% | start no earlier than 2022-09-23 |
| 132 | 1.2.1.1.2.3.4 | Eliminar | 3d | 2022-07-06 A | 2022-07-09 A | 100% | start no earlier than 2022-09-26 |
| 133 | 1.2.1.1.2.3.5 | Configuración de Dashboard | 3d | 2022-07-07 A | 2022-07-12 A | 100% | start no earlier than 2022-09-27 |
| 134 | 1.2.1.1.2.3.6 | Exportación de dashboard PDF | 3d | 2022-07-08 A | 2022-07-13 A | 100% | start no earlier than 2022-09-28 |
| 135 | 1.2.1.1.2.3.7 | Exportación de dashboard Excel | 3d | 2022-07-11 A | 2022-07-14 A | 100% | start no earlier than 2022-09-29 |
| 136 | 1.2.1.1.2.3.8 | Paginación Dashboard | 3d | 2022-07-12 A | 2022-07-15 A | 100% | start no earlier than 2022-09-30 |
| 137 | 1.2.1.1.2.3.9 | Búsqueda Dash board | 3d | 2022-06-15 A | 2022-06-18 A | 100% | start no earlier than 2022-10-03 |
| 138 | 1.2.1.1.2.3.10 | Ventanas emergentes de validación | 3d | 2022-06-16 A | 2022-06-21 A | 100% | start no earlier than 2022-10-04 |
| 139 | 1.2.1.1.3 | **Módulo CPH** | 22d | 2022-06-15 A | 2022-07-15 A | 100% |  |
| 140 | 1.2.1.1.3.1 | **Coeficientes** | 10d | 2022-06-20 A | 2022-07-02 A | 100% |  |
| 141 | 1.2.1.1.3.1.1 | Pantalla principal | 1d | 2022-06-20 A | 2022-06-21 A | 100% | start no earlier than 2022-07-15 |
| 142 | 1.2.1.1.3.1.2 | Agregar | 1d | 2022-06-21 A | 2022-06-22 A | 100% | start no earlier than 2022-07-18 |
| 143 | 1.2.1.1.3.1.3 | Eliminar | 1d | 2022-06-22 A | 2022-06-23 A | 100% | start no earlier than 2022-07-19 |
| 144 | 1.2.1.1.3.1.4 | Editar | 1d | 2022-06-23 A | 2022-06-24 A | 100% | start no earlier than 2022-07-20 |
| 145 | 1.2.1.1.3.1.5 | Configuración de Dashboard | 1d | 2022-06-24 A | 2022-06-25 A | 100% | start no earlier than 2022-07-21 |
| 146 | 1.2.1.1.3.1.6 | Exportación de dashboard PDF | 1d | 2022-06-27 A | 2022-06-28 A | 100% | start no earlier than 2022-07-22 |
| 147 | 1.2.1.1.3.1.7 | Exportación de dashboard Excel | 1d | 2022-06-28 A | 2022-06-29 A | 100% | start no earlier than 2022-07-25 |
| 148 | 1.2.1.1.3.1.8 | Paginación Dashboard | 1d | 2022-06-29 A | 2022-06-30 A | 100% | start no earlier than 2022-07-26 |
| 149 | 1.2.1.1.3.1.9 | Búsqueda Dash board | 1d | 2022-06-30 A | 2022-07-01 A | 100% | start no earlier than 2022-07-27 |
| 150 | 1.2.1.1.3.1.10 | Ventanas emergentes de validación | 1d | 2022-07-01 A | 2022-07-02 A | 100% | start no earlier than 2022-07-28 |

| ID | WBS | Task | Duration | Start | Finish | Complete | Constraint |
| --- | --- | --- | --- | --- | --- | --- | --- |
| 151 | 1.2.1.1.3.2 | **Bienvenida** | 1d | 2022-07-04 A | 2022-07-05 A | 100% |  |
| 152 | 1.2.1.1.3.2.1 | Configuración de bienvenida | 1d | 2022-07-04 A | 2022-07-05 A | 100% | start no earlier than 2022-07-29 |
| 153 | 1.2.1.1.3.3 | **Base** | 1d | 2022-07-05 A | 2022-07-06 A | 100% |  |
| 154 | 1.2.1.1.3.3.1 | Contador de Notificaciones (Icono campanita) | 1d | 2022-07-05 A | 2022-07-06 A | 100% | start no earlier than 2022-08-05 |
| 155 | 1.2.1.1.3.4 | **Administración de Municipios** | 22d | 2022-06-15 A | 2022-07-15 A | 100% |  |
| 156 | 1.2.1.1.3.4.1 | Pantalla Principal | 1d | 2022-07-06 A | 2022-07-07 A | 100% | start no earlier than 2022-08-08 |
| 157 | 1.2.1.1.3.4.2 | Eliminar | 1d | 2022-07-07 A | 2022-07-08 A | 100% | start no earlier than 2022-08-11 |
| 158 | 1.2.1.1.3.4.3 | Configuración de Dashboard | 1d | 2022-07-08 A | 2022-07-09 A | 100% | start no earlier than 2022-08-12 |
| 159 | 1.2.1.1.3.4.4 | Exportación de dashboard PDF | 1d | 2022-07-11 A | 2022-07-12 A | 100% | start no earlier than 2022-08-15 |
| 160 | 1.2.1.1.3.4.5 | Exportación de dashboard Excel | 1d | 2022-07-12 A | 2022-07-13 A | 100% | start no earlier than 2022-08-16 |
| 161 | 1.2.1.1.3.4.6 | Paginación Dashboard | 1d | 2022-07-13 A | 2022-07-14 A | 100% | start no earlier than 2022-08-17 |
| 162 | 1.2.1.1.3.4.7 | Búsqueda Dash board | 1d | 2022-07-14 A | 2022-07-15 A | 100% | start no earlier than 2022-08-18 |
| 163 | 1.2.1.1.3.4.8 | Ventanas emergentes de validación | 1d | 2022-06-15 A | 2022-06-16 A | 100% | start no earlier than 2022-08-19 |
| 164 | 1.2.1.1.3.5 | **Administración de Fondos** | 10d | 2022-06-16 A | 2022-06-30 A | 100% |  |
| 165 | 1.2.1.1.3.5.1 | Pantalla Principal | 1d | 2022-06-16 A | 2022-06-17 A | 100% | start no earlier than 2022-08-22 |
| 166 | 1.2.1.1.3.5.2 | Agregar | 1d | 2022-06-17 A | 2022-06-18 A | 100% | start no earlier than 2022-08-23 |
| 167 | 1.2.1.1.3.5.3 | Editar | 1d | 2022-06-20 A | 2022-06-21 A | 100% | start no earlier than 2022-08-24 |
| 168 | 1.2.1.1.3.5.4 | Eliminar | 1d | 2022-06-21 A | 2022-06-22 A | 100% | start no earlier than 2022-08-25 |
| 169 | 1.2.1.1.3.5.5 | Configuración de Dashboard | 1d | 2022-06-22 A | 2022-06-23 A | 100% | start no earlier than 2022-08-26 |
| 170 | 1.2.1.1.3.5.6 | Exportación de dashboard PDF | 1d | 2022-06-23 A | 2022-06-24 A | 100% | start no earlier than 2022-08-29 |
| 171 | 1.2.1.1.3.5.7 | Exportación de dashboard Excel | 1d | 2022-06-24 A | 2022-06-25 A | 100% | start no earlier than 2022-08-30 |
| 172 | 1.2.1.1.3.5.8 | Paginación Dashboard | 1d | 2022-06-27 A | 2022-06-28 A | 100% | start no earlier than 2022-08-31 |
| 173 | 1.2.1.1.3.5.9 | Búsqueda Dash board | 1d | 2022-06-28 A | 2022-06-29 A | 100% | start no earlier than 2022-09-01 |
| 174 | 1.2.1.1.3.5.10 | Ventanas emergentes de validación | 1d | 2022-06-29 A | 2022-06-30 A | 100% | start no earlier than 2022-09-02 |

| ID | WBS | Task | Duration | Start | Finish | Complete | Constraint |
| --- | --- | --- | --- | --- | --- | --- | --- |
| 175 | 1.2.1.2 | **FRONT** | 22d | 2022-06-15 A | 2022-07-15 A | 100% |  |
| 176 | 1.2.1.2.1 | **Módulo de Administración** | 20d | 2022-06-15 A | 2022-07-13 A | 100% |  |
| 177 | 1.2.1.2.1.1 | **Base** | 5d | 2022-06-15 A | 2022-06-22 A | 100% |  |
| 178 | 1.2.1.2.1.1.1 | Login | 3d | 2022-06-15 A | 2022-06-18 A | 100% | start no earlier than 2022-10-04 |
| 179 | 1.2.1.2.1.1.2 | Logout | 3d | 2022-06-16 A | 2022-06-21 A | 100% | start no earlier than 2022-10-04 |
| 180 | 1.2.1.2.1.1.3 | Bloqueo de Sesión | 3d | 2022-06-17 A | 2022-06-22 A | 100% | start no earlier than 2022-09-05 |
| 181 | 1.2.1.2.1.2 | **Administración de Usuarios** | 12d | 2022-06-20 A | 2022-07-06 A | 100% |  |
| 182 | 1.2.1.2.1.2.1 | Agregar | 3d | 2022-06-20 A | 2022-06-23 A | 100% | start no earlier than 2022-09-07 |
| 183 | 1.2.1.2.1.2.2 | Pantalla Principal | 3d | 2022-06-21 A | 2022-06-24 A | 100% | start no earlier than 2022-09-08 |
| 184 | 1.2.1.2.1.2.3 | Editar | 3d | 2022-06-22 A | 2022-06-25 A | 100% | start no earlier than 2022-09-09 |
| 185 | 1.2.1.2.1.2.4 | Eliminar | 3d | 2022-06-23 A | 2022-06-28 A | 100% | start no earlier than 2022-09-12 |
| 186 | 1.2.1.2.1.2.5 | Configuración de Dashboard | 3d | 2022-06-24 A | 2022-06-29 A | 100% | start no earlier than 2022-09-13 |
| 187 | 1.2.1.2.1.2.6 | Exportación de dashboard PDF | 3d | 2022-06-27 A | 2022-06-30 A | 100% | start no earlier than 2022-09-14 |
| 188 | 1.2.1.2.1.2.7 | Exportación de dashboard Excel | 3d | 2022-06-28 A | 2022-07-01 A | 100% | start no earlier than 2022-09-15 |
| 189 | 1.2.1.2.1.2.8 | Paginación Dashboard | 3d | 2022-06-29 A | 2022-07-02 A | 100% | start no earlier than 2022-09-16 |
| 190 | 1.2.1.2.1.2.9 | Búsqueda Dash board | 3d | 2022-06-30 A | 2022-07-05 A | 100% | start no earlier than 2022-09-19 |
| 191 | 1.2.1.2.1.2.10 | Ventanas emergentes de validación | 3d | 2022-07-01 A | 2022-07-06 A | 100% | start no earlier than 2022-09-20 |
| 192 | 1.2.1.2.1.3 | **Administración de Roles y Permisos** | 20d | 2022-06-15 A | 2022-07-13 A | 100% |  |
| 193 | 1.2.1.2.1.3.1 | Pantalla Principal | 1d | 2022-07-01 A | 2022-07-02 A | 100% | start no earlier than 2022-09-21 |
| 194 | 1.2.1.2.1.3.2 | Agregar | 1d | 2022-07-04 A | 2022-07-05 A | 100% | start no earlier than 2022-09-22 |
| 195 | 1.2.1.2.1.3.3 | Editar | 1d | 2022-07-05 A | 2022-07-06 A | 100% | start no earlier than 2022-09-23 |
| 196 | 1.2.1.2.1.3.4 | Eliminar | 1d | 2022-07-06 A | 2022-07-07 A | 100% | start no earlier than 2022-09-26 |
| 197 | 1.2.1.2.1.3.5 | Configuración de Dashboard | 1d | 2022-07-07 A | 2022-07-08 A | 100% | start no earlier than 2022-09-27 |
| 198 | 1.2.1.2.1.3.6 | Exportación de dashboard PDF | 1d | 2022-07-08 A | 2022-07-09 A | 100% | start no earlier than 2022-09-28 |
| 199 | 1.2.1.2.1.3.7 | Exportación de dashboard Excel | 1d | 2022-07-11 A | 2022-07-12 A | 100% | start no earlier than 2022-09-29 |
| 200 | 1.2.1.2.1.3.8 | Paginación Dashboard | 1d | 2022-07-12 A | 2022-07-13 A | 100% | start no earlier than 2022-09-30 |
| 201 | 1.2.1.2.1.3.9 | Búsqueda Dash board | 1d | 2022-06-15 A | 2022-06-16 A | 100% | start no earlier than 2022-10-03 |
| 202 | 1.2.1.2.1.3.10 | Ventanas emergentes de validación | 1d | 2022-06-16 A | 2022-06-17 A | 100% | start no earlier than 2022-10-04 |

| ID | WBS | Task | Duration | Start | Finish | Complete | Constraint |
| --- | --- | --- | --- | --- | --- | --- | --- |
| 203 | 1.2.1.2.2 | **Módulo CPH** | 22d | 2022-06-15 A | 2022-07-15 A | 100% |  |
| 204 | 1.2.1.2.2.1 | **Coeficientes** | 22d | 2022-06-15 A | 2022-07-15 A | 100% |  |
| 205 | 1.2.1.2.2.1.1 | Pantalla principal | 1d | 2022-07-14 A | 2022-07-15 A | 100% | start no earlier than 2022-10-04 |
| 206 | 1.2.1.2.2.1.2 | Agregar | 1d | 2022-06-15 A | 2022-06-16 A | 100% | start no earlier than 2022-10-04 |
| 207 | 1.2.1.2.2.1.3 | Eliminar | 1d | 2022-06-16 A | 2022-06-17 A | 100% | start no earlier than 2022-10-04 |
| 208 | 1.2.1.2.2.1.4 | Editar | 1d | 2022-06-17 A | 2022-06-18 A | 100% | start no earlier than 2022-10-04 |
| 209 | 1.2.1.2.2.1.5 | Configuración de Dashboard | 1d | 2022-06-20 A | 2022-06-21 A | 100% | start no earlier than 2022-10-04 |
| 210 | 1.2.1.2.2.1.6 | Exportación de dashboard PDF | 1d | 2022-06-21 A | 2022-06-22 A | 100% | start no earlier than 2022-10-04 |
| 211 | 1.2.1.2.2.1.7 | Exportación de dashboard Excel | 1d | 2022-06-22 A | 2022-06-23 A | 100% | start no earlier than 2022-10-04 |
| 212 | 1.2.1.2.2.1.8 | Paginación Dashboard | 1d | 2022-06-23 A | 2022-06-24 A | 100% | start no earlier than 2022-10-04 |
| 213 | 1.2.1.2.2.1.9 | Búsqueda Dash board | 1d | 2022-06-24 A | 2022-06-25 A | 100% | start no earlier than 2022-10-04 |
| 214 | 1.2.1.2.2.1.10 | Ventanas emergentes de validación | 1d | 2022-06-27 A | 2022-06-28 A | 100% | start no earlier than 2022-10-04 |
| 215 | 1.2.1.2.2.2 | **Bienvenida** | 1d | 2022-06-28 A | 2022-06-29 A | 100% |  |
| 216 | 1.2.1.2.2.2.1 | Configuración de bienvenida | 1d | 2022-06-28 A | 2022-06-29 A | 100% | start no earlier than 2022-10-04 |
| 217 | 1.2.1.2.2.3 | **Base** | 4d | 2022-06-29 A | 2022-07-05 A | 100% |  |
| 218 | 1.2.1.2.2.3.1 | Perfil | 1d | 2022-06-29 A | 2022-06-30 A | 100% | start no earlier than 2022-10-04 |
| 219 | 1.2.1.2.2.3.2 | Pop up Notificaciones | 1d | 2022-06-30 A | 2022-07-01 A | 100% | start no earlier than 2022-10-21 |
| 220 | 1.2.1.2.2.3.3 | Contador de Notificaciones (Icono campanita) | 1d | 2022-07-01 A | 2022-07-02 A | 100% | start no earlier than 2022-10-04 |
| 221 | 1.2.1.2.2.3.4 | Bandeja entrada de Notificaciones | 1d | 2022-07-04 A | 2022-07-05 A | 100% | start no earlier than 2022-10-25 |
| 222 | 1.2.1.2.2.4 | **Administración de Municipios** | 8d | 2022-07-05 A | 2022-07-15 A | 100% |  |
| 223 | 1.2.1.2.2.4.1 | Pantalla Principal | 1d | 2022-07-05 A | 2022-07-06 A | 100% | start no earlier than 2022-10-26 |
| 224 | 1.2.1.2.2.4.2 | Eliminar | 1d | 2022-07-06 A | 2022-07-07 A | 100% | start no earlier than 2022-10-31 |
| 225 | 1.2.1.2.2.4.3 | Configuración de Dashboard | 1d | 2022-07-07 A | 2022-07-08 A | 100% | start no earlier than 2022-11-01 |
| 226 | 1.2.1.2.2.4.4 | Exportación de dashboard PDF | 1d | 2022-07-08 A | 2022-07-09 A | 100% | start no earlier than 2022-11-02 |
| 227 | 1.2.1.2.2.4.5 | Exportación de dashboard Excel | 1d | 2022-07-11 A | 2022-07-12 A | 100% | start no earlier than 2022-11-03 |
| 228 | 1.2.1.2.2.4.6 | Paginación Dashboard | 1d | 2022-07-12 A | 2022-07-13 A | 100% | start no earlier than 2022-11-04 |
| 229 | 1.2.1.2.2.4.7 | Búsqueda Dash board | 1d | 2022-07-13 A | 2022-07-14 A | 100% | start no earlier than 2022-11-07 |
| 230 | 1.2.1.2.2.4.8 | Ventanas emergentes de validación | 1d | 2022-07-14 A | 2022-07-15 A | 100% | start no earlier than 2022-11-08 |

| ID | WBS | Task | Duration | Start | Finish | Complete | Constraint |
| --- | --- | --- | --- | --- | --- | --- | --- |
| 231 | 1.2.1.2.2.5 | **Administración de Fondos** | 10d | 2022-06-15 A | 2022-06-29 A | 100% |  |
| 232 | 1.2.1.2.2.5.1 | Pantalla Principal | 1d | 2022-06-15 A | 2022-06-16 A | 100% | start no earlier than 2022-10-04 |
| 233 | 1.2.1.2.2.5.2 | Agregar | 1d | 2022-06-16 A | 2022-06-17 A | 100% | start no earlier than 2022-10-04 |
| 234 | 1.2.1.2.2.5.3 | Editar | 1d | 2022-06-17 A | 2022-06-18 A | 100% | start no earlier than 2022-10-04 |
| 235 | 1.2.1.2.2.5.4 | Eliminar | 1d | 2022-06-20 A | 2022-06-21 A | 100% | start no earlier than 2022-10-04 |
| 236 | 1.2.1.2.2.5.5 | Configuración de Dashboard | 1d | 2022-06-21 A | 2022-06-22 A | 100% | start no earlier than 2022-10-04 |
| 237 | 1.2.1.2.2.5.6 | Exportación de dashboard PDF | 1d | 2022-06-22 A | 2022-06-23 A | 100% | start no earlier than 2022-10-04 |
| 238 | 1.2.1.2.2.5.7 | Exportación de dashboard Excel | 1d | 2022-06-23 A | 2022-06-24 A | 100% | start no earlier than 2022-10-04 |
| 239 | 1.2.1.2.2.5.8 | Paginación Dashboard | 1d | 2022-06-24 A | 2022-06-25 A | 100% | start no earlier than 2022-10-04 |
| 240 | 1.2.1.2.2.5.9 | Búsqueda Dash board | 1d | 2022-06-27 A | 2022-06-28 A | 100% | start no earlier than 2022-10-04 |
| 241 | 1.2.1.2.2.5.10 | Ventanas emergentes de validación | 1d | 2022-06-28 A | 2022-06-29 A | 100% | start no earlier than 2022-10-04 |
| 242 | 1.2.2 | **sprint 5** | 21d | 2022-07-15 A | 2022-08-13 A | 100% |  |
| 243 | 1.2.2.1 | **BACK** | 21d | 2022-07-15 A | 2022-08-13 A | 100% |  |
| 244 | 1.2.2.1.1 | **Módulo CPH** | 21d | 2022-07-15 A | 2022-08-13 A | 100% |  |
| 245 | 1.2.2.1.1.1 | **Administración de UMA** | 10d | 2022-07-15 A | 2022-07-29 A | 100% |  |
| 246 | 1.2.2.1.1.1.1 | Pantalla Principal | 1d | 2022-07-15 A | 2022-07-16 A | 100% | start no earlier than 2022-09-19 |
| 247 | 1.2.2.1.1.1.2 | Agregar | 1d | 2022-07-18 A | 2022-07-19 A | 100% | start no earlier than 2022-09-20 |
| 248 | 1.2.2.1.1.1.3 | Editar | 1d | 2022-07-19 A | 2022-07-20 A | 100% | start no earlier than 2022-09-21 |
| 249 | 1.2.2.1.1.1.4 | Eliminar | 1d | 2022-07-20 A | 2022-07-21 A | 100% | start no earlier than 2022-09-22 |
| 250 | 1.2.2.1.1.1.5 | Configuración de Dashboard | 1d | 2022-07-21 A | 2022-07-22 A | 100% | start no earlier than 2022-09-23 |
| 251 | 1.2.2.1.1.1.6 | Exportación de dashboard PDF | 1d | 2022-07-22 A | 2022-07-23 A | 100% | start no earlier than 2022-09-26 |
| 252 | 1.2.2.1.1.1.7 | Exportación de dashboard Excel | 1d | 2022-07-25 A | 2022-07-26 A | 100% | start no earlier than 2022-09-27 |
| 253 | 1.2.2.1.1.1.8 | Paginación Dashboard | 1d | 2022-07-26 A | 2022-07-27 A | 100% | start no earlier than 2022-09-28 |
| 254 | 1.2.2.1.1.1.9 | Búsqueda Dashboard | 1d | 2022-07-27 A | 2022-07-28 A | 100% | start no earlier than 2022-09-29 |
| 255 | 1.2.2.1.1.1.10 | Ventanas emergentes de validación | 1d | 2022-07-28 A | 2022-07-29 A | 100% | start no earlier than 2022-07-15 |

| ID | WBS | Task | Duration | Start | Finish | Complete | Constraint |
| --- | --- | --- | --- | --- | --- | --- | --- |
| 256 | 1.2.2.1.1.2 | **Administración de Inflación Mes** | 21d | 2022-07-15 A | 2022-08-13 A | 100% |  |
| 257 | 1.2.2.1.1.2.1 | Pantalla Principal | 1d | 2022-07-29 A | 2022-07-30 A | 100% | start no earlier than 2022-07-18 |
| 258 | 1.2.2.1.1.2.2 | Plantilla Carga Masiva Inflación | 1d | 2022-08-01 A | 2022-08-02 A | 100% | start no earlier than 2022-07-19 |
| 259 | 1.2.2.1.1.2.3 | Api Plantilla caga masiva Municipio - Inflación | 1d | 2022-08-02 A | 2022-08-03 A | 100% | start no earlier than 2022-07-20 |
| 260 | 1.2.2.1.1.2.4 | Agregar | 1d | 2022-08-03 A | 2022-08-04 A | 100% | start no earlier than 2022-07-21 |
| 261 | 1.2.2.1.1.2.5 | Editar | 1d | 2022-08-04 A | 2022-08-05 A | 100% | start no earlier than 2022-07-22 |
| 262 | 1.2.2.1.1.2.6 | Eliminar | 1d | 2022-08-05 A | 2022-08-06 A | 100% | start no earlier than 2022-07-25 |
| 263 | 1.2.2.1.1.2.7 | Configuración de Dashboard | 1d | 2022-08-08 A | 2022-08-09 A | 100% | start no earlier than 2022-07-26 |
| 264 | 1.2.2.1.1.2.8 | Exportación de dashboard PDF | 1d | 2022-08-09 A | 2022-08-10 A | 100% | start no earlier than 2022-07-27 |
| 265 | 1.2.2.1.1.2.9 | Exportación de dashboard Excel | 1d | 2022-08-10 A | 2022-08-11 A | 100% | start no earlier than 2022-07-28 |
| 266 | 1.2.2.1.1.2.10 | Paginación Dashboard | 1d | 2022-08-11 A | 2022-08-12 A | 100% | start no earlier than 2022-07-29 |
| 267 | 1.2.2.1.1.2.11 | Búsqueda Dash board | 1d | 2022-08-12 A | 2022-08-13 A | 100% | start no earlier than 2022-08-01 |
| 268 | 1.2.2.1.1.2.12 | Ventanas emergentes de validación | 1d | 2022-07-15 A | 2022-07-16 A | 100% | start no earlier than 2022-08-02 |
| 269 | 1.2.2.1.1.3 | **Administración de Inflación Año** | 12d | 2022-07-18 A | 2022-08-03 A | 100% |  |
| 270 | 1.2.2.1.1.3.1 | Pantalla Principal | 1d | 2022-07-18 A | 2022-07-19 A | 100% | start no earlier than 2022-08-04 |
| 271 | 1.2.2.1.1.3.2 | Plantilla Carga Masiva Inflación | 1d | 2022-07-19 A | 2022-07-20 A | 100% | start no earlier than 2022-08-05 |
| 272 | 1.2.2.1.1.3.3 | Api Plantilla carga masiva Municipio - Inflación | 1d | 2022-07-20 A | 2022-07-21 A | 100% | start no earlier than 2022-08-08 |
| 273 | 1.2.2.1.1.3.4 | Agregar | 1d | 2022-07-21 A | 2022-07-22 A | 100% | start no earlier than 2022-08-09 |
| 274 | 1.2.2.1.1.3.5 | Editar | 1d | 2022-07-22 A | 2022-07-23 A | 100% | start no earlier than 2022-08-10 |
| 275 | 1.2.2.1.1.3.6 | Eliminar | 1d | 2022-07-25 A | 2022-07-26 A | 100% | start no earlier than 2022-08-11 |
| 276 | 1.2.2.1.1.3.7 | Configuración de Dashboard | 1d | 2022-07-26 A | 2022-07-27 A | 100% | start no earlier than 2022-08-12 |
| 277 | 1.2.2.1.1.3.8 | Exportación de dashboard PDF | 1d | 2022-07-27 A | 2022-07-28 A | 100% | start no earlier than 2022-08-15 |
| 278 | 1.2.2.1.1.3.9 | Exportación de dashboard Excel | 1d | 2022-07-28 A | 2022-07-29 A | 100% | start no earlier than 2022-08-16 |
| 279 | 1.2.2.1.1.3.10 | Paginación Dashboard | 1d | 2022-07-29 A | 2022-07-30 A | 100% | start no earlier than 2022-08-17 |
| 280 | 1.2.2.1.1.3.11 | Búsqueda Dash board | 1d | 2022-08-01 A | 2022-08-02 A | 100% | start no earlier than 2022-08-18 |
| 281 | 1.2.2.1.1.3.12 | Ventanas emergentes de validación | 1d | 2022-08-02 A | 2022-08-03 A | 100% | start no earlier than 2022-08-19 |

| ID | WBS | Task | Duration | Start | Finish | Complete | Constraint |
| --- | --- | --- | --- | --- | --- | --- | --- |
| 282 | 1.2.2.1.1.4 | **Dashboard FG** | 7d | 2022-08-03 A | 2022-08-12 A | 100% |  |
| 283 | 1.2.2.1.1.4.1 | Configuración inicial Fondo General (FG) | 1d | 2022-08-03 A | 2022-08-04 A | 100% | start no earlier than 2022-07-15 |
| 284 | 1.2.2.1.1.4.2 | Carga inicial | 1d | 2022-08-04 A | 2022-08-05 A | 100% | start no earlier than 2022-07-18 |
| 285 | 1.2.2.1.1.4.3 | Pantalla Principal | 1d | 2022-08-05 A | 2022-08-06 A | 100% | start no earlier than 2022-07-19 |
| 286 | 1.2.2.1.1.4.4 | Proceso cálculo | 1d | 2022-08-08 A | 2022-08-09 A | 100% | start no earlier than 2022-07-20 |
| 287 | 1.2.2.1.1.4.5 | Avance programático Fondo General | 1d | 2022-08-09 A | 2022-08-10 A | 100% | start no earlier than 2022-07-25 |
| 288 | 1.2.2.1.1.4.6 | Proceso Cancelación Fondo General | 1d | 2022-08-10 A | 2022-08-11 A | 100% | start no earlier than 2022-07-26 |
| 289 | 1.2.2.1.1.4.7 | Ventanas emergentes de validación | 1d | 2022-08-11 A | 2022-08-12 A | 100% | start no earlier than 2022-07-27 |
| 290 | 1.2.2.1.1.5 | **Dashboard FFM 70** | 21d | 2022-07-15 A | 2022-08-13 A | 100% |  |
| 291 | 1.2.2.1.1.5.1 | Configuración inicial Fondo Fomento Municipal 70 % (FFM 70% ) | 1d | 2022-08-12 A | 2022-08-13 A | 100% | start no earlier than 2022-07-28 |
| 292 | 1.2.2.1.1.5.2 | Carga inicial | 1d | 2022-07-15 A | 2022-07-16 A | 100% | start no earlier than 2022-07-29 |
| 293 | 1.2.2.1.1.5.3 | Pantalla Principal | 1d | 2022-07-18 A | 2022-07-19 A | 100% | start no earlier than 2022-08-01 |
| 294 | 1.2.2.1.1.5.4 | Proceso cálculo | 1d | 2022-07-19 A | 2022-07-20 A | 100% | start no earlier than 2022-08-02 |
| 295 | 1.2.2.1.1.5.5 | Track | 1d | 2022-07-20 A | 2022-07-21 A | 100% | start no earlier than 2022-08-05 |
| 296 | 1.2.2.1.1.5.6 | Ventanas emergentes de validación | 1d | 2022-07-21 A | 2022-07-22 A | 100% | start no earlier than 2022-08-08 |
| 297 | 1.2.2.1.1.5.7 | Configuración inicial Fondo Fomento Municipal 30 % (FFM 30% ) | 1d | 2022-07-22 A | 2022-07-23 A | 100% | start no earlier than 2022-08-09 |
| 298 | 1.2.2.1.1.6 | **Dashboard FFM 30** | 6d | 2022-07-25 A | 2022-08-02 A | 100% |  |
| 299 | 1.2.2.1.1.6.1 | Pantalla Principal | 1d | 2022-07-25 A | 2022-07-26 A | 100% | start no earlier than 2022-08-10 |
| 300 | 1.2.2.1.1.6.2 | Carga Inicial | 1d | 2022-07-26 A | 2022-07-27 A | 100% | start no earlier than 2022-08-11 |
| 301 | 1.2.2.1.1.6.3 | Proceso cálculo | 1d | 2022-07-27 A | 2022-07-28 A | 100% | start no earlier than 2022-08-12 |
| 302 | 1.2.2.1.1.6.4 | Track | 1d | 2022-07-28 A | 2022-07-29 A | 100% | start no earlier than 2022-08-17 |
| 303 | 1.2.2.1.1.6.5 | Ventanas emergentes de validación | 1d | 2022-07-29 A | 2022-07-30 A | 100% | start no earlier than 2022-08-18 |
| 304 | 1.2.2.1.1.6.6 | Configuración inicial Impuesto Especial sobre Producción y Servicios (IEPS) | 1d | 2022-08-01 A | 2022-08-02 A | 100% | start no earlier than 2022-08-19 |
| 305 | 1.2.2.1.1.7 | **Dashboard IEPS** | 6d | 2022-08-02 A | 2022-08-10 A | 100% |  |
| 306 | 1.2.2.1.1.7.1 | Carga inicial | 1d | 2022-08-02 A | 2022-08-03 A | 100% | start no earlier than 2022-08-22 |
| 307 | 1.2.2.1.1.7.2 | Pantalla Principal | 1d | 2022-08-03 A | 2022-08-04 A | 100% | start no earlier than 2022-08-23 |
| 308 | 1.2.2.1.1.7.3 | Proceso cálculo | 1d | 2022-08-04 A | 2022-08-05 A | 100% | start no earlier than 2022-08-24 |
| 309 | 1.2.2.1.1.7.4 | Track | 1d | 2022-08-05 A | 2022-08-06 A | 100% | start no earlier than 2022-08-29 |
| 310 | 1.2.2.1.1.7.5 | Ventanas emergentes de validación | 1d | 2022-08-08 A | 2022-08-09 A | 100% | start no earlier than 2022-08-30 |
| 311 | 1.2.2.1.1.7.6 | Configuración inicial Impuesto sobre la Venta Final de Gasolinas y Diésel (IEPS GyD) | 1d | 2022-08-09 A | 2022-08-10 A | 100% | start no earlier than 2022-08-31 |

| ID | WBS | Task | Duration | Start | Finish | Complete | Constraint |
| --- | --- | --- | --- | --- | --- | --- | --- |
| 312 | 1.2.2.1.1.8 | **Dashboard IEPS GyD** | 21d | 2022-07-15 A | 2022-08-13 A | 100% |  |
| 313 | 1.2.2.1.1.8.1 | Carga inicial | 1d | 2022-08-10 A | 2022-08-11 A | 100% | start no earlier than 2022-09-01 |
| 314 | 1.2.2.1.1.8.2 | Pantalla Principal | 1d | 2022-08-11 A | 2022-08-12 A | 100% | start no earlier than 2022-09-02 |
| 315 | 1.2.2.1.1.8.3 | Proceso cálculo | 1d | 2022-08-12 A | 2022-08-13 A | 100% | start no earlier than 2022-09-05 |
| 316 | 1.2.2.1.1.8.4 | Track | 1d | 2022-07-15 A | 2022-07-16 A | 100% | start no earlier than 2022-09-08 |
| 317 | 1.2.2.1.1.8.5 | Ventanas emergentes de validación | 1d | 2022-07-18 A | 2022-07-19 A | 100% | start no earlier than 2022-09-09 |
| 318 | 1.2.2.1.2 | **Módulo DAMOP** | 21d | 2022-07-15 A | 2022-08-13 A | 100% |  |
| 319 | 1.2.2.1.2.1 | **Administración de Municipios** | 11d | 2022-07-19 A | 2022-08-03 A | 100% |  |
| 320 | 1.2.2.1.2.1.1 | Pantalla principal | 1d | 2022-07-19 A | 2022-07-20 A | 100% | start no earlier than 2022-10-04 |
| 321 | 1.2.2.1.2.1.2 | Insertar | 1d | 2022-07-20 A | 2022-07-21 A | 100% | start no earlier than 2022-10-04 |
| 322 | 1.2.2.1.2.1.3 | Contactar Municipio | 1d | 2022-07-21 A | 2022-07-22 A | 100% | start no earlier than 2022-10-04 |
| 323 | 1.2.2.1.2.1.4 | Ver Detalles | 1d | 2022-07-22 A | 2022-07-23 A | 100% | start no earlier than 2022-10-04 |
| 324 | 1.2.2.1.2.1.5 | Configuración de Dashboard | 1d | 2022-07-25 A | 2022-07-26 A | 100% | start no earlier than 2022-10-04 |
| 325 | 1.2.2.1.2.1.6 | Exportación de dashboard Excel | 1d | 2022-07-26 A | 2022-07-27 A | 100% | start no earlier than 2022-10-04 |
| 326 | 1.2.2.1.2.1.7 | Paginación Dashboard | 1d | 2022-07-27 A | 2022-07-28 A | 100% | start no earlier than 2022-10-04 |
| 327 | 1.2.2.1.2.1.8 | Búsqueda Dash board | 1d | 2022-07-28 A | 2022-07-29 A | 100% | start no earlier than 2022-10-04 |
| 328 | 1.2.2.1.2.1.9 | Ventanas emergentes de validación | 1d | 2022-07-29 A | 2022-07-30 A | 100% | start no earlier than 2022-10-04 |
| 329 | 1.2.2.1.2.1.10 | Modificar | 1d | 2022-08-01 A | 2022-08-02 A | 100% | start no earlier than 2022-10-04 |
| 330 | 1.2.2.1.2.1.11 | Subida de Archivos | 1d | 2022-08-02 A | 2022-08-03 A | 100% | start no earlier than 2022-10-04 |
| 331 | 1.2.2.1.2.2 | **Administración de Avisos** | 21d | 2022-07-15 A | 2022-08-13 A | 100% |  |
| 332 | 1.2.2.1.2.2.1 | Pantalla principal | 1d | 2022-08-03 A | 2022-08-04 A | 100% | start no earlier than 2022-10-04 |
| 333 | 1.2.2.1.2.2.2 | Agregar | 1d | 2022-08-04 A | 2022-08-05 A | 100% | start no earlier than 2022-10-04 |
| 334 | 1.2.2.1.2.2.3 | Eliminar | 1d | 2022-08-05 A | 2022-08-06 A | 100% | start no earlier than 2022-10-04 |
| 335 | 1.2.2.1.2.2.4 | Editar | 1d | 2022-08-08 A | 2022-08-09 A | 100% | start no earlier than 2022-10-04 |
| 336 | 1.2.2.1.2.2.5 | Configuración de Dashboard | 1d | 2022-08-09 A | 2022-08-10 A | 100% | start no earlier than 2022-10-04 |
| 337 | 1.2.2.1.2.2.6 | Exportación de dashboard PDF | 1d | 2022-08-10 A | 2022-08-11 A | 100% | start no earlier than 2022-10-04 |
| 338 | 1.2.2.1.2.2.7 | Exportación de dashboard Excel | 1d | 2022-08-11 A | 2022-08-12 A | 100% | start no earlier than 2022-10-04 |
| 339 | 1.2.2.1.2.2.8 | Paginación Dashboard | 1d | 2022-08-12 A | 2022-08-13 A | 100% | start no earlier than 2022-10-04 |
| 340 | 1.2.2.1.2.2.9 | Búsqueda Dash board | 1d | 2022-07-15 A | 2022-07-16 A | 100% | start no earlier than 2022-10-04 |
| 341 | 1.2.2.1.2.2.10 | Ventanas emergentes de validación | 1d | 2022-07-18 A | 2022-07-19 A | 100% | start no earlier than 2022-10-04 |

| ID | WBS | Task | Duration | Start | Finish | Complete | Constraint |
| --- | --- | --- | --- | --- | --- | --- | --- |
| 342 | 1.2.2.1.2.3 | **Anticipo Participaciones** | 1d | 2022-07-19 A | 2022-07-20 A | 100% |  |
| 343 | 1.2.2.1.2.3.1 | Track | 1d | 2022-07-19 A | 2022-07-20 A | 100% | start no earlier than 2022-10-04 |
| 344 | 1.2.2.2 | **FRONT** | 21d | 2022-07-15 A | 2022-08-13 A | 100% |  |
| 345 | 1.2.2.2.1 | **Módulo CPH** | 21d | 2022-07-15 A | 2022-08-13 A | 100% |  |
| 346 | 1.2.2.2.1.1 | **Administración de UMA** | 10d | 2022-07-15 A | 2022-07-29 A | 100% |  |
| 347 | 1.2.2.2.1.1.1 | Pantalla Principal | 1d | 2022-07-15 A | 2022-07-16 A | 100% | start no earlier than 2022-10-04 |
| 348 | 1.2.2.2.1.1.2 | Agregar | 1d | 2022-07-18 A | 2022-07-19 A | 100% | start no earlier than 2022-10-04 |
| 349 | 1.2.2.2.1.1.3 | Editar | 1d | 2022-07-19 A | 2022-07-20 A | 100% | start no earlier than 2022-10-04 |
| 350 | 1.2.2.2.1.1.4 | Eliminar | 1d | 2022-07-20 A | 2022-07-21 A | 100% | start no earlier than 2022-10-04 |
| 351 | 1.2.2.2.1.1.5 | Configuración de Dashboard | 1d | 2022-07-21 A | 2022-07-22 A | 100% | start no earlier than 2022-10-04 |
| 352 | 1.2.2.2.1.1.6 | Exportación de dashboard PDF | 1d | 2022-07-22 A | 2022-07-23 A | 100% | start no earlier than 2022-10-04 |
| 353 | 1.2.2.2.1.1.7 | Exportación de dashboard Excel | 1d | 2022-07-25 A | 2022-07-26 A | 100% | start no earlier than 2022-10-04 |
| 354 | 1.2.2.2.1.1.8 | Paginación Dashboard | 1d | 2022-07-26 A | 2022-07-27 A | 100% | start no earlier than 2022-10-04 |
| 355 | 1.2.2.2.1.1.9 | Búsqueda Dashboard | 1d | 2022-07-27 A | 2022-07-28 A | 100% | start no earlier than 2022-10-04 |
| 356 | 1.2.2.2.1.1.10 | Ventanas emergentes de validación | 1d | 2022-07-28 A | 2022-07-29 A | 100% | start no earlier than 2022-10-04 |
| 357 | 1.2.2.2.1.2 | **Administración de Inflación Mes** | 21d | 2022-07-15 A | 2022-08-13 A | 100% |  |
| 358 | 1.2.2.2.1.2.1 | Pantalla Principal | 1d | 2022-07-29 A | 2022-07-30 A | 100% | start no earlier than 2022-10-04 |
| 359 | 1.2.2.2.1.2.2 | Plantilla Carga Masiva Inflación | 1d | 2022-08-01 A | 2022-08-02 A | 100% | start no earlier than 2022-10-04 |
| 360 | 1.2.2.2.1.2.3 | Api Plantilla caga masiva Municipio - Inflación | 1d | 2022-08-02 A | 2022-08-03 A | 100% | start no earlier than 2022-10-04 |
| 361 | 1.2.2.2.1.2.4 | Agregar | 1d | 2022-08-03 A | 2022-08-04 A | 100% | start no earlier than 2022-10-04 |
| 362 | 1.2.2.2.1.2.5 | Editar | 1d | 2022-08-04 A | 2022-08-05 A | 100% | start no earlier than 2022-10-04 |
| 363 | 1.2.2.2.1.2.6 | Eliminar | 1d | 2022-08-05 A | 2022-08-06 A | 100% | start no earlier than 2022-10-04 |
| 364 | 1.2.2.2.1.2.7 | Configuración de Dashboard | 1d | 2022-08-08 A | 2022-08-09 A | 100% | start no earlier than 2022-10-04 |
| 365 | 1.2.2.2.1.2.8 | Exportación de dashboard PDF | 1d | 2022-08-09 A | 2022-08-10 A | 100% | start no earlier than 2022-10-04 |
| 366 | 1.2.2.2.1.2.9 | Exportación de dashboard Excel | 1d | 2022-08-10 A | 2022-08-11 A | 100% | start no earlier than 2022-10-04 |
| 367 | 1.2.2.2.1.2.10 | Paginación Dashboard | 1d | 2022-08-11 A | 2022-08-12 A | 100% | start no earlier than 2022-10-04 |
| 368 | 1.2.2.2.1.2.11 | Búsqueda Dash board | 1d | 2022-08-12 A | 2022-08-13 A | 100% | start no earlier than 2022-10-04 |
| 369 | 1.2.2.2.1.2.12 | Ventanas emergentes de validación | 1d | 2022-07-15 A | 2022-07-16 A | 100% | start no earlier than 2022-10-04 |

| ID | WBS | Task | Duration | Start | Finish | Complete | Constraint |
| --- | --- | --- | --- | --- | --- | --- | --- |
| 370 | 1.2.2.2.1.3 | **Administración de Inflación Año** | 12d | 2022-07-18 A | 2022-08-03 A | 100% |  |
| 371 | 1.2.2.2.1.3.1 | Pantalla Principal | 1d | 2022-07-18 A | 2022-07-19 A | 100% | start no earlier than 2022-10-04 |
| 372 | 1.2.2.2.1.3.2 | Plantilla Carga Masiva Inflación | 1d | 2022-07-19 A | 2022-07-20 A | 100% | start no earlier than 2022-10-04 |
| 373 | 1.2.2.2.1.3.3 | Api Plantilla caga masiva Municipio - Inflación | 1d | 2022-07-20 A | 2022-07-21 A | 100% | start no earlier than 2022-10-04 |
| 374 | 1.2.2.2.1.3.4 | Agregar | 1d | 2022-07-21 A | 2022-07-22 A | 100% | start no earlier than 2022-10-04 |
| 375 | 1.2.2.2.1.3.5 | Editar | 1d | 2022-07-22 A | 2022-07-23 A | 100% | start no earlier than 2022-10-04 |
| 376 | 1.2.2.2.1.3.6 | Eliminar | 1d | 2022-07-25 A | 2022-07-26 A | 100% | start no earlier than 2022-10-04 |
| 377 | 1.2.2.2.1.3.7 | Configuración de Dashboard | 1d | 2022-07-26 A | 2022-07-27 A | 100% | start no earlier than 2022-10-04 |
| 378 | 1.2.2.2.1.3.8 | Exportación de dashboard PDF | 1d | 2022-07-27 A | 2022-07-28 A | 100% | start no earlier than 2022-10-04 |
| 379 | 1.2.2.2.1.3.9 | Exportación de dashboard Excel | 1d | 2022-07-28 A | 2022-07-29 A | 100% | start no earlier than 2022-10-04 |
| 380 | 1.2.2.2.1.3.10 | Paginación Dashboard | 1d | 2022-07-29 A | 2022-07-30 A | 100% | start no earlier than 2022-10-04 |
| 381 | 1.2.2.2.1.3.11 | Búsqueda Dash board | 1d | 2022-08-01 A | 2022-08-02 A | 100% | start no earlier than 2022-10-04 |
| 382 | 1.2.2.2.1.3.12 | Ventanas emergentes de validación | 1d | 2022-08-02 A | 2022-08-03 A | 100% | start no earlier than 2022-10-04 |
| 383 | 1.2.2.2.1.4 | **Dashboard FG** | 5d | 2022-08-03 A | 2022-08-10 A | 100% |  |
| 384 | 1.2.2.2.1.4.1 | Configuración inicial Fondo General (FG) | 1d | 2022-08-03 A | 2022-08-04 A | 100% | start no earlier than 2022-11-02 |
| 385 | 1.2.2.2.1.4.2 | Carga inicial | 1d | 2022-08-04 A | 2022-08-05 A | 100% | start no earlier than 2022-11-03 |
| 386 | 1.2.2.2.1.4.3 | Pantalla Principal | 1d | 2022-08-05 A | 2022-08-06 A | 100% | start no earlier than 2022-11-04 |
| 387 | 1.2.2.2.1.4.4 | Proceso cálculo | 1d | 2022-08-08 A | 2022-08-09 A | 100% | start no earlier than 2022-11-07 |
| 388 | 1.2.2.2.1.4.5 | Ventanas emergentes de validación | 1d | 2022-08-09 A | 2022-08-10 A | 100% | start no earlier than 2022-11-14 |
| 389 | 1.2.2.2.1.5 | **Dashboard FFM 70** | 21d | 2022-07-15 A | 2022-08-13 A | 100% |  |
| 390 | 1.2.2.2.1.5.1 | Configuración inicial Fondo Fomento Municipal 70 % (FFM 70% ) | 1d | 2022-08-10 A | 2022-08-11 A | 100% | start no earlier than 2022-10-03 |
| 391 | 1.2.2.2.1.5.2 | Carga inicial | 1d | 2022-08-11 A | 2022-08-12 A | 100% | start no earlier than 2022-10-04 |
| 392 | 1.2.2.2.1.5.3 | Pantalla Principal | 1d | 2022-08-12 A | 2022-08-13 A | 100% | start no earlier than 2022-10-05 |
| 393 | 1.2.2.2.1.5.4 | Proceso cálculo | 1d | 2022-07-15 A | 2022-07-16 A | 100% | start no earlier than 2022-10-06 |
| 394 | 1.2.2.2.1.5.5 | Track | 1d | 2022-07-18 A | 2022-07-19 A | 100% | start no earlier than 2022-10-11 |
| 395 | 1.2.2.2.1.5.6 | Ventanas emergentes de validación | 1d | 2022-07-19 A | 2022-07-20 A | 100% | start no earlier than 2022-10-12 |
| 396 | 1.2.2.2.1.5.7 | Configuración inicial Fondo Fomento Municipal 30 % (FFM 30% ) | 1d | 2022-07-20 A | 2022-07-21 A | 100% | start no earlier than 2022-10-13 |

| ID | WBS | Task | Duration | Start | Finish | Complete | Constraint |
| --- | --- | --- | --- | --- | --- | --- | --- |
| 397 | 1.2.2.2.1.6 | **Dashboard FFM 30** | 6d | 2022-07-21 A | 2022-07-29 A | 100% |  |
| 398 | 1.2.2.2.1.6.1 | Pantalla Principal | 1d | 2022-07-21 A | 2022-07-22 A | 100% | start no earlier than 2022-10-14 |
| 399 | 1.2.2.2.1.6.2 | Carga Inicial | 1d | 2022-07-22 A | 2022-07-23 A | 100% | start no earlier than 2022-10-17 |
| 400 | 1.2.2.2.1.6.3 | Proceso cálculo | 1d | 2022-07-25 A | 2022-07-26 A | 100% | start no earlier than 2022-10-18 |
| 401 | 1.2.2.2.1.6.4 | Track | 1d | 2022-07-26 A | 2022-07-27 A | 100% | start no earlier than 2022-10-21 |
| 402 | 1.2.2.2.1.6.5 | Ventanas emergentes de validación | 1d | 2022-07-27 A | 2022-07-28 A | 100% | start no earlier than 2022-10-24 |
| 403 | 1.2.2.2.1.6.6 | Configuración inicial Impuesto Especial sobre Producción y Servicios (IEPS) | 1d | 2022-07-28 A | 2022-07-29 A | 100% | start no earlier than 2022-10-25 |
| 404 | 1.2.2.2.1.7 | **Dashboard IEPS** | 6d | 2022-07-29 A | 2022-08-06 A | 100% |  |
| 405 | 1.2.2.2.1.7.1 | Carga inicial | 1d | 2022-07-29 A | 2022-07-30 A | 100% | start no earlier than 2022-10-26 |
| 406 | 1.2.2.2.1.7.2 | Pantalla Principal | 1d | 2022-08-01 A | 2022-08-02 A | 100% | start no earlier than 2022-10-27 |
| 407 | 1.2.2.2.1.7.3 | Proceso cálculo | 1d | 2022-08-02 A | 2022-08-03 A | 100% | start no earlier than 2022-10-28 |
| 408 | 1.2.2.2.1.7.4 | Track | 1d | 2022-08-03 A | 2022-08-04 A | 100% | start no earlier than 2022-11-02 |
| 409 | 1.2.2.2.1.7.5 | Ventanas emergentes de validación | 1d | 2022-08-04 A | 2022-08-05 A | 100% | start no earlier than 2022-11-03 |
| 410 | 1.2.2.2.1.7.6 | Configuración inicial Impuesto sobre la Venta Final de Gasolinas y Diésel (IEPS GyD) | 1d | 2022-08-05 A | 2022-08-06 A | 100% | start no earlier than 2022-11-04 |
| 411 | 1.2.2.2.1.8 | **Dashboard IEPS GyD** | 5d | 2022-08-08 A | 2022-08-13 A | 100% |  |
| 412 | 1.2.2.2.1.8.1 | Carga inicial | 1d | 2022-08-08 A | 2022-08-09 A | 100% | start no earlier than 2022-11-07 |
| 413 | 1.2.2.2.1.8.2 | Pantalla Principal | 1d | 2022-08-09 A | 2022-08-10 A | 100% | start no earlier than 2022-11-08 |
| 414 | 1.2.2.2.1.8.3 | Proceso cálculo | 1d | 2022-08-10 A | 2022-08-11 A | 100% | start no earlier than 2022-11-09 |
| 415 | 1.2.2.2.1.8.4 | Track | 1d | 2022-08-11 A | 2022-08-12 A | 100% | start no earlier than 2022-11-14 |
| 416 | 1.2.2.2.1.8.5 | Ventanas emergentes de validación | 1d | 2022-08-12 A | 2022-08-13 A | 100% | start no earlier than 2022-10-03 |
| 417 | 1.2.2.2.2 | **Módulo DAMOP** | 21d | 2022-07-15 A | 2022-08-13 A | 100% |  |
| 418 | 1.2.2.2.2.1 | **Base** | 4d | 2022-07-15 A | 2022-07-21 A | 100% |  |
| 419 | 1.2.2.2.2.1.1 | Pantalla Principal | 1d | 2022-07-15 A | 2022-07-16 A | 100% | start no earlier than 2022-10-10 |
| 420 | 1.2.2.2.2.1.2 | Pop up Notificaciones | 1d | 2022-07-18 A | 2022-07-19 A | 100% | start no earlier than 2022-10-11 |
| 421 | 1.2.2.2.2.1.3 | Contador de Notificaciones (Icono campanita) | 1d | 2022-07-19 A | 2022-07-20 A | 100% | start no earlier than 2022-10-04 |
| 422 | 1.2.2.2.2.1.4 | Bandeja entrada de Notificaciones | 1d | 2022-07-20 A | 2022-07-21 A | 100% | start no earlier than 2022-10-13 |

| ID | WBS | Task | Duration | Start | Finish | Complete | Constraint |
| --- | --- | --- | --- | --- | --- | --- | --- |
| 423 | 1.2.2.2.2.2 | **Administración de Municipios** | 8d | 2022-07-21 A | 2022-08-02 A | 100% |  |
| 424 | 1.2.2.2.2.2.1 | Pantalla principal | 1d | 2022-07-21 A | 2022-07-22 A | 100% | start no earlier than 2022-10-14 |
| 425 | 1.2.2.2.2.2.2 | Insertar | 1d | 2022-07-22 A | 2022-07-23 A | 100% | start no earlier than 2022-10-04 |
| 426 | 1.2.2.2.2.2.3 | Contactar Municipio | 1d | 2022-07-25 A | 2022-07-26 A | 100% | start no earlier than 2022-10-18 |
| 427 | 1.2.2.2.2.2.4 | Configuración de Dashboard | 1d | 2022-07-26 A | 2022-07-27 A | 100% | start no earlier than 2022-10-20 |
| 428 | 1.2.2.2.2.2.5 | Exportación de dashboard Excel | 1d | 2022-07-27 A | 2022-07-28 A | 100% | start no earlier than 2022-10-24 |
| 429 | 1.2.2.2.2.2.6 | Paginación Dashboard | 1d | 2022-07-28 A | 2022-07-29 A | 100% | start no earlier than 2022-10-25 |
| 430 | 1.2.2.2.2.2.7 | Búsqueda Dash board | 1d | 2022-07-29 A | 2022-07-30 A | 100% | start no earlier than 2022-10-26 |
| 431 | 1.2.2.2.2.2.8 | Ventanas emergentes de validación | 1d | 2022-08-01 A | 2022-08-02 A | 100% | start no earlier than 2022-10-27 |
| 432 | 1.2.2.2.2.3 | **Administración de Avisos** | 21d | 2022-07-15 A | 2022-08-13 A | 100% |  |
| 433 | 1.2.2.2.2.3.1 | Pantalla principal | 1d | 2022-08-02 A | 2022-08-03 A | 100% | start no earlier than 2022-10-04 |
| 434 | 1.2.2.2.2.3.2 | Agregar | 1d | 2022-08-03 A | 2022-08-04 A | 100% | start no earlier than 2022-10-04 |
| 435 | 1.2.2.2.2.3.3 | Eliminar | 1d | 2022-08-04 A | 2022-08-05 A | 100% | start no earlier than 2022-10-04 |
| 436 | 1.2.2.2.2.3.4 | Editar | 1d | 2022-08-05 A | 2022-08-06 A | 100% | start no earlier than 2022-10-04 |
| 437 | 1.2.2.2.2.3.5 | Configuración de Dashboard | 1d | 2022-08-08 A | 2022-08-09 A | 100% | start no earlier than 2022-10-04 |
| 438 | 1.2.2.2.2.3.6 | Exportación de dashboard PDF | 1d | 2022-08-09 A | 2022-08-10 A | 100% | start no earlier than 2022-10-04 |
| 439 | 1.2.2.2.2.3.7 | Exportación de dashboard Excel | 1d | 2022-08-10 A | 2022-08-11 A | 100% | start no earlier than 2022-10-04 |
| 440 | 1.2.2.2.2.3.8 | Paginación Dashboard | 1d | 2022-08-11 A | 2022-08-12 A | 100% | start no earlier than 2022-10-04 |
| 441 | 1.2.2.2.2.3.9 | Búsqueda Dash board | 1d | 2022-08-12 A | 2022-08-13 A | 100% | start no earlier than 2022-10-04 |
| 442 | 1.2.2.2.2.3.10 | Ventanas emergentes de validación | 1d | 2022-07-15 A | 2022-07-16 A | 100% | start no earlier than 2022-10-04 |
| 443 | 1.2.2.2.2.4 | **Administración de Eventos** | 10d | 2022-07-18 A | 2022-07-30 A | 100% |  |
| 444 | 1.2.2.2.2.4.1 | Pantalla principal | 1d | 2022-07-18 A | 2022-07-19 A | 100% | start no earlier than 2022-10-04 |
| 445 | 1.2.2.2.2.4.2 | Agregar | 1d | 2022-07-19 A | 2022-07-20 A | 100% | start no earlier than 2022-10-04 |
| 446 | 1.2.2.2.2.4.3 | Eliminar | 1d | 2022-07-20 A | 2022-07-21 A | 100% | start no earlier than 2022-10-04 |
| 447 | 1.2.2.2.2.4.4 | Editar | 1d | 2022-07-21 A | 2022-07-22 A | 100% | start no earlier than 2022-10-04 |
| 448 | 1.2.2.2.2.4.5 | Configuración de Dashboard | 1d | 2022-07-22 A | 2022-07-23 A | 100% | start no earlier than 2022-10-04 |
| 449 | 1.2.2.2.2.4.6 | Exportación de dashboard PDF | 1d | 2022-07-25 A | 2022-07-26 A | 100% | start no earlier than 2022-10-04 |
| 450 | 1.2.2.2.2.4.7 | Exportación de dashboard Excel | 1d | 2022-07-26 A | 2022-07-27 A | 100% | start no earlier than 2022-10-04 |
| 451 | 1.2.2.2.2.4.8 | Paginación Dashboard | 1d | 2022-07-27 A | 2022-07-28 A | 100% | start no earlier than 2022-10-04 |
| 452 | 1.2.2.2.2.4.9 | Búsqueda Dash board | 1d | 2022-07-28 A | 2022-07-29 A | 100% | start no earlier than 2022-10-04 |
| 453 | 1.2.2.2.2.4.10 | Ventanas emergentes de validación | 1d | 2022-07-29 A | 2022-07-30 A | 100% | start no earlier than 2022-10-04 |

| ID | WBS | Task | Duration | Start | Finish | Complete | Constraint |
| --- | --- | --- | --- | --- | --- | --- | --- |
| 454 | 1.2.2.2.2.5 | **Administración tasa interés BANXICO** | 6d | 2022-08-01 A | 2022-08-09 A | 100% |  |
| 455 | 1.2.2.2.2.5.1 | Pantalla principal | 1d | 2022-08-01 A | 2022-08-02 A | 100% | start no earlier than 2022-10-04 |
| 456 | 1.2.2.2.2.5.2 | Insertar | 1d | 2022-08-02 A | 2022-08-03 A | 100% | start no earlier than 2022-10-04 |
| 457 | 1.2.2.2.2.5.3 | Modificar | 1d | 2022-08-03 A | 2022-08-04 A | 100% | start no earlier than 2022-10-04 |
| 458 | 1.2.2.2.2.5.4 | Eliminar | 1d | 2022-08-04 A | 2022-08-05 A | 100% | start no earlier than 2022-10-04 |
| 459 | 1.2.2.2.2.5.5 | Visualizar | 1d | 2022-08-05 A | 2022-08-06 A | 100% | start no earlier than 2022-10-04 |
| 460 | 1.2.2.2.2.5.6 | Job de Ejecución automática | 1d | 2022-08-08 A | 2022-08-09 A | 100% | start no earlier than 2022-10-04 |
| 461 | 1.2.3 | **sprint 6** | 23d | 2022-08-15 A | 2022-09-15 A | 100% |  |
| 462 | 1.2.3.1 | **BACK** | 23d | 2022-08-15 A | 2022-09-15 A | 100% |  |
| 463 | 1.2.3.1.1 | **Módulo CPH** | 23d | 2022-08-15 A | 2022-09-15 A | 100% |  |
| 464 | 1.2.3.1.1.1 | **Administración de Crecimiento** | 12d | 2022-08-15 A | 2022-08-31 A | 100% |  |
| 465 | 1.2.3.1.1.1.1 | Pantalla Principal | 1d | 2022-08-15 A | 2022-08-16 A | 100% | start no earlier than 2022-08-22 |
| 466 | 1.2.3.1.1.1.2 | Plantilla Carga Masiva Crecimiento | 1d | 2022-08-16 A | 2022-08-17 A | 100% | start no earlier than 2022-08-23 |
| 467 | 1.2.3.1.1.1.3 | Api Plantilla caga masiva Municipio - Crecimiento | 1d | 2022-08-17 A | 2022-08-18 A | 100% | start no earlier than 2022-08-24 |
| 468 | 1.2.3.1.1.1.4 | Agregar | 1d | 2022-08-18 A | 2022-08-19 A | 100% | start no earlier than 2022-08-25 |
| 469 | 1.2.3.1.1.1.5 | Editar | 1d | 2022-08-19 A | 2022-08-20 A | 100% | start no earlier than 2022-08-26 |
| 470 | 1.2.3.1.1.1.6 | Eliminar | 1d | 2022-08-22 A | 2022-08-23 A | 100% | start no earlier than 2022-08-29 |
| 471 | 1.2.3.1.1.1.7 | Configuración de Dashboard | 1d | 2022-08-23 A | 2022-08-24 A | 100% | start no earlier than 2022-08-30 |
| 472 | 1.2.3.1.1.1.8 | Exportación de dashboard PDF | 1d | 2022-08-24 A | 2022-08-25 A | 100% | start no earlier than 2022-08-31 |
| 473 | 1.2.3.1.1.1.9 | Exportación de dashboard Excel | 1d | 2022-08-25 A | 2022-08-26 A | 100% | start no earlier than 2022-09-01 |
| 474 | 1.2.3.1.1.1.10 | Paginación Dashboard | 1d | 2022-08-26 A | 2022-08-27 A | 100% | start no earlier than 2022-09-02 |
| 475 | 1.2.3.1.1.1.11 | Búsqueda Dash board | 1d | 2022-08-29 A | 2022-08-30 A | 100% | start no earlier than 2022-09-05 |
| 476 | 1.2.3.1.1.1.12 | Ventanas emergentes de validación | 1d | 2022-08-30 A | 2022-08-31 A | 100% | start no earlier than 2022-09-06 |
| 477 | 1.2.3.1.1.2 | **Administración de Facturación** | 10d | 2022-08-31 A | 2022-09-14 A | 100% |  |
| 478 | 1.2.3.1.1.2.1 | Pantalla Principal | 1d | 2022-08-31 A | 2022-09-01 A | 100% | start no earlier than 2022-09-07 |
| 479 | 1.2.3.1.1.2.2 | Agregar | 1d | 2022-09-01 A | 2022-09-02 A | 100% | start no earlier than 2022-09-08 |
| 480 | 1.2.3.1.1.2.3 | Editar | 1d | 2022-09-02 A | 2022-09-03 A | 100% | start no earlier than 2022-09-09 |
| 481 | 1.2.3.1.1.2.4 | Eliminar | 1d | 2022-09-05 A | 2022-09-06 A | 100% | start no earlier than 2022-09-12 |
| 482 | 1.2.3.1.1.2.5 | Configuración de Dashboard | 1d | 2022-09-06 A | 2022-09-07 A | 100% | start no earlier than 2022-09-13 |
| 483 | 1.2.3.1.1.2.6 | Exportación de dashboard PDF | 1d | 2022-09-07 A | 2022-09-08 A | 100% | start no earlier than 2022-09-14 |
| 484 | 1.2.3.1.1.2.7 | Exportación de dashboard Excel | 1d | 2022-09-08 A | 2022-09-09 A | 100% | start no earlier than 2022-09-15 |
| 485 | 1.2.3.1.1.2.8 | Paginación Dashboard | 1d | 2022-09-09 A | 2022-09-10 A | 100% | start no earlier than 2022-09-16 |
| 486 | 1.2.3.1.1.2.9 | Búsqueda Dash board | 1d | 2022-09-12 A | 2022-09-13 A | 100% | start no earlier than 2022-09-19 |
| 487 | 1.2.3.1.1.2.10 | Ventanas emergentes de validación | 1d | 2022-09-13 A | 2022-09-14 A | 100% | start no earlier than 2022-09-20 |

| ID | WBS | Task | Duration | Start | Finish | Complete | Constraint |
| --- | --- | --- | --- | --- | --- | --- | --- |
| 488 | 1.2.3.1.1.3 | **Administración de Recaudación** | 23d | 2022-08-15 A | 2022-09-15 A | 100% |  |
| 489 | 1.2.3.1.1.3.1 | Pantalla Principal | 1d | 2022-09-14 A | 2022-09-15 A | 100% | start no earlier than 2022-09-21 |
| 490 | 1.2.3.1.1.3.2 | Plantilla Carga Masiva Recaudación | 1d | 2022-08-15 A | 2022-08-16 A | 100% | start no earlier than 2022-09-22 |
| 491 | 1.2.3.1.1.3.3 | Api Plantilla caga masiva Municipio - Recaudación | 1d | 2022-08-16 A | 2022-08-17 A | 100% | start no earlier than 2022-09-23 |
| 492 | 1.2.3.1.1.3.4 | Agregar | 1d | 2022-08-17 A | 2022-08-18 A | 100% | start no earlier than 2022-09-26 |
| 493 | 1.2.3.1.1.3.5 | Editar | 1d | 2022-08-18 A | 2022-08-19 A | 100% | start no earlier than 2022-09-27 |
| 494 | 1.2.3.1.1.3.6 | Eliminar | 1d | 2022-08-19 A | 2022-08-20 A | 100% | start no earlier than 2022-09-28 |
| 495 | 1.2.3.1.1.3.7 | Configuración de Dashboard | 1d | 2022-08-22 A | 2022-08-23 A | 100% | start no earlier than 2022-09-29 |
| 496 | 1.2.3.1.1.3.8 | Exportación de dashboard PDF | 1d | 2022-08-23 A | 2022-08-24 A | 100% | start no earlier than 2022-07-15 |
| 497 | 1.2.3.1.1.3.9 | Exportación de dashboard Excel | 1d | 2022-08-24 A | 2022-08-25 A | 100% | start no earlier than 2022-07-18 |
| 498 | 1.2.3.1.1.3.10 | Paginación Dashboard | 1d | 2022-08-25 A | 2022-08-26 A | 100% | start no earlier than 2022-07-19 |
| 499 | 1.2.3.1.1.3.11 | Búsqueda Dash board | 1d | 2022-08-26 A | 2022-08-27 A | 100% | start no earlier than 2022-07-20 |
| 500 | 1.2.3.1.1.3.12 | Ventanas emergentes de validación | 1d | 2022-08-29 A | 2022-08-30 A | 100% | start no earlier than 2022-07-21 |
| 501 | 1.2.3.1.1.4 | **Administración de Población** | 10d | 2022-08-30 A | 2022-09-13 A | 100% |  |
| 502 | 1.2.3.1.1.4.1 | Pantalla Principal | 1d | 2022-08-30 A | 2022-08-31 A | 100% | start no earlier than 2022-07-22 |
| 503 | 1.2.3.1.1.4.2 | Agregar | 1d | 2022-08-31 A | 2022-09-01 A | 100% | start no earlier than 2022-07-25 |
| 504 | 1.2.3.1.1.4.3 | Editar | 1d | 2022-09-01 A | 2022-09-02 A | 100% | start no earlier than 2022-07-26 |
| 505 | 1.2.3.1.1.4.4 | Eliminar | 1d | 2022-09-02 A | 2022-09-03 A | 100% | start no earlier than 2022-07-27 |
| 506 | 1.2.3.1.1.4.5 | Configuración de Dashboard | 1d | 2022-09-05 A | 2022-09-06 A | 100% | start no earlier than 2022-07-28 |
| 507 | 1.2.3.1.1.4.6 | Exportación de dashboard PDF | 1d | 2022-09-06 A | 2022-09-07 A | 100% | start no earlier than 2022-07-29 |
| 508 | 1.2.3.1.1.4.7 | Exportación de dashboard Excel | 1d | 2022-09-07 A | 2022-09-08 A | 100% | start no earlier than 2022-08-01 |
| 509 | 1.2.3.1.1.4.8 | Paginación Dashboard | 1d | 2022-09-08 A | 2022-09-09 A | 100% | start no earlier than 2022-08-02 |
| 510 | 1.2.3.1.1.4.9 | Búsqueda Dash board | 1d | 2022-09-09 A | 2022-09-10 A | 100% | start no earlier than 2022-08-03 |
| 511 | 1.2.3.1.1.4.10 | Ventanas emergentes de validación | 1d | 2022-09-12 A | 2022-09-13 A | 100% | start no earlier than 2022-08-04 |

| ID | WBS | Task | Duration | Start | Finish | Complete | Constraint |
| --- | --- | --- | --- | --- | --- | --- | --- |
| 512 | 1.2.3.1.1.5 | **Dashboard ISR Bienes Inmuebles** | 6d | 2022-08-15 A | 2022-08-23 A | 100% |  |
| 513 | 1.2.3.1.1.5.1 | Pantalla Principal | 1d | 2022-08-15 A | 2022-08-16 A | 100% | start no earlier than 2022-09-12 |
| 514 | 1.2.3.1.1.5.2 | Carga inicial | 1d | 2022-08-16 A | 2022-08-17 A | 100% | start no earlier than 2022-09-13 |
| 515 | 1.2.3.1.1.5.3 | Configuración inicial ISR Bienes Inmuebles | 1d | 2022-08-17 A | 2022-08-18 A | 100% | start no earlier than 2022-09-14 |
| 516 | 1.2.3.1.1.5.4 | Proceso cálculo | 1d | 2022-08-18 A | 2022-08-19 A | 100% | start no earlier than 2022-09-15 |
| 517 | 1.2.3.1.1.5.5 | Track | 1d | 2022-08-19 A | 2022-08-20 A | 100% | start no earlier than 2022-09-20 |
| 518 | 1.2.3.1.1.5.6 | Ventanas emergentes de validación | 1d | 2022-08-22 A | 2022-08-23 A | 100% | start no earlier than 2022-09-21 |
| 519 | 1.2.3.1.1.6 | **Dashboard FOFIR** | 6d | 2022-08-23 A | 2022-08-31 A | 100% |  |
| 520 | 1.2.3.1.1.6.1 | Pantalla Principal | 1d | 2022-08-23 A | 2022-08-24 A | 100% | start no earlier than 2022-09-22 |
| 521 | 1.2.3.1.1.6.2 | Carga inicial | 1d | 2022-08-24 A | 2022-08-25 A | 100% | start no earlier than 2022-09-23 |
| 522 | 1.2.3.1.1.6.3 | Configuración inicial Fondo de Fiscalización y Recaudación (FOFIR) | 1d | 2022-08-25 A | 2022-08-26 A | 100% | start no earlier than 2022-09-26 |
| 523 | 1.2.3.1.1.6.4 | Proceso cálculo | 1d | 2022-08-26 A | 2022-08-27 A | 100% | start no earlier than 2022-09-27 |
| 524 | 1.2.3.1.1.6.5 | Track | 1d | 2022-08-29 A | 2022-08-30 A | 100% | start no earlier than 2022-07-15 |
| 525 | 1.2.3.1.1.6.6 | Ventanas emergentes de validación | 1d | 2022-08-30 A | 2022-08-31 A | 100% | start no earlier than 2022-07-18 |
| 526 | 1.2.3.1.1.7 | **Dashboard ISAN** | 8d | 2022-08-31 A | 2022-09-10 A | 100% |  |
| 527 | 1.2.3.1.1.7.1 | Pantalla Principal | 1d | 2022-08-31 A | 2022-09-01 A | 100% | start no earlier than 2022-07-19 |
| 528 | 1.2.3.1.1.7.2 | Plantilla Carga Masiva ISAN | 1d | 2022-09-01 A | 2022-09-02 A | 100% | start no earlier than 2022-07-20 |
| 529 | 1.2.3.1.1.7.3 | Api Plantilla caga masiva Municipio - ISAN | 1d | 2022-09-02 A | 2022-09-03 A | 100% | start no earlier than 2022-07-21 |
| 530 | 1.2.3.1.1.7.4 | Carga inicial | 1d | 2022-09-05 A | 2022-09-06 A | 100% | start no earlier than 2022-07-22 |
| 531 | 1.2.3.1.1.7.5 | Configuración inicial Impuesto sobre Automóviles Nuevos (ISAN) | 1d | 2022-09-06 A | 2022-09-07 A | 100% | start no earlier than 2022-07-25 |
| 532 | 1.2.3.1.1.7.6 | Proceso cálculo | 1d | 2022-09-07 A | 2022-09-08 A | 100% | start no earlier than 2022-07-26 |
| 533 | 1.2.3.1.1.7.7 | Track | 1d | 2022-09-08 A | 2022-09-09 A | 100% | start no earlier than 2022-07-29 |
| 534 | 1.2.3.1.1.7.8 | Ventanas emergentes de validación | 1d | 2022-09-09 A | 2022-09-10 A | 100% | start no earlier than 2022-08-01 |
| 535 | 1.2.3.1.2 | **Módulo DAMOP** | 23d | 2022-08-15 A | 2022-09-15 A | 100% |  |
| 536 | 1.2.3.1.2.1 | **Administración de Eventos** | 23d | 2022-08-15 A | 2022-09-15 A | 100% |  |
| 537 | 1.2.3.1.2.1.1 | Pantalla principal | 1d | 2022-09-12 A | 2022-09-13 A | 100% | start no earlier than 2022-10-04 |
| 538 | 1.2.3.1.2.1.2 | Agregar | 1d | 2022-09-13 A | 2022-09-14 A | 100% | start no earlier than 2022-10-04 |
| 539 | 1.2.3.1.2.1.3 | Eliminar | 1d | 2022-09-14 A | 2022-09-15 A | 100% | start no earlier than 2022-10-04 |
| 540 | 1.2.3.1.2.1.4 | Editar | 1d | 2022-08-15 A | 2022-08-16 A | 100% | start no earlier than 2022-10-04 |
| 541 | 1.2.3.1.2.1.5 | Configuración de Dashboard | 1d | 2022-08-16 A | 2022-08-17 A | 100% | start no earlier than 2022-10-04 |
| 542 | 1.2.3.1.2.1.6 | Exportación de dashboard PDF | 1d | 2022-08-17 A | 2022-08-18 A | 100% | start no earlier than 2022-10-04 |
| 543 | 1.2.3.1.2.1.7 | Exportación de dashboard Excel | 1d | 2022-08-18 A | 2022-08-19 A | 100% | start no earlier than 2022-10-04 |
| 544 | 1.2.3.1.2.1.8 | Paginación Dashboard | 1d | 2022-08-19 A | 2022-08-20 A | 100% | start no earlier than 2022-10-04 |
| 545 | 1.2.3.1.2.1.9 | Búsqueda Dash board | 1d | 2022-08-22 A | 2022-08-23 A | 100% | start no earlier than 2022-10-04 |
| 546 | 1.2.3.1.2.1.10 | Ventanas emergentes de validación | 1d | 2022-08-23 A | 2022-08-24 A | 100% | start no earlier than 2022-10-04 |

| ID | WBS | Task | Duration | Start | Finish | Complete | Constraint |
| --- | --- | --- | --- | --- | --- | --- | --- |
| 547 | 1.2.3.1.2.2 | **Dashboard Participaciones Federales** | 1d | 2022-08-24 A | 2022-08-25 A | 100% |  |
| 548 | 1.2.3.1.2.2.1 | Track | 1d | 2022-08-24 A | 2022-08-25 A | 100% | start no earlier than 2022-10-04 |
| 549 | 1.2.3.1.2.3 | **Dashboard ISN** | 1d | 2022-08-25 A | 2022-08-26 A | 100% |  |
| 550 | 1.2.3.1.2.3.1 | Track | 1d | 2022-08-25 A | 2022-08-26 A | 100% | start no earlier than 2022-10-04 |
| 551 | 1.2.3.1.2.4 | **Administración de Fondo ultra crecimiento Zona metropolitana y no Metropolitana** | 1d | 2022-08-26 A | 2022-08-27 A | 100% |  |
| 552 | 1.2.3.1.2.4.1 | Ventanas emergentes de Track por municipio | 1d | 2022-08-26 A | 2022-08-27 A | 100% | start no earlier than 2022-10-04 |
| 553 | 1.2.3.1.2.5 | **Administración de Fondo descentralizado Zona Metropolitana y no Metropolitana** | 1d | 2022-08-29 A | 2022-08-30 A | 100% |  |
| 554 | 1.2.3.1.2.5.1 | Ventanas emergentes de Track por municipio | 1d | 2022-08-29 A | 2022-08-30 A | 100% | start no earlier than 2022-10-04 |
| 555 | 1.2.3.2 | **FRONT** | 23d | 2022-08-15 A | 2022-09-15 A | 100% |  |
| 556 | 1.2.3.2.1 | **Módulo CPH** | 23d | 2022-08-15 A | 2022-09-15 A | 100% |  |
| 557 | 1.2.3.2.1.1 | **Administración de Crecimiento** | 12d | 2022-08-15 A | 2022-08-31 A | 100% |  |
| 558 | 1.2.3.2.1.1.1 | Pantalla Principal | 1d | 2022-08-15 A | 2022-08-16 A | 100% | start no earlier than 2022-10-04 |
| 559 | 1.2.3.2.1.1.2 | Plantilla Carga Masiva Crecimiento | 1d | 2022-08-16 A | 2022-08-17 A | 100% | start no earlier than 2022-10-04 |
| 560 | 1.2.3.2.1.1.3 | Api Plantilla caga masiva Municipio - Crecimiento | 1d | 2022-08-17 A | 2022-08-18 A | 100% | start no earlier than 2022-10-04 |
| 561 | 1.2.3.2.1.1.4 | Agregar | 1d | 2022-08-18 A | 2022-08-19 A | 100% | start no earlier than 2022-10-04 |
| 562 | 1.2.3.2.1.1.5 | Editar | 1d | 2022-08-19 A | 2022-08-20 A | 100% | start no earlier than 2022-10-04 |
| 563 | 1.2.3.2.1.1.6 | Eliminar | 1d | 2022-08-22 A | 2022-08-23 A | 100% | start no earlier than 2022-10-04 |
| 564 | 1.2.3.2.1.1.7 | Configuración de Dashboard | 1d | 2022-08-23 A | 2022-08-24 A | 100% | start no earlier than 2022-10-04 |
| 565 | 1.2.3.2.1.1.8 | Exportación de dashboard PDF | 1d | 2022-08-24 A | 2022-08-25 A | 100% | start no earlier than 2022-10-04 |
| 566 | 1.2.3.2.1.1.9 | Exportación de dashboard Excel | 1d | 2022-08-25 A | 2022-08-26 A | 100% | start no earlier than 2022-10-04 |
| 567 | 1.2.3.2.1.1.10 | Paginación Dashboard | 1d | 2022-08-26 A | 2022-08-27 A | 100% | start no earlier than 2022-10-04 |
| 568 | 1.2.3.2.1.1.11 | Búsqueda Dash board | 1d | 2022-08-29 A | 2022-08-30 A | 100% | start no earlier than 2022-10-04 |
| 569 | 1.2.3.2.1.1.12 | Ventanas emergentes de validación | 1d | 2022-08-30 A | 2022-08-31 A | 100% | start no earlier than 2022-10-04 |
| 570 | 1.2.3.2.1.2 | **Administración de Facturación** | 10d | 2022-08-31 A | 2022-09-14 A | 100% |  |
| 571 | 1.2.3.2.1.2.1 | Pantalla Principal | 1d | 2022-08-31 A | 2022-09-01 A | 100% | start no earlier than 2022-10-04 |
| 572 | 1.2.3.2.1.2.2 | Agregar | 1d | 2022-09-01 A | 2022-09-02 A | 100% | start no earlier than 2022-10-04 |
| 573 | 1.2.3.2.1.2.3 | Editar | 1d | 2022-09-02 A | 2022-09-03 A | 100% | start no earlier than 2022-10-04 |
| 574 | 1.2.3.2.1.2.4 | Eliminar | 1d | 2022-09-05 A | 2022-09-06 A | 100% | start no earlier than 2022-10-04 |
| 575 | 1.2.3.2.1.2.5 | Configuración de Dashboard | 1d | 2022-09-06 A | 2022-09-07 A | 100% | start no earlier than 2022-10-04 |
| 576 | 1.2.3.2.1.2.6 | Exportación de dashboard PDF | 1d | 2022-09-07 A | 2022-09-08 A | 100% | start no earlier than 2022-10-04 |
| 577 | 1.2.3.2.1.2.7 | Exportación de dashboard Excel | 1d | 2022-09-08 A | 2022-09-09 A | 100% | start no earlier than 2022-10-04 |
| 578 | 1.2.3.2.1.2.8 | Paginación Dashboard | 1d | 2022-09-09 A | 2022-09-10 A | 100% | start no earlier than 2022-10-04 |
| 579 | 1.2.3.2.1.2.9 | Búsqueda Dash board | 1d | 2022-09-12 A | 2022-09-13 A | 100% | start no earlier than 2022-10-04 |
| 580 | 1.2.3.2.1.2.10 | Ventanas emergentes de validación | 1d | 2022-09-13 A | 2022-09-14 A | 100% | start no earlier than 2022-10-04 |

| ID | WBS | Task | Duration | Start | Finish | Complete | Constraint |
| --- | --- | --- | --- | --- | --- | --- | --- |
| 581 | 1.2.3.2.1.3 | **Administración de Recaudación** | 23d | 2022-08-15 A | 2022-09-15 A | 100% |  |
| 582 | 1.2.3.2.1.3.1 | Pantalla Principal | 1d | 2022-09-14 A | 2022-09-15 A | 100% | start no earlier than 2022-10-04 |
| 583 | 1.2.3.2.1.3.2 | Plantilla Carga Masiva Recaudación | 1d | 2022-08-15 A | 2022-08-16 A | 100% | start no earlier than 2022-10-04 |
| 584 | 1.2.3.2.1.3.3 | Api Plantilla caga masiva Municipio - Recaudación | 1d | 2022-08-16 A | 2022-08-17 A | 100% | start no earlier than 2022-10-04 |
| 585 | 1.2.3.2.1.3.4 | Agregar | 1d | 2022-08-17 A | 2022-08-18 A | 100% | start no earlier than 2022-10-04 |
| 586 | 1.2.3.2.1.3.5 | Editar | 1d | 2022-08-18 A | 2022-08-19 A | 100% | start no earlier than 2022-10-04 |
| 587 | 1.2.3.2.1.3.6 | Eliminar | 1d | 2022-08-19 A | 2022-08-20 A | 100% | start no earlier than 2022-10-04 |
| 588 | 1.2.3.2.1.3.7 | Configuración de Dashboard | 1d | 2022-08-22 A | 2022-08-23 A | 100% | start no earlier than 2022-10-04 |
| 589 | 1.2.3.2.1.3.8 | Exportación de dashboard PDF | 1d | 2022-08-23 A | 2022-08-24 A | 100% | start no earlier than 2022-10-04 |
| 590 | 1.2.3.2.1.3.9 | Exportación de dashboard Excel | 1d | 2022-08-24 A | 2022-08-25 A | 100% | start no earlier than 2022-10-04 |
| 591 | 1.2.3.2.1.3.10 | Paginación Dashboard | 1d | 2022-08-25 A | 2022-08-26 A | 100% | start no earlier than 2022-10-04 |
| 592 | 1.2.3.2.1.3.11 | Búsqueda Dash board | 1d | 2022-08-26 A | 2022-08-27 A | 100% | start no earlier than 2022-10-04 |
| 593 | 1.2.3.2.1.3.12 | Ventanas emergentes de validación | 1d | 2022-08-29 A | 2022-08-30 A | 100% | start no earlier than 2022-10-04 |
| 594 | 1.2.3.2.1.4 | **Administración de Población** | 10d | 2022-08-30 A | 2022-09-13 A | 100% |  |
| 595 | 1.2.3.2.1.4.1 | Pantalla Principal | 1d | 2022-08-30 A | 2022-08-31 A | 100% | start no earlier than 2022-10-04 |
| 596 | 1.2.3.2.1.4.2 | Agregar | 1d | 2022-08-31 A | 2022-09-01 A | 100% | start no earlier than 2022-10-04 |
| 597 | 1.2.3.2.1.4.3 | Editar | 1d | 2022-09-01 A | 2022-09-02 A | 100% | start no earlier than 2022-10-04 |
| 598 | 1.2.3.2.1.4.4 | Eliminar | 1d | 2022-09-02 A | 2022-09-03 A | 100% | start no earlier than 2022-10-04 |
| 599 | 1.2.3.2.1.4.5 | Configuración de Dashboard | 1d | 2022-09-05 A | 2022-09-06 A | 100% | start no earlier than 2022-10-04 |
| 600 | 1.2.3.2.1.4.6 | Exportación de dashboard PDF | 1d | 2022-09-06 A | 2022-09-07 A | 100% | start no earlier than 2022-10-04 |
| 601 | 1.2.3.2.1.4.7 | Exportación de dashboard Excel | 1d | 2022-09-07 A | 2022-09-08 A | 100% | start no earlier than 2022-10-04 |
| 602 | 1.2.3.2.1.4.8 | Paginación Dashboard | 1d | 2022-09-08 A | 2022-09-09 A | 100% | start no earlier than 2022-10-04 |
| 603 | 1.2.3.2.1.4.9 | Búsqueda Dash board | 1d | 2022-09-09 A | 2022-09-10 A | 100% | start no earlier than 2022-10-04 |
| 604 | 1.2.3.2.1.4.10 | Ventanas emergentes de validación | 1d | 2022-09-12 A | 2022-09-13 A | 100% | start no earlier than 2022-10-04 |

| ID | WBS | Task | Duration | Start | Finish | Complete | Constraint |
| --- | --- | --- | --- | --- | --- | --- | --- |
| 605 | 1.2.3.2.1.5 | **Dashboard ISR Bienes Inmuebles** | 7d | 2022-08-15 A | 2022-08-24 A | 100% |  |
| 606 | 1.2.3.2.1.5.1 | Pantalla Principal | 1d | 2022-08-15 A | 2022-08-16 A | 100% | start no earlier than 2022-10-04 |
| 607 | 1.2.3.2.1.5.2 | Carga inicial | 1d | 2022-08-16 A | 2022-08-17 A | 100% | start no earlier than 2022-10-05 |
| 608 | 1.2.3.2.1.5.3 | Configuración inicial ISR Bienes Inmuebles | 1d | 2022-08-17 A | 2022-08-18 A | 100% | start no earlier than 2022-10-06 |
| 609 | 1.2.3.2.1.5.4 | Proceso cálculo | 1d | 2022-08-18 A | 2022-08-19 A | 100% | start no earlier than 2022-10-07 |
| 610 | 1.2.3.2.1.5.5 | Proceso autorización | 1d | 2022-08-19 A | 2022-08-20 A | 100% | start no earlier than 2022-10-10 |
| 611 | 1.2.3.2.1.5.6 | Track | 1d | 2022-08-22 A | 2022-08-23 A | 100% | start no earlier than 2022-10-12 |
| 612 | 1.2.3.2.1.5.7 | Ventanas emergentes de validación | 1d | 2022-08-23 A | 2022-08-24 A | 100% | start no earlier than 2022-10-13 |
| 613 | 1.2.3.2.1.6 | **Dashboard FOFIR** | 6d | 2022-08-24 A | 2022-09-01 A | 100% |  |
| 614 | 1.2.3.2.1.6.1 | Pantalla Principal | 1d | 2022-08-24 A | 2022-08-25 A | 100% | start no earlier than 2022-10-14 |
| 615 | 1.2.3.2.1.6.2 | Carga inicial | 1d | 2022-08-25 A | 2022-08-26 A | 100% | start no earlier than 2022-10-17 |
| 616 | 1.2.3.2.1.6.3 | Configuración inicial Fondo de Fiscalización y Recaudación (FOFIR) | 1d | 2022-08-26 A | 2022-08-27 A | 100% | start no earlier than 2022-10-18 |
| 617 | 1.2.3.2.1.6.4 | Proceso cálculo | 1d | 2022-08-29 A | 2022-08-30 A | 100% | start no earlier than 2022-10-19 |
| 618 | 1.2.3.2.1.6.5 | Track | 1d | 2022-08-30 A | 2022-08-31 A | 100% | start no earlier than 2022-10-24 |
| 619 | 1.2.3.2.1.6.6 | Ventanas emergentes de validación | 1d | 2022-08-31 A | 2022-09-01 A | 100% | start no earlier than 2022-10-25 |
| 620 | 1.2.3.2.1.7 | **Dashboard ISAN** | 8d | 2022-09-01 A | 2022-09-13 A | 100% |  |
| 621 | 1.2.3.2.1.7.1 | Pantalla Principal | 1d | 2022-09-01 A | 2022-09-02 A | 100% | start no earlier than 2022-10-26 |
| 622 | 1.2.3.2.1.7.2 | Plantilla Carga Masiva ISAN | 1d | 2022-09-02 A | 2022-09-03 A | 100% | start no earlier than 2022-10-04 |
| 623 | 1.2.3.2.1.7.3 | Api Plantilla caga masiva Municipio - ISAN | 1d | 2022-09-05 A | 2022-09-06 A | 100% | start no earlier than 2022-10-04 |
| 624 | 1.2.3.2.1.7.4 | Carga inicial | 1d | 2022-09-06 A | 2022-09-07 A | 100% | start no earlier than 2022-10-31 |
| 625 | 1.2.3.2.1.7.5 | Configuración inicial Impuesto sobre Automóviles Nuevos (ISAN) | 1d | 2022-09-07 A | 2022-09-08 A | 100% | start no earlier than 2022-11-01 |
| 626 | 1.2.3.2.1.7.6 | Proceso cálculo | 1d | 2022-09-08 A | 2022-09-09 A | 100% | start no earlier than 2022-11-02 |
| 627 | 1.2.3.2.1.7.7 | Track | 1d | 2022-09-09 A | 2022-09-10 A | 100% | start no earlier than 2022-11-07 |
| 628 | 1.2.3.2.1.7.8 | Ventanas emergentes de validación | 1d | 2022-09-12 A | 2022-09-13 A | 100% | start no earlier than 2022-11-08 |

| ID | WBS | Task | Duration | Start | Finish | Complete | Constraint |
| --- | --- | --- | --- | --- | --- | --- | --- |
| 629 | 1.2.3.2.2 | **Módulo DAMOP** | 23d | 2022-08-15 A | 2022-09-15 A | 100% |  |
| 630 | 1.2.3.2.2.1 | **Base** | 5d | 2022-08-15 A | 2022-08-20 A | 100% |  |
| 631 | 1.2.3.2.2.1.1 | Perfil | 1d | 2022-08-15 A | 2022-08-16 A | 100% |  |
| 632 | 1.2.3.2.2.1.2 | Pantalla Principal | 1d | 2022-08-16 A | 2022-08-17 A | 100% | start no earlier than 2022-10-10 |
| 633 | 1.2.3.2.2.1.3 | Pop up Notificaciones | 1d | 2022-08-17 A | 2022-08-18 A | 100% | start no earlier than 2022-10-11 |
| 634 | 1.2.3.2.2.1.4 | Contador de Notificaciones (Icono campanita) | 1d | 2022-08-18 A | 2022-08-19 A | 100% | start no earlier than 2022-10-04 |
| 635 | 1.2.3.2.2.1.5 | Bandeja entrada de Notificaciones | 1d | 2022-08-19 A | 2022-08-20 A | 100% | start no earlier than 2022-10-13 |
| 636 | 1.2.3.2.2.2 | **Administración de Municipios** | 8d | 2022-08-22 A | 2022-09-01 A | 100% |  |
| 637 | 1.2.3.2.2.2.1 | Pantalla principal | 1d | 2022-08-22 A | 2022-08-23 A | 100% | start no earlier than 2022-10-14 |
| 638 | 1.2.3.2.2.2.2 | Insertar | 1d | 2022-08-23 A | 2022-08-24 A | 100% | start no earlier than 2022-10-04 |
| 639 | 1.2.3.2.2.2.3 | Contactar Municipio | 1d | 2022-08-24 A | 2022-08-25 A | 100% | start no earlier than 2022-10-18 |
| 640 | 1.2.3.2.2.2.4 | Configuración de Dashboard | 1d | 2022-08-25 A | 2022-08-26 A | 100% | start no earlier than 2022-10-20 |
| 641 | 1.2.3.2.2.2.5 | Exportación de dashboard Excel | 1d | 2022-08-26 A | 2022-08-27 A | 100% | start no earlier than 2022-10-24 |
| 642 | 1.2.3.2.2.2.6 | Paginación Dashboard | 1d | 2022-08-29 A | 2022-08-30 A | 100% | start no earlier than 2022-10-25 |
| 643 | 1.2.3.2.2.2.7 | Búsqueda Dash board | 1d | 2022-08-30 A | 2022-08-31 A | 100% | start no earlier than 2022-10-26 |
| 644 | 1.2.3.2.2.2.8 | Ventanas emergentes de validación | 1d | 2022-08-31 A | 2022-09-01 A | 100% | start no earlier than 2022-10-27 |
| 645 | 1.2.3.2.2.3 | **Administración de Avisos** | 10d | 2022-09-01 A | 2022-09-15 A | 100% |  |
| 646 | 1.2.3.2.2.3.1 | Pantalla principal | 1d | 2022-09-01 A | 2022-09-02 A | 100% | start no earlier than 2022-10-04 |
| 647 | 1.2.3.2.2.3.2 | Agregar | 1d | 2022-09-02 A | 2022-09-03 A | 100% | start no earlier than 2022-10-04 |
| 648 | 1.2.3.2.2.3.3 | Eliminar | 1d | 2022-09-05 A | 2022-09-06 A | 100% | start no earlier than 2022-10-04 |
| 649 | 1.2.3.2.2.3.4 | Editar | 1d | 2022-09-06 A | 2022-09-07 A | 100% | start no earlier than 2022-10-04 |
| 650 | 1.2.3.2.2.3.5 | Configuración de Dashboard | 1d | 2022-09-07 A | 2022-09-08 A | 100% | start no earlier than 2022-10-04 |
| 651 | 1.2.3.2.2.3.6 | Exportación de dashboard PDF | 1d | 2022-09-08 A | 2022-09-09 A | 100% | start no earlier than 2022-10-04 |
| 652 | 1.2.3.2.2.3.7 | Exportación de dashboard Excel | 1d | 2022-09-09 A | 2022-09-10 A | 100% | start no earlier than 2022-10-04 |
| 653 | 1.2.3.2.2.3.8 | Paginación Dashboard | 1d | 2022-09-12 A | 2022-09-13 A | 100% | start no earlier than 2022-10-04 |
| 654 | 1.2.3.2.2.3.9 | Búsqueda Dash board | 1d | 2022-09-13 A | 2022-09-14 A | 100% | start no earlier than 2022-10-04 |
| 655 | 1.2.3.2.2.3.10 | Ventanas emergentes de validación | 1d | 2022-09-14 A | 2022-09-15 A | 100% | start no earlier than 2022-10-04 |

| ID | WBS | Task | Duration | Start | Finish | Complete | Constraint |
| --- | --- | --- | --- | --- | --- | --- | --- |
| 656 | 1.2.3.2.2.4 | **Administración de Eventos** | 10d | 2022-08-15 A | 2022-08-27 A | 100% |  |
| 657 | 1.2.3.2.2.4.1 | Pantalla principal | 1d | 2022-08-15 A | 2022-08-16 A | 100% | start no earlier than 2022-10-04 |
| 658 | 1.2.3.2.2.4.2 | Agregar | 1d | 2022-08-16 A | 2022-08-17 A | 100% | start no earlier than 2022-10-04 |
| 659 | 1.2.3.2.2.4.3 | Eliminar | 1d | 2022-08-17 A | 2022-08-18 A | 100% | start no earlier than 2022-10-04 |
| 660 | 1.2.3.2.2.4.4 | Editar | 1d | 2022-08-18 A | 2022-08-19 A | 100% | start no earlier than 2022-10-04 |
| 661 | 1.2.3.2.2.4.5 | Configuración de Dashboard | 1d | 2022-08-19 A | 2022-08-20 A | 100% | start no earlier than 2022-10-04 |
| 662 | 1.2.3.2.2.4.6 | Exportación de dashboard PDF | 1d | 2022-08-22 A | 2022-08-23 A | 100% | start no earlier than 2022-10-04 |
| 663 | 1.2.3.2.2.4.7 | Exportación de dashboard Excel | 1d | 2022-08-23 A | 2022-08-24 A | 100% | start no earlier than 2022-10-04 |
| 664 | 1.2.3.2.2.4.8 | Paginación Dashboard | 1d | 2022-08-24 A | 2022-08-25 A | 100% | start no earlier than 2022-10-04 |
| 665 | 1.2.3.2.2.4.9 | Búsqueda Dash board | 1d | 2022-08-25 A | 2022-08-26 A | 100% | start no earlier than 2022-10-04 |
| 666 | 1.2.3.2.2.4.10 | Ventanas emergentes de validación | 1d | 2022-08-26 A | 2022-08-27 A | 100% | start no earlier than 2022-10-04 |
| 667 | 1.2.3.2.2.5 | **Administración tasa interés BANXICO** | 6d | 2022-08-29 A | 2022-09-06 A | 100% |  |
| 668 | 1.2.3.2.2.5.1 | Pantalla principal | 1d | 2022-08-29 A | 2022-08-30 A | 100% | start no earlier than 2022-10-04 |
| 669 | 1.2.3.2.2.5.2 | Insertar | 1d | 2022-08-30 A | 2022-08-31 A | 100% | start no earlier than 2022-10-04 |
| 670 | 1.2.3.2.2.5.3 | Modificar | 1d | 2022-08-31 A | 2022-09-01 A | 100% | start no earlier than 2022-10-04 |
| 671 | 1.2.3.2.2.5.4 | Eliminar | 1d | 2022-09-01 A | 2022-09-02 A | 100% | start no earlier than 2022-10-04 |
| 672 | 1.2.3.2.2.5.5 | Visualizar | 1d | 2022-09-02 A | 2022-09-03 A | 100% | start no earlier than 2022-10-04 |
| 673 | 1.2.3.2.2.5.6 | Job de Ejecución automática | 1d | 2022-09-05 A | 2022-09-06 A | 100% | start no earlier than 2022-10-04 |
| 674 | 1.2.3.2.3 | **Módulo DPCP** | 3d | 2022-09-06 A | 2022-09-09 A | 100% |  |
| 675 | 1.2.3.2.3.1 | **Dashboard Perfil DPCP** | 3d | 2022-09-06 A | 2022-09-09 A | 100% |  |
| 676 | 1.2.3.2.3.1.1 | Pantalla Perfil | 1d | 2022-09-06 A | 2022-09-07 A | 100% | start no earlier than 2022-11-03 |
| 677 | 1.2.3.2.3.1.2 | Pop up Notificaciones | 1d | 2022-09-07 A | 2022-09-08 A | 100% | start no earlier than 2022-11-04 |
| 678 | 1.2.3.2.3.1.3 | Contador de Notificaciones (Icono campanita) | 1d | 2022-09-08 A | 2022-09-09 A | 100% | start no earlier than 2022-10-04 |
| 679 | 1.2.3.2.4 | **Módulo DAF** | 2d | 2022-09-09 A | 2022-09-13 A | 100% |  |
| 680 | 1.2.3.2.4.1 | **Dashboard Perfil DAF** | 2d | 2022-09-09 A | 2022-09-13 A | 100% |  |
| 681 | 1.2.3.2.4.1.1 | Pantalla Perfil | 1d | 2022-09-09 A | 2022-09-10 A | 100% | start no earlier than 2022-10-25 |
| 682 | 1.2.3.2.4.1.2 | Pop up Notificaciones | 1d | 2022-09-12 A | 2022-09-13 A | 100% | start no earlier than 2022-10-26 |
| 683 | 1.2.3.2.4.1.3 | Contador de Notificaciones (Icono campanita) | 1d | 2022-09-12 A | 2022-09-13 A | 100% | start no earlier than 2022-10-04 |

| ID | WBS | Task | Duration | Start | Finish | Complete | Constraint |
| --- | --- | --- | --- | --- | --- | --- | --- |
| 684 | 1.2.3.2.5 | **Módulo DCCP** | 4d | 2022-08-15 A | 2022-08-19 A | 100% |  |
| 685 | 1.2.3.2.5.1 | **Dashboard Perfil DCCP** | 4d | 2022-08-15 A | 2022-08-19 A | 100% |  |
| 686 | 1.2.3.2.5.1.1 | Bloqueo de Sesión | 1d | 2022-08-15 A | 2022-08-16 A | 100% | start no earlier than 2022-10-17 |
| 687 | 1.2.3.2.5.1.2 | Perfil | 1d | 2022-08-16 A | 2022-08-17 A | 100% | start no earlier than 2022-10-18 |
| 688 | 1.2.3.2.5.1.3 | Pop up Notificaciones | 1d | 2022-08-17 A | 2022-08-18 A | 100% | start no earlier than 2022-10-19 |
| 689 | 1.2.3.2.5.1.4 | Contador de Notificaciones (Icono campanita) | 1d | 2022-08-18 A | 2022-08-19 A | 100% | start no earlier than 2022-10-04 |
| 690 | 1.2.4 | **sprint 7** | 22d | 2022-09-15 A | 2022-10-15 A | 100% |  |
| 691 | 1.2.4.1 | **BACK** | 22d | 2022-09-15 A | 2022-10-15 A | 100% |  |
| 692 | 1.2.4.1.1 | **Módulo CPH** | 22d | 2022-09-15 A | 2022-10-15 A | 100% |  |
| 693 | 1.2.4.1.1.1 | **Administración de Municipios** | 8d | 2022-09-15 A | 2022-09-27 A | 100% |  |
| 694 | 1.2.4.1.1.1.1 | Pantalla Principal | 1d | 2022-09-15 A | 2022-09-16 A | 100% | start no earlier than 2022-08-08 |
| 695 | 1.2.4.1.1.1.2 | Eliminar | 1d | 2022-09-16 A | 2022-09-17 A | 100% | start no earlier than 2022-08-11 |
| 696 | 1.2.4.1.1.1.3 | Configuración de Dashboard | 1d | 2022-09-19 A | 2022-09-20 A | 100% | start no earlier than 2022-08-12 |
| 697 | 1.2.4.1.1.1.4 | Exportación de dashboard PDF | 1d | 2022-09-20 A | 2022-09-21 A | 100% | start no earlier than 2022-08-15 |
| 698 | 1.2.4.1.1.1.5 | Exportación de dashboard Excel | 1d | 2022-09-21 A | 2022-09-22 A | 100% | start no earlier than 2022-08-16 |
| 699 | 1.2.4.1.1.1.6 | Paginación Dashboard | 1d | 2022-09-22 A | 2022-09-23 A | 100% | start no earlier than 2022-08-17 |
| 700 | 1.2.4.1.1.1.7 | Búsqueda Dash board | 1d | 2022-09-23 A | 2022-09-24 A | 100% | start no earlier than 2022-08-18 |
| 701 | 1.2.4.1.1.1.8 | Ventanas emergentes de validación | 1d | 2022-09-26 A | 2022-09-27 A | 100% | start no earlier than 2022-08-19 |
| 702 | 1.2.4.1.1.2 | **Administración de Territorio** | 12d | 2022-09-27 A | 2022-10-13 A | 100% |  |
| 703 | 1.2.4.1.1.2.1 | Pantalla Principal | 1d | 2022-09-27 A | 2022-09-28 A | 100% | start no earlier than 2022-08-05 |
| 704 | 1.2.4.1.1.2.2 | Plantilla Carga Masiva Territorio | 1d | 2022-09-28 A | 2022-09-29 A | 100% | start no earlier than 2022-08-08 |
| 705 | 1.2.4.1.1.2.3 | Api Plantilla caga masiva Municipio - Territorio | 1d | 2022-09-29 A | 2022-09-30 A | 100% | start no earlier than 2022-08-09 |
| 706 | 1.2.4.1.1.2.4 | Agregar | 1d | 2022-09-30 A | 2022-10-01 A | 100% | start no earlier than 2022-08-10 |
| 707 | 1.2.4.1.1.2.5 | Editar | 1d | 2022-10-03 A | 2022-10-04 A | 100% | start no earlier than 2022-08-11 |
| 708 | 1.2.4.1.1.2.6 | Eliminar | 1d | 2022-10-04 A | 2022-10-05 A | 100% | start no earlier than 2022-08-12 |
| 709 | 1.2.4.1.1.2.7 | Configuración de Dashboard | 1d | 2022-10-05 A | 2022-10-06 A | 100% | start no earlier than 2022-08-15 |
| 710 | 1.2.4.1.1.2.8 | Exportación de dashboard PDF | 1d | 2022-10-06 A | 2022-10-07 A | 100% | start no earlier than 2022-08-16 |
| 711 | 1.2.4.1.1.2.9 | Exportación de dashboard Excel | 1d | 2022-10-07 A | 2022-10-08 A | 100% | start no earlier than 2022-08-17 |
| 712 | 1.2.4.1.1.2.10 | Paginación Dashboard | 1d | 2022-10-10 A | 2022-10-11 A | 100% | start no earlier than 2022-08-18 |
| 713 | 1.2.4.1.1.2.11 | Búsqueda Dash board | 1d | 2022-10-11 A | 2022-10-12 A | 100% | start no earlier than 2022-08-19 |
| 714 | 1.2.4.1.1.2.12 | Ventanas emergentes de validación | 1d | 2022-10-12 A | 2022-10-13 A | 100% | start no earlier than 2022-08-22 |

| ID | WBS | Task | Duration | Start | Finish | Complete | Constraint |
| --- | --- | --- | --- | --- | --- | --- | --- |
| 715 | 1.2.4.1.1.3 | **Administración de pobreza** | 22d | 2022-09-15 A | 2022-10-15 A | 100% |  |
| 716 | 1.2.4.1.1.3.1 | Pantalla Principal | 1d | 2022-10-13 A | 2022-10-14 A | 100% | start no earlier than 2022-08-23 |
| 717 | 1.2.4.1.1.3.2 | Plantilla Carga Masiva Pobreza | 1d | 2022-10-14 A | 2022-10-15 A | 100% | start no earlier than 2022-08-24 |
| 718 | 1.2.4.1.1.3.3 | Api Plantilla caga masiva Municipio - Pobreza | 1d | 2022-09-15 A | 2022-09-16 A | 100% | start no earlier than 2022-08-25 |
| 719 | 1.2.4.1.1.3.4 | Agregar | 1d | 2022-09-16 A | 2022-09-17 A | 100% | start no earlier than 2022-08-26 |
| 720 | 1.2.4.1.1.3.5 | Editar | 1d | 2022-09-19 A | 2022-09-20 A | 100% | start no earlier than 2022-08-29 |
| 721 | 1.2.4.1.1.3.6 | Eliminar | 1d | 2022-09-20 A | 2022-09-21 A | 100% | start no earlier than 2022-08-30 |
| 722 | 1.2.4.1.1.3.7 | Configuración de Dashboard | 1d | 2022-09-21 A | 2022-09-22 A | 100% | start no earlier than 2022-08-31 |
| 723 | 1.2.4.1.1.3.8 | Exportación de dashboard PDF | 1d | 2022-09-22 A | 2022-09-23 A | 100% | start no earlier than 2022-09-01 |
| 724 | 1.2.4.1.1.3.9 | Exportación de dashboard Excel | 1d | 2022-09-23 A | 2022-09-24 A | 100% | start no earlier than 2022-09-02 |
| 725 | 1.2.4.1.1.3.10 | Paginación Dashboard | 1d | 2022-09-26 A | 2022-09-27 A | 100% | start no earlier than 2022-09-05 |
| 726 | 1.2.4.1.1.3.11 | Búsqueda Dash board | 1d | 2022-09-27 A | 2022-09-28 A | 100% | start no earlier than 2022-09-06 |
| 727 | 1.2.4.1.1.3.12 | Ventanas emergentes de validación | 1d | 2022-09-28 A | 2022-09-29 A | 100% | start no earlier than 2022-09-07 |
| 728 | 1.2.4.1.1.4 | **Administración de Pobreza Extrema** | 22d | 2022-09-15 A | 2022-10-15 A | 100% |  |
| 729 | 1.2.4.1.1.4.1 | Plantilla Carga Masiva Pobreza Extrema | 1d | 2022-09-29 A | 2022-09-30 A | 100% | start no earlier than 2022-09-08 |
| 730 | 1.2.4.1.1.4.2 | Api Plantilla caga masiva Municipio - Pobreza Extrema | 1d | 2022-09-30 A | 2022-10-01 A | 100% | start no earlier than 2022-09-09 |
| 731 | 1.2.4.1.1.4.3 | Pantalla Principal | 1d | 2022-10-03 A | 2022-10-04 A | 100% | start no earlier than 2022-09-12 |
| 732 | 1.2.4.1.1.4.4 | Agregar | 1d | 2022-10-04 A | 2022-10-05 A | 100% | start no earlier than 2022-09-13 |
| 733 | 1.2.4.1.1.4.5 | Editar | 1d | 2022-10-05 A | 2022-10-06 A | 100% | start no earlier than 2022-09-14 |
| 734 | 1.2.4.1.1.4.6 | Eliminar | 1d | 2022-10-06 A | 2022-10-07 A | 100% | start no earlier than 2022-09-15 |
| 735 | 1.2.4.1.1.4.7 | Configuración de Dashboard | 1d | 2022-10-07 A | 2022-10-08 A | 100% | start no earlier than 2022-09-16 |
| 736 | 1.2.4.1.1.4.8 | Exportación de dashboard PDF | 1d | 2022-10-10 A | 2022-10-11 A | 100% | start no earlier than 2022-09-19 |
| 737 | 1.2.4.1.1.4.9 | Exportación de dashboard Excel | 1d | 2022-10-11 A | 2022-10-12 A | 100% | start no earlier than 2022-09-20 |
| 738 | 1.2.4.1.1.4.10 | Paginación Dashboard | 1d | 2022-10-12 A | 2022-10-13 A | 100% | start no earlier than 2022-09-21 |
| 739 | 1.2.4.1.1.4.11 | Búsqueda Dash board | 1d | 2022-10-14 A | 2022-10-15 A | 100% | start no earlier than 2022-09-22 |
| 740 | 1.2.4.1.1.4.12 | Ventanas emergentes de validación | 1d | 2022-09-15 A | 2022-09-16 A | 100% | start no earlier than 2022-09-23 |

| ID | WBS | Task | Duration | Start | Finish | Complete | Constraint |
| --- | --- | --- | --- | --- | --- | --- | --- |
| 741 | 1.2.4.1.1.5 | **Administración de Proyección** | 6d | 2022-09-16 A | 2022-09-24 A | 100% |  |
| 742 | 1.2.4.1.1.5.1 | Pantalla Principal | 1d | 2022-09-16 A | 2022-09-17 A | 100% | start no earlier than 2022-07-27 |
| 743 | 1.2.4.1.1.5.2 | Agregar | 1d | 2022-09-19 A | 2022-09-20 A | 100% | start no earlier than 2022-07-28 |
| 744 | 1.2.4.1.1.5.3 | Editar | 1d | 2022-09-20 A | 2022-09-21 A | 100% | start no earlier than 2022-07-29 |
| 745 | 1.2.4.1.1.5.4 | Eliminar | 1d | 2022-09-21 A | 2022-09-22 A | 100% | start no earlier than 2022-08-01 |
| 746 | 1.2.4.1.1.5.5 | Plantilla Carga Masiva Proyección | 1d | 2022-09-22 A | 2022-09-23 A | 100% | start no earlier than 2022-08-02 |
| 747 | 1.2.4.1.1.5.6 | Api Plantilla caga masiva Municipio - Proyección | 1d | 2022-09-23 A | 2022-09-24 A | 100% | start no earlier than 2022-08-03 |
| 748 | 1.2.4.1.1.6 | **Dashboard FOFIR** | 6d | 2022-09-26 A | 2022-10-04 A | 100% |  |
| 749 | 1.2.4.1.1.6.1 | Pantalla Principal | 1d | 2022-09-26 A | 2022-09-27 A | 100% | start no earlier than 2022-09-22 |
| 750 | 1.2.4.1.1.6.2 | Carga inicial | 1d | 2022-09-27 A | 2022-09-28 A | 100% | start no earlier than 2022-09-23 |
| 751 | 1.2.4.1.1.6.3 | Configuración inicial Fondo de Fiscalización y Recaudación (FOFIR) | 1d | 2022-09-28 A | 2022-09-29 A | 100% | start no earlier than 2022-09-26 |
| 752 | 1.2.4.1.1.6.4 | Proceso cálculo | 1d | 2022-09-29 A | 2022-09-30 A | 100% | start no earlier than 2022-09-27 |
| 753 | 1.2.4.1.1.6.5 | Track | 1d | 2022-09-30 A | 2022-10-01 A | 100% | start no earlier than 2022-07-15 |
| 754 | 1.2.4.1.1.6.6 | Ventanas emergentes de validación | 1d | 2022-10-03 A | 2022-10-04 A | 100% | start no earlier than 2022-07-18 |
| 755 | 1.2.4.1.1.7 | **Dashboard ISAN** | 8d | 2022-10-04 A | 2022-10-14 A | 100% |  |
| 756 | 1.2.4.1.1.7.1 | Pantalla Principal | 1d | 2022-10-04 A | 2022-10-05 A | 100% | start no earlier than 2022-07-19 |
| 757 | 1.2.4.1.1.7.2 | Plantilla Carga Masiva ISAN | 1d | 2022-10-05 A | 2022-10-06 A | 100% | start no earlier than 2022-07-20 |
| 758 | 1.2.4.1.1.7.3 | Api Plantilla caga masiva Municipio - ISAN | 1d | 2022-10-06 A | 2022-10-07 A | 100% | start no earlier than 2022-07-21 |
| 759 | 1.2.4.1.1.7.4 | Carga inicial | 1d | 2022-10-07 A | 2022-10-08 A | 100% | start no earlier than 2022-07-22 |
| 760 | 1.2.4.1.1.7.5 | Configuración inicial Impuesto sobre Automóviles Nuevos (ISAN) | 1d | 2022-10-10 A | 2022-10-11 A | 100% | start no earlier than 2022-07-25 |
| 761 | 1.2.4.1.1.7.6 | Proceso cálculo | 1d | 2022-10-11 A | 2022-10-12 A | 100% | start no earlier than 2022-07-26 |
| 762 | 1.2.4.1.1.7.7 | Track | 1d | 2022-10-12 A | 2022-10-13 A | 100% | start no earlier than 2022-07-29 |
| 763 | 1.2.4.1.1.7.8 | Ventanas emergentes de validación | 1d | 2022-10-13 A | 2022-10-14 A | 100% | start no earlier than 2022-08-01 |
| 764 | 1.2.4.1.1.8 | **Dashboard Comp. ISAN** | 22d | 2022-09-15 A | 2022-10-15 A | 100% |  |
| 765 | 1.2.4.1.1.8.1 | Pantalla Principal | 1d | 2022-10-14 A | 2022-10-15 A | 100% | start no earlier than 2022-08-02 |
| 766 | 1.2.4.1.1.8.2 | Carga inicial | 1d | 2022-09-15 A | 2022-09-16 A | 100% | start no earlier than 2022-08-03 |
| 767 | 1.2.4.1.1.8.3 | Configuración inicial Compensación ISAN | 1d | 2022-09-16 A | 2022-09-17 A | 100% | start no earlier than 2022-08-04 |
| 768 | 1.2.4.1.1.8.4 | Proceso cálculo | 1d | 2022-09-19 A | 2022-09-20 A | 100% | start no earlier than 2022-08-05 |
| 769 | 1.2.4.1.1.8.5 | Track | 1d | 2022-09-20 A | 2022-09-21 A | 100% | start no earlier than 2022-08-10 |
| 770 | 1.2.4.1.1.8.6 | Ventanas emergentes de validación | 1d | 2022-09-21 A | 2022-09-22 A | 100% | start no earlier than 2022-08-11 |

| ID | WBS | Task | Duration | Start | Finish | Complete | Constraint |
| --- | --- | --- | --- | --- | --- | --- | --- |
| 771 | 1.2.4.1.1.9 | **Dashboard ISN** | 4d | 2022-09-22 A | 2022-09-28 A | 100% |  |
| 772 | 1.2.4.1.1.9.1 | Pantalla Principal | 1d | 2022-09-22 A | 2022-09-23 A | 100% | start no earlier than 2022-08-12 |
| 773 | 1.2.4.1.1.9.2 | Carga configuración inicial fondo ISN | 1d | 2022-09-22 A | 2022-09-23 A | 100% | start no earlier than 2022-08-15 |
| 774 | 1.2.4.1.1.9.3 | Proceso de cálculo | 1d | 2022-09-23 A | 2022-09-24 A | 100% | start no earlier than 2022-08-16 |
| 775 | 1.2.4.1.1.9.4 | Track | 1d | 2022-09-26 A | 2022-09-27 A | 100% | start no earlier than 2022-08-19 |
| 776 | 1.2.4.1.1.9.5 | Ventanas emergentes de validación | 1d | 2022-09-27 A | 2022-09-28 A | 100% | start no earlier than 2022-08-22 |
| 777 | 1.2.4.1.1.10 | **Dashboard ICV** | 6d | 2022-09-28 A | 2022-10-06 A | 100% |  |
| 778 | 1.2.4.1.1.10.1 | Pantalla Principal | 1d | 2022-09-28 A | 2022-09-29 A | 100% | start no earlier than 2022-08-23 |
| 779 | 1.2.4.1.1.10.2 | Carga Configuración inicial ICV | 1d | 2022-09-29 A | 2022-09-30 A | 100% | start no earlier than 2022-08-24 |
| 780 | 1.2.4.1.1.10.3 | Carga masiva de ICV - (Plantilla) | 1d | 2022-09-30 A | 2022-10-01 A | 100% | start no earlier than 2022-08-25 |
| 781 | 1.2.4.1.1.10.4 | Proceso de cálculo | 1d | 2022-10-03 A | 2022-10-04 A | 100% | start no earlier than 2022-08-26 |
| 782 | 1.2.4.1.1.10.5 | Track | 1d | 2022-10-04 A | 2022-10-05 A | 100% | start no earlier than 2022-08-31 |
| 783 | 1.2.4.1.1.10.6 | Ventanas emergentes de validación | 1d | 2022-10-05 A | 2022-10-06 A | 100% | start no earlier than 2022-09-01 |
| 784 | 1.2.4.1.2 | **Módulo DAMOP** | 22d | 2022-09-15 A | 2022-10-15 A | 100% |  |
| 785 | 1.2.4.1.2.1 | **Administración tasa interés BANXICO** | 6d | 2022-10-06 A | 2022-10-14 A | 100% |  |
| 786 | 1.2.4.1.2.1.1 | Pantalla principal | 1d | 2022-10-06 A | 2022-10-07 A | 100% | start no earlier than 2022-10-04 |
| 787 | 1.2.4.1.2.1.2 | Insertar | 1d | 2022-10-07 A | 2022-10-08 A | 100% | start no earlier than 2022-10-04 |
| 788 | 1.2.4.1.2.1.3 | Modificar | 1d | 2022-10-10 A | 2022-10-11 A | 100% | start no earlier than 2022-10-04 |
| 789 | 1.2.4.1.2.1.4 | Eliminar | 1d | 2022-10-11 A | 2022-10-12 A | 100% | start no earlier than 2022-10-04 |
| 790 | 1.2.4.1.2.1.5 | Visualizar | 1d | 2022-10-12 A | 2022-10-13 A | 100% | start no earlier than 2022-10-04 |
| 791 | 1.2.4.1.2.1.6 | Job de Ejecución automática | 1d | 2022-10-13 A | 2022-10-14 A | 100% | start no earlier than 2022-10-04 |
| 792 | 1.2.4.1.2.2 | **Dashboard ICV** | 1d | 2022-10-14 A | 2022-10-15 A | 100% |  |
| 793 | 1.2.4.1.2.2.1 | Track | 1d | 2022-10-14 A | 2022-10-15 A | 100% | start no earlier than 2022-10-04 |
| 794 | 1.2.4.1.2.3 | **Dashboard Fondos FORTAMUN** | 1d | 2022-09-15 A | 2022-09-16 A | 100% |  |
| 795 | 1.2.4.1.2.3.1 | Track | 1d | 2022-09-15 A | 2022-09-16 A | 100% | start no earlier than 2022-10-04 |

| ID | WBS | Task | Duration | Start | Finish | Complete | Constraint |
| --- | --- | --- | --- | --- | --- | --- | --- |
| 796 | 1.2.4.1.2.4 | **Dashboard Fondos FISM** | 1d | 2022-09-16 A | 2022-09-17 A | 100% |  |
| 797 | 1.2.4.1.2.4.1 | Track | 1d | 2022-09-16 A | 2022-09-17 A | 100% | start no earlier than 2022-10-04 |
| 798 | 1.2.4.1.2.5 | **Administración de Fondo de seguridad para municipios Metropolitanos y no Metropolitanos** | 1d | 2022-09-19 A | 2022-09-20 A | 100% |  |
| 799 | 1.2.4.1.2.5.1 | Ventanas emergentes de Track | 1d | 2022-09-19 A | 2022-09-20 A | 100% | start no earlier than 2022-10-04 |
| 800 | 1.2.4.1.2.6 | **Administración de Fondo de desarrollo municipal Metropolitanos y no Metropolitanos** | 1d | 2022-09-20 A | 2022-09-21 A | 100% |  |
| 801 | 1.2.4.1.2.6.1 | Ventanas emergentes de Track | 1d | 2022-09-20 A | 2022-09-21 A | 100% | start no earlier than 2022-10-04 |
| 802 | 1.2.4.1.3 | **Módulo DPCP** | 1d | 2022-09-21 A | 2022-09-22 A | 100% |  |
| 803 | 1.2.4.1.3.1 | **Dashboard Perfil DPCP** | 1d | 2022-09-21 A | 2022-09-22 A | 100% |  |
| 804 | 1.2.4.1.3.1.1 | Contador de Notificaciones (Icono campanita) | 1d | 2022-09-21 A | 2022-09-22 A | 100% | start no earlier than 2022-10-04 |
| 805 | 1.2.4.1.4 | **Módulo DAF** | 1d | 2022-09-22 A | 2022-09-23 A | 100% |  |
| 806 | 1.2.4.1.4.1 | **Dashboard Perfil DAF** | 1d | 2022-09-22 A | 2022-09-23 A | 100% |  |
| 807 | 1.2.4.1.4.1.1 | Contador de Notificaciones (Icono campanita) | 1d | 2022-09-22 A | 2022-09-23 A | 100% | start no earlier than 2022-10-04 |
| 808 | 1.2.4.1.5 | **Módulo DCCP** | 1d | 2022-09-22 A | 2022-09-23 A | 100% |  |
| 809 | 1.2.4.1.5.1 | **Dashboard Perfil DCCP** | 1d | 2022-09-22 A | 2022-09-23 A | 100% |  |
| 810 | 1.2.4.1.5.1.1 | Contador de Notificaciones (Icono campanita) | 1d | 2022-09-22 A | 2022-09-23 A | 100% | start no earlier than 2022-10-04 |
| 811 | 1.2.4.2 | **FRONT** | 22d | 2022-09-15 A | 2022-10-15 A | 100% |  |
| 812 | 1.2.4.2.1 | **Módulo de Administración** | 22d | 2022-09-15 A | 2022-10-15 A | 100% |  |
| 813 | 1.2.4.2.1.1 | **Bienvenida** | 1d | 2022-09-15 A | 2022-09-16 A | 100% |  |
| 814 | 1.2.4.2.1.1.1 | Configuración de bienvenida | 1d | 2022-09-15 A | 2022-09-16 A | 100% | start no earlier than 2022-10-17 |
| 815 | 1.2.4.2.1.2 | **Base** | 4d | 2022-09-16 A | 2022-09-22 A | 100% |  |
| 816 | 1.2.4.2.1.2.1 | Login | 1d | 2022-09-16 A | 2022-09-17 A | 100% | start no earlier than 2022-10-04 |
| 817 | 1.2.4.2.1.2.2 | Logout | 1d | 2022-09-19 A | 2022-09-20 A | 100% | start no earlier than 2022-10-04 |
| 818 | 1.2.4.2.1.2.3 | Bloqueo de Sesión | 1d | 2022-09-20 A | 2022-09-21 A | 100% | start no earlier than 2022-09-05 |
| 819 | 1.2.4.2.1.2.4 | Perfil | 1d | 2022-09-21 A | 2022-09-22 A | 100% | start no earlier than 2022-09-06 |

| ID | WBS | Task | Duration | Start | Finish | Complete | Constraint |
| --- | --- | --- | --- | --- | --- | --- | --- |
| 820 | 1.2.4.2.1.3 | **Administración de Usuarios** | 10d | 2022-09-22 A | 2022-10-06 A | 100% |  |
| 821 | 1.2.4.2.1.3.1 | Agregar | 1d | 2022-09-22 A | 2022-09-23 A | 100% | start no earlier than 2022-09-07 |
| 822 | 1.2.4.2.1.3.2 | Pantalla Principal | 1d | 2022-09-23 A | 2022-09-24 A | 100% | start no earlier than 2022-09-08 |
| 823 | 1.2.4.2.1.3.3 | Editar | 1d | 2022-09-26 A | 2022-09-27 A | 100% | start no earlier than 2022-09-09 |
| 824 | 1.2.4.2.1.3.4 | Eliminar | 1d | 2022-09-27 A | 2022-09-28 A | 100% | start no earlier than 2022-09-12 |
| 825 | 1.2.4.2.1.3.5 | Configuración de Dashboard | 1d | 2022-09-28 A | 2022-09-29 A | 100% | start no earlier than 2022-09-13 |
| 826 | 1.2.4.2.1.3.6 | Exportación de dashboard PDF | 1d | 2022-09-29 A | 2022-09-30 A | 100% | start no earlier than 2022-09-14 |
| 827 | 1.2.4.2.1.3.7 | Exportación de dashboard Excel | 1d | 2022-09-30 A | 2022-10-01 A | 100% | start no earlier than 2022-09-15 |
| 828 | 1.2.4.2.1.3.8 | Paginación Dashboard | 1d | 2022-10-03 A | 2022-10-04 A | 100% | start no earlier than 2022-09-16 |
| 829 | 1.2.4.2.1.3.9 | Búsqueda Dash board | 1d | 2022-10-04 A | 2022-10-05 A | 100% | start no earlier than 2022-09-19 |
| 830 | 1.2.4.2.1.3.10 | Ventanas emergentes de validación | 1d | 2022-10-05 A | 2022-10-06 A | 100% | start no earlier than 2022-09-20 |
| 831 | 1.2.4.2.1.4 | **Administración de Roles y Permisos** | 22d | 2022-09-15 A | 2022-10-15 A | 100% |  |
| 832 | 1.2.4.2.1.4.1 | Pantalla Principal | 1d | 2022-10-06 A | 2022-10-07 A | 100% | start no earlier than 2022-09-21 |
| 833 | 1.2.4.2.1.4.2 | Agregar | 1d | 2022-10-07 A | 2022-10-08 A | 100% | start no earlier than 2022-09-22 |
| 834 | 1.2.4.2.1.4.3 | Editar | 1d | 2022-10-10 A | 2022-10-11 A | 100% | start no earlier than 2022-09-23 |
| 835 | 1.2.4.2.1.4.4 | Eliminar | 1d | 2022-10-11 A | 2022-10-12 A | 100% | start no earlier than 2022-09-26 |
| 836 | 1.2.4.2.1.4.5 | Configuración de Dashboard | 1d | 2022-10-12 A | 2022-10-13 A | 100% | start no earlier than 2022-09-27 |
| 837 | 1.2.4.2.1.4.6 | Exportación de dashboard PDF | 1d | 2022-10-13 A | 2022-10-14 A | 100% | start no earlier than 2022-09-28 |
| 838 | 1.2.4.2.1.4.7 | Exportación de dashboard Excel | 1d | 2022-10-14 A | 2022-10-15 A | 100% | start no earlier than 2022-09-29 |
| 839 | 1.2.4.2.1.4.8 | Paginación Dashboard | 1d | 2022-09-15 A | 2022-09-16 A | 100% | start no earlier than 2022-09-30 |
| 840 | 1.2.4.2.1.4.9 | Búsqueda Dash board | 1d | 2022-09-16 A | 2022-09-17 A | 100% | start no earlier than 2022-10-03 |
| 841 | 1.2.4.2.1.4.10 | Ventanas emergentes de validación | 1d | 2022-09-19 A | 2022-09-20 A | 100% | start no earlier than 2022-10-04 |
| 842 | 1.2.4.2.2 | **Módulo CPH** | 22d | 2022-09-15 A | 2022-10-15 A | 100% |  |
| 843 | 1.2.4.2.2.1 | **Administración de Municipios** | 8d | 2022-09-20 A | 2022-09-30 A | 100% |  |
| 844 | 1.2.4.2.2.1.1 | Pantalla Principal | 1d | 2022-09-20 A | 2022-09-21 A | 100% | start no earlier than 2022-10-26 |
| 845 | 1.2.4.2.2.1.2 | Eliminar | 1d | 2022-09-21 A | 2022-09-22 A | 100% | start no earlier than 2022-10-31 |
| 846 | 1.2.4.2.2.1.3 | Configuración de Dashboard | 1d | 2022-09-22 A | 2022-09-23 A | 100% | start no earlier than 2022-11-01 |
| 847 | 1.2.4.2.2.1.4 | Exportación de dashboard PDF | 1d | 2022-09-23 A | 2022-09-24 A | 100% | start no earlier than 2022-11-02 |
| 848 | 1.2.4.2.2.1.5 | Exportación de dashboard Excel | 1d | 2022-09-26 A | 2022-09-27 A | 100% | start no earlier than 2022-11-03 |
| 849 | 1.2.4.2.2.1.6 | Paginación Dashboard | 1d | 2022-09-27 A | 2022-09-28 A | 100% | start no earlier than 2022-11-04 |
| 850 | 1.2.4.2.2.1.7 | Búsqueda Dash board | 1d | 2022-09-28 A | 2022-09-29 A | 100% | start no earlier than 2022-11-07 |
| 851 | 1.2.4.2.2.1.8 | Ventanas emergentes de validación | 1d | 2022-09-29 A | 2022-09-30 A | 100% | start no earlier than 2022-11-08 |

| ID | WBS | Task | Duration | Start | Finish | Complete | Constraint |
| --- | --- | --- | --- | --- | --- | --- | --- |
| 852 | 1.2.4.2.2.2 | **Administración de Territorio** | 11d | 2022-09-30 A | 2022-10-15 A | 100% |  |
| 853 | 1.2.4.2.2.2.1 | Pantalla Principal | 1d | 2022-09-30 A | 2022-10-01 A | 100% | start no earlier than 2022-10-04 |
| 854 | 1.2.4.2.2.2.2 | Plantilla Carga Masiva Territorio | 1d | 2022-10-03 A | 2022-10-04 A | 100% | start no earlier than 2022-10-04 |
| 855 | 1.2.4.2.2.2.3 | Api Plantilla caga masiva Municipio - Territorio | 1d | 2022-10-04 A | 2022-10-05 A | 100% | start no earlier than 2022-10-04 |
| 856 | 1.2.4.2.2.2.4 | Agregar | 1d | 2022-10-05 A | 2022-10-06 A | 100% | start no earlier than 2022-10-04 |
| 857 | 1.2.4.2.2.2.5 | Editar | 1d | 2022-10-06 A | 2022-10-07 A | 100% | start no earlier than 2022-10-04 |
| 858 | 1.2.4.2.2.2.6 | Eliminar | 1d | 2022-10-07 A | 2022-10-08 A | 100% | start no earlier than 2022-10-04 |
| 859 | 1.2.4.2.2.2.7 | Configuración de Dashboard | 1d | 2022-10-10 A | 2022-10-11 A | 100% | start no earlier than 2022-10-04 |
| 860 | 1.2.4.2.2.2.8 | Exportación de dashboard PDF | 1d | 2022-10-11 A | 2022-10-12 A | 100% | start no earlier than 2022-10-04 |
| 861 | 1.2.4.2.2.2.9 | Exportación de dashboard Excel | 1d | 2022-10-12 A | 2022-10-13 A | 100% | start no earlier than 2022-10-04 |
| 862 | 1.2.4.2.2.2.10 | Paginación Dashboard | 1d | 2022-10-13 A | 2022-10-14 A | 100% | start no earlier than 2022-10-04 |
| 863 | 1.2.4.2.2.2.11 | Búsqueda Dash board | 1d | 2022-10-14 A | 2022-10-15 A | 100% | start no earlier than 2022-10-04 |
| 864 | 1.2.4.2.2.2.12 | Ventanas emergentes de validación | 1d | 2022-10-14 A | 2022-10-15 A | 100% | start no earlier than 2022-10-04 |
| 865 | 1.2.4.2.2.3 | **Administración de pobreza** | 12d | 2022-09-15 A | 2022-10-01 A | 100% |  |
| 866 | 1.2.4.2.2.3.1 | Pantalla Principal | 1d | 2022-09-15 A | 2022-09-16 A | 100% | start no earlier than 2022-10-04 |
| 867 | 1.2.4.2.2.3.2 | Plantilla Carga Masiva Pobreza | 1d | 2022-09-16 A | 2022-09-17 A | 100% | start no earlier than 2022-10-04 |
| 868 | 1.2.4.2.2.3.3 | Api Plantilla caga masiva Municipio - Pobreza | 1d | 2022-09-19 A | 2022-09-20 A | 100% | start no earlier than 2022-10-04 |
| 869 | 1.2.4.2.2.3.4 | Agregar | 1d | 2022-09-20 A | 2022-09-21 A | 100% | start no earlier than 2022-10-04 |
| 870 | 1.2.4.2.2.3.5 | Editar | 1d | 2022-09-21 A | 2022-09-22 A | 100% | start no earlier than 2022-10-04 |
| 871 | 1.2.4.2.2.3.6 | Eliminar | 1d | 2022-09-22 A | 2022-09-23 A | 100% | start no earlier than 2022-10-04 |
| 872 | 1.2.4.2.2.3.7 | Configuración de Dashboard | 1d | 2022-09-23 A | 2022-09-24 A | 100% | start no earlier than 2022-10-04 |
| 873 | 1.2.4.2.2.3.8 | Exportación de dashboard PDF | 1d | 2022-09-26 A | 2022-09-27 A | 100% | start no earlier than 2022-10-04 |
| 874 | 1.2.4.2.2.3.9 | Exportación de dashboard Excel | 1d | 2022-09-27 A | 2022-09-28 A | 100% | start no earlier than 2022-10-04 |
| 875 | 1.2.4.2.2.3.10 | Paginación Dashboard | 1d | 2022-09-28 A | 2022-09-29 A | 100% | start no earlier than 2022-10-04 |
| 876 | 1.2.4.2.2.3.11 | Búsqueda Dash board | 1d | 2022-09-29 A | 2022-09-30 A | 100% | start no earlier than 2022-10-04 |
| 877 | 1.2.4.2.2.3.12 | Ventanas emergentes de validación | 1d | 2022-09-30 A | 2022-10-01 A | 100% | start no earlier than 2022-10-04 |

| ID | WBS | Task | Duration | Start | Finish | Complete | Constraint |
| --- | --- | --- | --- | --- | --- | --- | --- |
| 878 | 1.2.4.2.2.4 | **Administración de Pobreza Extrema** | 6d | 2022-10-03 A | 2022-10-11 A | 100% |  |
| 879 | 1.2.4.2.2.4.1 | Plantilla Carga Masiva Pobreza Extrema | 1d | 2022-10-03 A | 2022-10-04 A | 100% | start no earlier than 2022-10-04 |
| 880 | 1.2.4.2.2.4.2 | Api Plantilla caga masiva Municipio - Pobreza Extrema | 1d | 2022-10-04 A | 2022-10-05 A | 100% | start no earlier than 2022-10-04 |
| 881 | 1.2.4.2.2.4.3 | Pantalla Principal | 1d | 2022-10-05 A | 2022-10-06 A | 100% | start no earlier than 2022-10-04 |
| 882 | 1.2.4.2.2.4.4 | Agregar | 1d | 2022-10-06 A | 2022-10-07 A | 100% | start no earlier than 2022-10-04 |
| 883 | 1.2.4.2.2.4.5 | Editar | 1d | 2022-10-07 A | 2022-10-08 A | 100% | start no earlier than 2022-10-04 |
| 884 | 1.2.4.2.2.4.6 | Eliminar | 1d | 2022-10-10 A | 2022-10-11 A | 100% | start no earlier than 2022-10-04 |
| 885 | 1.2.4.2.2.5 | **Administración de Proyección** | 22d | 2022-09-15 A | 2022-10-15 A | 100% |  |
| 886 | 1.2.4.2.2.5.1 | Pantalla Principal | 1d | 2022-10-11 A | 2022-10-12 A | 100% | start no earlier than 2022-10-04 |
| 887 | 1.2.4.2.2.5.2 | Agregar | 1d | 2022-10-12 A | 2022-10-13 A | 100% | start no earlier than 2022-10-04 |
| 888 | 1.2.4.2.2.5.3 | Editar | 1d | 2022-10-13 A | 2022-10-14 A | 100% | start no earlier than 2022-10-04 |
| 889 | 1.2.4.2.2.5.4 | Eliminar | 1d | 2022-10-14 A | 2022-10-15 A | 100% | start no earlier than 2022-10-04 |
| 890 | 1.2.4.2.2.5.5 | Plantilla Carga Masiva Proyección | 1d | 2022-09-15 A | 2022-09-16 A | 100% | start no earlier than 2022-10-04 |
| 891 | 1.2.4.2.2.5.6 | Api Plantilla caga masiva Municipio - Proyección | 1d | 2022-09-16 A | 2022-09-17 A | 100% | start no earlier than 2022-10-04 |
| 892 | 1.2.4.2.2.6 | **Dashboard FG** | 5d | 2022-09-19 A | 2022-09-24 A | 100% |  |
| 893 | 1.2.4.2.2.6.1 | Configuración inicial Fondo General (FG) | 1d | 2022-09-19 A | 2022-09-20 A | 100% | start no earlier than 2022-11-02 |
| 894 | 1.2.4.2.2.6.2 | Carga inicial | 1d | 2022-09-20 A | 2022-09-21 A | 100% | start no earlier than 2022-11-03 |
| 895 | 1.2.4.2.2.6.3 | Pantalla Principal | 1d | 2022-09-21 A | 2022-09-22 A | 100% | start no earlier than 2022-11-04 |
| 896 | 1.2.4.2.2.6.4 | Proceso cálculo | 1d | 2022-09-22 A | 2022-09-23 A | 100% | start no earlier than 2022-11-07 |
| 897 | 1.2.4.2.2.6.5 | Ventanas emergentes de validación | 1d | 2022-09-23 A | 2022-09-24 A | 100% | start no earlier than 2022-11-14 |
| 898 | 1.2.4.2.2.7 | **Dashboard FOFIR** | 6d | 2022-09-26 A | 2022-10-04 A | 100% |  |
| 899 | 1.2.4.2.2.7.1 | Pantalla Principal | 1d | 2022-09-26 A | 2022-09-27 A | 100% | start no earlier than 2022-10-14 |
| 900 | 1.2.4.2.2.7.2 | Carga inicial | 1d | 2022-09-27 A | 2022-09-28 A | 100% | start no earlier than 2022-10-17 |
| 901 | 1.2.4.2.2.7.3 | Configuración inicial Fondo de Fiscalización y Recaudación (FOFIR) | 1d | 2022-09-28 A | 2022-09-29 A | 100% | start no earlier than 2022-10-18 |
| 902 | 1.2.4.2.2.7.4 | Proceso cálculo | 1d | 2022-09-29 A | 2022-09-30 A | 100% | start no earlier than 2022-10-19 |
| 903 | 1.2.4.2.2.7.5 | Track | 1d | 2022-09-30 A | 2022-10-01 A | 100% | start no earlier than 2022-10-24 |
| 904 | 1.2.4.2.2.7.6 | Ventanas emergentes de validación | 1d | 2022-10-03 A | 2022-10-04 A | 100% | start no earlier than 2022-10-25 |

| ID | WBS | Task | Duration | Start | Finish | Complete | Constraint |
| --- | --- | --- | --- | --- | --- | --- | --- |
| 905 | 1.2.4.2.2.8 | **Dashboard ISAN** | 8d | 2022-10-04 A | 2022-10-14 A | 100% |  |
| 906 | 1.2.4.2.2.8.1 | Pantalla Principal | 1d | 2022-10-04 A | 2022-10-05 A | 100% | start no earlier than 2022-10-26 |
| 907 | 1.2.4.2.2.8.2 | Plantilla Carga Masiva ISAN | 1d | 2022-10-05 A | 2022-10-06 A | 100% | start no earlier than 2022-10-04 |
| 908 | 1.2.4.2.2.8.3 | Api Plantilla caga masiva Municipio - ISAN | 1d | 2022-10-06 A | 2022-10-07 A | 100% | start no earlier than 2022-10-04 |
| 909 | 1.2.4.2.2.8.4 | Carga inicial | 1d | 2022-10-07 A | 2022-10-08 A | 100% | start no earlier than 2022-10-31 |
| 910 | 1.2.4.2.2.8.5 | Configuración inicial Impuesto sobre Automóviles Nuevos (ISAN) | 1d | 2022-10-10 A | 2022-10-11 A | 100% | start no earlier than 2022-11-01 |
| 911 | 1.2.4.2.2.8.6 | Proceso cálculo | 1d | 2022-10-11 A | 2022-10-12 A | 100% | start no earlier than 2022-11-02 |
| 912 | 1.2.4.2.2.8.7 | Track | 1d | 2022-10-12 A | 2022-10-13 A | 100% | start no earlier than 2022-11-07 |
| 913 | 1.2.4.2.2.8.8 | Ventanas emergentes de validación | 1d | 2022-10-13 A | 2022-10-14 A | 100% | start no earlier than 2022-11-08 |
| 914 | 1.2.4.2.2.9 | **Dashboard Comp. ISAN** | 22d | 2022-09-15 A | 2022-10-15 A | 100% |  |
| 915 | 1.2.4.2.2.9.1 | Pantalla Principal | 1d | 2022-10-14 A | 2022-10-15 A | 100% | start no earlier than 2022-11-09 |
| 916 | 1.2.4.2.2.9.2 | Carga inicial | 1d | 2022-09-15 A | 2022-09-16 A | 100% | start no earlier than 2022-11-10 |
| 917 | 1.2.4.2.2.9.3 | Configuración inicial Compensación ISAN | 1d | 2022-09-16 A | 2022-09-17 A | 100% | start no earlier than 2022-11-11 |
| 918 | 1.2.4.2.2.9.4 | Proceso cálculo | 1d | 2022-09-19 A | 2022-09-20 A | 100% | start no earlier than 2022-11-14 |
| 919 | 1.2.4.2.2.9.5 | Track | 1d | 2022-09-20 A | 2022-09-21 A | 100% | start no earlier than 2022-10-05 |
| 920 | 1.2.4.2.2.9.6 | Ventanas emergentes de validación | 1d | 2022-09-21 A | 2022-09-22 A | 100% | start no earlier than 2022-10-06 |
| 921 | 1.2.4.2.2.10 | **Dashboard ISN** | 5d | 2022-09-22 A | 2022-09-29 A | 100% |  |
| 922 | 1.2.4.2.2.10.1 | Pantalla Principal | 1d | 2022-09-22 A | 2022-09-23 A | 100% | start no earlier than 2022-10-07 |
| 923 | 1.2.4.2.2.10.2 | Carga configuración inicial fondo ISN | 1d | 2022-09-23 A | 2022-09-24 A | 100% | start no earlier than 2022-10-10 |
| 924 | 1.2.4.2.2.10.3 | Proceso de cálculo | 1d | 2022-09-26 A | 2022-09-27 A | 100% | start no earlier than 2022-10-11 |
| 925 | 1.2.4.2.2.10.4 | Track | 1d | 2022-09-27 A | 2022-09-28 A | 100% | start no earlier than 2022-10-14 |
| 926 | 1.2.4.2.2.10.5 | Ventanas emergentes de validación | 1d | 2022-09-28 A | 2022-09-29 A | 100% | start no earlier than 2022-10-17 |
| 927 | 1.2.4.2.2.11 | **Dashboard ICV** | 6d | 2022-09-29 A | 2022-10-07 A | 100% |  |
| 928 | 1.2.4.2.2.11.1 | Pantalla Principal | 1d | 2022-09-29 A | 2022-09-30 A | 100% | start no earlier than 2022-10-18 |
| 929 | 1.2.4.2.2.11.2 | Carga Configuración inicial ICV | 1d | 2022-09-30 A | 2022-10-01 A | 100% | start no earlier than 2022-10-19 |
| 930 | 1.2.4.2.2.11.3 | Carga masiva de ICV - (Plantilla) | 1d | 2022-10-03 A | 2022-10-04 A | 100% | start no earlier than 2022-10-20 |
| 931 | 1.2.4.2.2.11.4 | Proceso de cálculo | 1d | 2022-10-04 A | 2022-10-05 A | 100% | start no earlier than 2022-10-21 |
| 932 | 1.2.4.2.2.11.5 | Track | 1d | 2022-10-05 A | 2022-10-06 A | 100% | start no earlier than 2022-10-26 |
| 933 | 1.2.4.2.2.11.6 | Ventanas emergentes de validación | 1d | 2022-10-06 A | 2022-10-07 A | 100% | start no earlier than 2022-10-27 |

| ID | WBS | Task | Duration | Start | Finish | Complete | Constraint |
| --- | --- | --- | --- | --- | --- | --- | --- |
| 934 | 1.2.4.2.2.12 | **Dashboard Fondo Ultracrecmiento** | 22d | 2022-09-15 A | 2022-10-15 A | 100% |  |
| 935 | 1.2.4.2.2.12.1 | Pantalla Principal | 1d | 2022-10-11 A | 2022-10-12 A | 100% | start no earlier than 2022-10-28 |
| 936 | 1.2.4.2.2.12.2 | Carga configuración inicial Fondo Ultracrecimiento | 1d | 2022-10-12 A | 2022-10-13 A | 100% | start no earlier than 2022-10-31 |
| 937 | 1.2.4.2.2.12.3 | Track | 1d | 2022-10-13 A | 2022-10-14 A | 100% | start no earlier than 2022-11-03 |
| 938 | 1.2.4.2.2.12.4 | Ventanas emergentes de validación | 1d | 2022-10-14 A | 2022-10-15 A | 100% | start no earlier than 2022-11-04 |
| 939 | 1.2.4.2.2.12.5 | Generación de reporte | 1d | 2022-09-15 A | 2022-09-16 A | 100% | start no earlier than 2022-11-07 |
| 940 | 1.2.4.2.2.13 | **Dashboard Fondos Descentralizado** | 5d | 2022-09-16 A | 2022-09-23 A | 100% |  |
| 941 | 1.2.4.2.2.13.1 | Pantalla Principal | 1d | 2022-09-16 A | 2022-09-17 A | 100% | start no earlier than 2022-11-08 |
| 942 | 1.2.4.2.2.13.2 | Carga configuración inicial Fondo Ultra crecimiento | 1d | 2022-09-19 A | 2022-09-20 A | 100% | start no earlier than 2022-11-09 |
| 943 | 1.2.4.2.2.13.3 | Proceso de cálculo | 1d | 2022-09-20 A | 2022-09-21 A | 100% | start no earlier than 2022-11-10 |
| 944 | 1.2.4.2.2.13.4 | Track | 1d | 2022-09-21 A | 2022-09-22 A | 100% | start no earlier than 2022-10-03 |
| 945 | 1.2.4.2.2.13.5 | Ventanas emergentes de validación | 1d | 2022-09-22 A | 2022-09-23 A | 100% | start no earlier than 2022-10-04 |
| 946 | 1.2.4.2.2.14 | **Dashboard Fondos Seguridad** | 6d | 2022-09-23 A | 2022-10-01 A | 100% |  |
| 947 | 1.2.4.2.2.14.1 | Pantalla Principal | 1d | 2022-09-23 A | 2022-09-24 A | 100% | start no earlier than 2022-10-05 |
| 948 | 1.2.4.2.2.14.2 | Carga configuración inicial Fondo Seguridad | 1d | 2022-09-26 A | 2022-09-27 A | 100% | start no earlier than 2022-10-06 |
| 949 | 1.2.4.2.2.14.3 | Proceso de cálculo | 1d | 2022-09-27 A | 2022-09-28 A | 100% | start no earlier than 2022-10-07 |
| 950 | 1.2.4.2.2.14.4 | Track | 1d | 2022-09-28 A | 2022-09-29 A | 100% | start no earlier than 2022-10-12 |
| 951 | 1.2.4.2.2.14.5 | Ventanas emergentes de validación | 1d | 2022-09-29 A | 2022-09-30 A | 100% | start no earlier than 2022-10-13 |
| 952 | 1.2.4.2.2.14.6 | Generación de reporte | 1d | 2022-09-30 A | 2022-10-01 A | 100% | start no earlier than 2022-10-14 |
| 953 | 1.2.4.2.2.15 | **Dashboard Fondos de Desarrollo Municipal** | 6d | 2022-10-03 A | 2022-10-11 A | 100% |  |
| 954 | 1.2.4.2.2.15.1 | Pantalla Principal | 1d | 2022-10-03 A | 2022-10-04 A | 100% | start no earlier than 2022-10-17 |
| 955 | 1.2.4.2.2.15.2 | Carga configuración inicial Fondo Desarrollo Municipal | 1d | 2022-10-04 A | 2022-10-05 A | 100% | start no earlier than 2022-10-18 |
| 956 | 1.2.4.2.2.15.3 | Proceso de cálculo | 1d | 2022-10-05 A | 2022-10-06 A | 100% | start no earlier than 2022-10-19 |
| 957 | 1.2.4.2.2.15.4 | Track | 1d | 2022-10-06 A | 2022-10-07 A | 100% | start no earlier than 2022-10-24 |
| 958 | 1.2.4.2.2.15.5 | Ventanas emergentes de validación | 1d | 2022-10-07 A | 2022-10-08 A | 100% | start no earlier than 2022-10-25 |
| 959 | 1.2.4.2.2.15.6 | Generación de reporte | 1d | 2022-10-10 A | 2022-10-11 A | 100% | start no earlier than 2022-10-26 |

| ID | WBS | Task | Duration | Start | Finish | Complete | Constraint |
| --- | --- | --- | --- | --- | --- | --- | --- |
| 960 | 1.2.4.2.2.16 | **Dashboard Fondos FORTAMUN** | 22d | 2022-09-15 A | 2022-10-15 A | 100% |  |
| 961 | 1.2.4.2.2.16.1 | Track | 1d | 2022-10-14 A | 2022-10-15 A | 100% | start no earlier than 2022-11-03 |
| 962 | 1.2.4.2.2.16.2 | Ventanas emergentes de validación | 1d | 2022-09-15 A | 2022-09-16 A | 100% | start no earlier than 2022-11-04 |
| 963 | 1.2.4.2.2.16.3 | Generación de reporte | 1d | 2022-09-16 A | 2022-09-17 A | 100% | start no earlier than 2022-11-07 |
| 964 | 1.2.4.2.2.17 | **Dashboard Fondos FISM** | 1d | 2022-09-22 A | 2022-09-23 A | 100% |  |
| 965 | 1.2.4.2.2.17.1 | Track | 1d | 2022-09-22 A | 2022-09-23 A | 100% | start no earlier than 2022-10-03 |
| 966 | 1.2.4.2.3 | **Módulo DAMOP** | 22d | 2022-09-15 A | 2022-10-15 A | 100% |  |
| 967 | 1.2.4.2.3.1 | **Base** | 5d | 2022-09-29 A | 2022-10-06 A | 100% |  |
| 968 | 1.2.4.2.3.1.1 | Perfil | 1d | 2022-09-29 A | 2022-09-30 A | 100% |  |
| 969 | 1.2.4.2.3.1.2 | Pantalla Principal | 1d | 2022-09-30 A | 2022-10-01 A | 100% | start no earlier than 2022-10-10 |
| 970 | 1.2.4.2.3.1.3 | Pop up Notificaciones | 1d | 2022-10-03 A | 2022-10-04 A | 100% | start no earlier than 2022-10-11 |
| 971 | 1.2.4.2.3.1.4 | Contador de Notificaciones (Icono campanita) | 1d | 2022-10-04 A | 2022-10-05 A | 100% | start no earlier than 2022-10-04 |
| 972 | 1.2.4.2.3.1.5 | Bandeja entrada de Notificaciones | 1d | 2022-10-05 A | 2022-10-06 A | 100% | start no earlier than 2022-10-13 |
| 973 | 1.2.4.2.3.2 | **Administración de Municipios** | 7d | 2022-10-06 A | 2022-10-15 A | 100% |  |
| 974 | 1.2.4.2.3.2.1 | Pantalla principal | 1d | 2022-10-06 A | 2022-10-07 A | 100% | start no earlier than 2022-10-14 |
| 975 | 1.2.4.2.3.2.2 | Insertar | 1d | 2022-10-07 A | 2022-10-08 A | 100% | start no earlier than 2022-10-04 |
| 976 | 1.2.4.2.3.2.3 | Contactar Municipio | 1d | 2022-10-10 A | 2022-10-11 A | 100% | start no earlier than 2022-10-18 |
| 977 | 1.2.4.2.3.2.4 | Configuración de Dashboard | 1d | 2022-10-11 A | 2022-10-12 A | 100% | start no earlier than 2022-10-20 |
| 978 | 1.2.4.2.3.2.5 | Exportación de dashboard Excel | 1d | 2022-10-12 A | 2022-10-13 A | 100% | start no earlier than 2022-10-24 |
| 979 | 1.2.4.2.3.2.6 | Paginación Dashboard | 1d | 2022-10-13 A | 2022-10-14 A | 100% | start no earlier than 2022-10-25 |
| 980 | 1.2.4.2.3.2.7 | Búsqueda Dash board | 1d | 2022-10-14 A | 2022-10-15 A | 100% | start no earlier than 2022-10-26 |
| 981 | 1.2.4.2.3.2.8 | Ventanas emergentes de validación | 1d | 2022-10-14 A | 2022-10-15 A | 100% | start no earlier than 2022-10-27 |
| 982 | 1.2.4.2.3.3 | **Administración de Avisos** | 10d | 2022-09-15 A | 2022-09-29 A | 100% |  |
| 983 | 1.2.4.2.3.3.1 | Pantalla principal | 1d | 2022-09-15 A | 2022-09-16 A | 100% | start no earlier than 2022-10-04 |
| 984 | 1.2.4.2.3.3.2 | Agregar | 1d | 2022-09-16 A | 2022-09-17 A | 100% | start no earlier than 2022-10-04 |
| 985 | 1.2.4.2.3.3.3 | Eliminar | 1d | 2022-09-19 A | 2022-09-20 A | 100% | start no earlier than 2022-10-04 |
| 986 | 1.2.4.2.3.3.4 | Editar | 1d | 2022-09-20 A | 2022-09-21 A | 100% | start no earlier than 2022-10-04 |
| 987 | 1.2.4.2.3.3.5 | Configuración de Dashboard | 1d | 2022-09-21 A | 2022-09-22 A | 100% | start no earlier than 2022-10-04 |
| 988 | 1.2.4.2.3.3.6 | Exportación de dashboard PDF | 1d | 2022-09-22 A | 2022-09-23 A | 100% | start no earlier than 2022-10-04 |
| 989 | 1.2.4.2.3.3.7 | Exportación de dashboard Excel | 1d | 2022-09-23 A | 2022-09-24 A | 100% | start no earlier than 2022-10-04 |
| 990 | 1.2.4.2.3.3.8 | Paginación Dashboard | 1d | 2022-09-26 A | 2022-09-27 A | 100% | start no earlier than 2022-10-04 |
| 991 | 1.2.4.2.3.3.9 | Búsqueda Dash board | 1d | 2022-09-27 A | 2022-09-28 A | 100% | start no earlier than 2022-10-04 |
| 992 | 1.2.4.2.3.3.10 | Ventanas emergentes de validación | 1d | 2022-09-28 A | 2022-09-29 A | 100% | start no earlier than 2022-10-04 |

| ID | WBS | Task | Duration | Start | Finish | Complete | Constraint |
| --- | --- | --- | --- | --- | --- | --- | --- |
| 993 | 1.2.4.2.3.4 | **Administración de Eventos** | 10d | 2022-09-29 A | 2022-10-13 A | 100% |  |
| 994 | 1.2.4.2.3.4.1 | Pantalla principal | 1d | 2022-09-29 A | 2022-09-30 A | 100% | start no earlier than 2022-10-04 |
| 995 | 1.2.4.2.3.4.2 | Agregar | 1d | 2022-09-30 A | 2022-10-01 A | 100% | start no earlier than 2022-10-04 |
| 996 | 1.2.4.2.3.4.3 | Eliminar | 1d | 2022-10-03 A | 2022-10-04 A | 100% | start no earlier than 2022-10-04 |
| 997 | 1.2.4.2.3.4.4 | Editar | 1d | 2022-10-04 A | 2022-10-05 A | 100% | start no earlier than 2022-10-04 |
| 998 | 1.2.4.2.3.4.5 | Configuración de Dashboard | 1d | 2022-10-05 A | 2022-10-06 A | 100% | start no earlier than 2022-10-04 |
| 999 | 1.2.4.2.3.4.6 | Exportación de dashboard PDF | 1d | 2022-10-06 A | 2022-10-07 A | 100% | start no earlier than 2022-10-04 |
| 1000 | 1.2.4.2.3.4.7 | Exportación de dashboard Excel | 1d | 2022-10-07 A | 2022-10-08 A | 100% | start no earlier than 2022-10-04 |
| 1001 | 1.2.4.2.3.4.8 | Paginación Dashboard | 1d | 2022-10-10 A | 2022-10-11 A | 100% | start no earlier than 2022-10-04 |
| 1002 | 1.2.4.2.3.4.9 | Búsqueda Dash board | 1d | 2022-10-11 A | 2022-10-12 A | 100% | start no earlier than 2022-10-04 |
| 1003 | 1.2.4.2.3.4.10 | Ventanas emergentes de validación | 1d | 2022-10-12 A | 2022-10-13 A | 100% | start no earlier than 2022-10-04 |
| 1004 | 1.2.4.2.3.5 | **Administración tasa interés BANXICO** | 22d | 2022-09-15 A | 2022-10-15 A | 100% |  |
| 1005 | 1.2.4.2.3.5.1 | Pantalla principal | 1d | 2022-10-13 A | 2022-10-14 A | 100% | start no earlier than 2022-10-04 |
| 1006 | 1.2.4.2.3.5.2 | Insertar | 1d | 2022-10-14 A | 2022-10-15 A | 100% | start no earlier than 2022-10-04 |
| 1007 | 1.2.4.2.3.5.3 | Modificar | 1d | 2022-09-15 A | 2022-09-16 A | 100% | start no earlier than 2022-10-04 |
| 1008 | 1.2.4.2.3.5.4 | Eliminar | 1d | 2022-09-16 A | 2022-09-17 A | 100% | start no earlier than 2022-10-04 |
| 1009 | 1.2.4.2.3.5.5 | Visualizar | 1d | 2022-09-19 A | 2022-09-20 A | 100% | start no earlier than 2022-10-04 |
| 1010 | 1.2.4.2.3.5.6 | Job de Ejecución automática | 1d | 2022-09-20 A | 2022-09-21 A | 100% | start no earlier than 2022-10-04 |
| 1011 | 1.2.4.2.4 | **Módulo DPCP** | 3d | 2022-09-29 A | 2022-10-04 A | 100% |  |
| 1012 | 1.2.4.2.4.1 | **Dashboard Perfil DPCP** | 3d | 2022-09-29 A | 2022-10-04 A | 100% |  |
| 1013 | 1.2.4.2.4.1.1 | Pantalla Perfil | 1d | 2022-09-29 A | 2022-09-30 A | 100% | start no earlier than 2022-11-03 |
| 1014 | 1.2.4.2.4.1.2 | Pop up Notificaciones | 1d | 2022-09-30 A | 2022-10-01 A | 100% | start no earlier than 2022-11-04 |
| 1015 | 1.2.4.2.4.1.3 | Contador de Notificaciones (Icono campanita) | 1d | 2022-10-03 A | 2022-10-04 A | 100% | start no earlier than 2022-10-04 |
| 1016 | 1.2.4.2.5 | **Módulo DAF** | 3d | 2022-10-04 A | 2022-10-07 A | 100% |  |
| 1017 | 1.2.4.2.5.1 | **Dashboard Perfil DAF** | 3d | 2022-10-04 A | 2022-10-07 A | 100% |  |
| 1018 | 1.2.4.2.5.1.1 | Pantalla Perfil | 1d | 2022-10-04 A | 2022-10-05 A | 100% | start no earlier than 2022-10-25 |
| 1019 | 1.2.4.2.5.1.2 | Pop up Notificaciones | 1d | 2022-10-05 A | 2022-10-06 A | 100% | start no earlier than 2022-10-26 |
| 1020 | 1.2.4.2.5.1.3 | Contador de Notificaciones (Icono campanita) | 1d | 2022-10-06 A | 2022-10-07 A | 100% | start no earlier than 2022-10-04 |

| ID | WBS | Task | Duration | Start | Finish | Complete | Constraint |
| --- | --- | --- | --- | --- | --- | --- | --- |
| 1021 | 1.2.4.2.6 | **Módulo DCCP** | 4d | 2022-10-07 A | 2022-10-13 A | 100% |  |
| 1022 | 1.2.4.2.6.1 | **Dashboard Perfil DCCP** | 4d | 2022-10-07 A | 2022-10-13 A | 100% |  |
| 1023 | 1.2.4.2.6.1.1 | Bloqueo de Sesión | 1d | 2022-10-07 A | 2022-10-08 A | 100% | start no earlier than 2022-10-17 |
| 1024 | 1.2.4.2.6.1.2 | Perfil | 1d | 2022-10-10 A | 2022-10-11 A | 100% | start no earlier than 2022-10-18 |
| 1025 | 1.2.4.2.6.1.3 | Pop up Notificaciones | 1d | 2022-10-11 A | 2022-10-12 A | 100% | start no earlier than 2022-10-19 |
| 1026 | 1.2.4.2.6.1.4 | Contador de Notificaciones (Icono campanita) | 1d | 2022-10-12 A | 2022-10-13 A | 100% | start no earlier than 2022-10-04 |
| 1027 | 1.2.5 | **sprint 8** | 21d | 2022-10-17 A | 2022-11-15 A | 100% |  |
| 1028 | 1.2.5.1 | **BACK** | 21d | 2022-10-17 A | 2022-11-15 A | 100% |  |
| 1029 | 1.2.5.1.1 | **Módulo CPH** | 21d | 2022-10-17 A | 2022-11-15 A | 100% |  |
| 1030 | 1.2.5.1.1.1 | **Base** | 1d | 2022-10-17 A | 2022-10-18 A | 100% |  |
| 1031 | 1.2.5.1.1.1.1 | Perfil | 1d | 2022-10-17 A | 2022-10-18 A | 100% | start no earlier than 2022-10-10 |
| 1032 | 1.2.5.1.1.1.2 | Pop up Notificaciones | 1d | 2022-10-17 A | 2022-10-18 A | 100% | start no earlier than 2022-10-10 |
| 1033 | 1.2.5.1.1.1.3 | Contador de Notificaciones (Icono campanita) | 1d | 2022-10-17 A | 2022-10-18 A | 100% | start no earlier than 2022-10-11 |
| 1034 | 1.2.5.1.1.1.4 | Bandeja entrada de Notificaciones | 1d | 2022-10-17 A | 2022-10-18 A | 100% | start no earlier than 2022-10-12 |
| 1035 | 1.2.5.1.1.2 | **Administración de Municipios** | 1d | 2022-10-17 A | 2022-10-18 A | 100% |  |
| 1036 | 1.2.5.1.1.2.1 | Agregar | 1d | 2022-10-17 A | 2022-10-18 A | 100% | start no earlier than 2022-10-13 |
| 1037 | 1.2.5.1.1.2.2 | Editar | 1d | 2022-10-17 A | 2022-10-18 A | 100% | start no earlier than 2022-10-14 |
| 1038 | 1.2.5.1.1.3 | **Dashboard Articulo 14 Fracción I** | 11d | 2022-10-31 A | 2022-11-15 A | 100% |  |
| 1039 | 1.2.5.1.1.3.1 | Pantalla Principal | 1d | 2022-10-31 A | 2022-11-01 A | 100% | start no earlier than 2022-10-31 |
| 1040 | 1.2.5.1.1.3.2 | Generar plantilla | 1d | 2022-11-01 A | 2022-11-02 A | 100% | start no earlier than 2022-11-01 |
| 1041 | 1.2.5.1.1.3.3 | Carga masiva - plantilla | 1d | 2022-11-02 A | 2022-11-03 A | 100% | start no earlier than 2022-11-02 |
| 1042 | 1.2.5.1.1.3.4 | Recalculo de coeficiente | 1d | 2022-11-03 A | 2022-11-04 A | 100% | start no earlier than 2022-11-03 |
| 1043 | 1.2.5.1.1.3.5 | Editar información | 1d | 2022-11-04 A | 2022-11-05 A | 100% | start no earlier than 2022-11-04 |
| 1044 | 1.2.5.1.1.3.6 | Dashboard predial | 1d | 2022-11-07 A | 2022-11-08 A | 100% | start no earlier than 2022-11-07 |
| 1045 | 1.2.5.1.1.3.7 | Dashboard población y territorio | 1d | 2022-11-08 A | 2022-11-09 A | 100% | start no earlier than 2022-11-08 |
| 1046 | 1.2.5.1.1.3.8 | Dashboard carencia social | 1d | 2022-11-09 A | 2022-11-10 A | 100% | start no earlier than 2022-11-09 |
| 1047 | 1.2.5.1.1.3.9 | Cálculo de coeficiente | 1d | 2022-11-10 A | 2022-11-11 A | 100% | start no earlier than 2022-11-10 |
| 1048 | 1.2.5.1.1.3.10 | Proceso Autorización | 1d | 2022-11-11 A | 2022-11-12 A | 100% | start no earlier than 2022-11-11 |
| 1049 | 1.2.5.1.1.3.11 | Ventanas emergentes de validación | 1d | 2022-11-14 A | 2022-11-15 A | 100% | start no earlier than 2022-11-14 |

| ID | WBS | Task | Duration | Start | Finish | Complete | Constraint |
| --- | --- | --- | --- | --- | --- | --- | --- |
| 1050 | 1.2.5.1.1.4 | **Dashboard Articulo 14 Fracción II** | 8d | 2022-10-17 A | 2022-10-27 A | 100% |  |
| 1051 | 1.2.5.1.1.4.1 | Pantalla Principal | 1d | 2022-10-17 A | 2022-10-18 A | 100% | start no earlier than 2022-10-10 |
| 1052 | 1.2.5.1.1.4.2 | Dashboard población | 1d | 2022-10-17 A | 2022-10-18 A | 100% | start no earlier than 2022-10-11 |
| 1053 | 1.2.5.1.1.4.3 | generar plantilla | 1d | 2022-10-17 A | 2022-10-18 A | 100% | start no earlier than 2022-10-12 |
| 1054 | 1.2.5.1.1.4.4 | Carga masiva - plantilla | 1d | 2022-10-17 A | 2022-10-18 A | 100% | start no earlier than 2022-10-13 |
| 1055 | 1.2.5.1.1.4.5 | Recalculo de coeficiente | 1d | 2022-10-17 A | 2022-10-18 A | 100% | start no earlier than 2022-10-14 |
| 1056 | 1.2.5.1.1.4.6 | Editar información individual | 1d | 2022-10-17 A | 2022-10-18 A | 100% | start no earlier than 2022-10-17 |
| 1057 | 1.2.5.1.1.4.7 | Dashboard proyección población | 1d | 2022-10-18 A | 2022-10-19 A | 100% | start no earlier than 2022-10-18 |
| 1058 | 1.2.5.1.1.4.8 | Carga masiva - plantilla | 1d | 2022-10-19 A | 2022-10-20 A | 100% | start no earlier than 2022-10-19 |
| 1059 | 1.2.5.1.1.4.9 | Recalculo de coeficiente | 1d | 2022-10-20 A | 2022-10-21 A | 100% | start no earlier than 2022-10-20 |
| 1060 | 1.2.5.1.1.4.10 | Editar información individual | 1d | 2022-10-21 A | 2022-10-22 A | 100% | start no earlier than 2022-10-21 |
| 1061 | 1.2.5.1.1.4.11 | Cálculo de coeficiente | 1d | 2022-10-24 A | 2022-10-25 A | 100% | start no earlier than 2022-10-24 |
| 1062 | 1.2.5.1.1.4.12 | Proceso Autorización | 1d | 2022-10-25 A | 2022-10-26 A | 100% | start no earlier than 2022-10-25 |
| 1063 | 1.2.5.1.1.4.13 | Ventanas emergentes de validación | 1d | 2022-10-26 A | 2022-10-27 A | 100% | start no earlier than 2022-10-26 |
| 1064 | 1.2.5.1.1.5 | **Dashboard Articulo 14 Fracción III** | 21d | 2022-10-17 A | 2022-11-15 A | 100% |  |
| 1065 | 1.2.5.1.1.5.1 | Pantalla Principal | 1d | 2022-10-27 A | 2022-10-28 A | 100% | start no earlier than 2022-10-27 |
| 1066 | 1.2.5.1.1.5.2 | Dashboard eficiencia recaudatoria | 1d | 2022-10-28 A | 2022-10-29 A | 100% | start no earlier than 2022-10-28 |
| 1067 | 1.2.5.1.1.5.3 | generar plantilla | 1d | 2022-10-31 A | 2022-11-01 A | 100% | start no earlier than 2022-10-31 |
| 1068 | 1.2.5.1.1.5.4 | Carga masiva - plantilla | 1d | 2022-11-01 A | 2022-11-02 A | 100% | start no earlier than 2022-11-01 |
| 1069 | 1.2.5.1.1.5.5 | Recalculo de coeficiente | 1d | 2022-11-02 A | 2022-11-03 A | 100% | start no earlier than 2022-11-02 |
| 1070 | 1.2.5.1.1.5.6 | Editar información individual | 1d | 2022-11-03 A | 2022-11-04 A | 100% | start no earlier than 2022-11-03 |
| 1071 | 1.2.5.1.1.5.7 | Dashboard crecimiento recaudación | 1d | 2022-11-04 A | 2022-11-05 A | 100% | start no earlier than 2022-11-04 |
| 1072 | 1.2.5.1.1.5.8 | Carga masiva - plantilla | 1d | 2022-11-07 A | 2022-11-08 A | 100% | start no earlier than 2022-11-07 |
| 1073 | 1.2.5.1.1.5.9 | Recalculo de coeficiente | 1d | 2022-11-08 A | 2022-11-09 A | 100% | start no earlier than 2022-11-08 |
| 1074 | 1.2.5.1.1.5.10 | Editar información individual | 1d | 2022-11-09 A | 2022-11-10 A | 100% | start no earlier than 2022-11-09 |
| 1075 | 1.2.5.1.1.5.11 | Cálculo de coeficiente | 1d | 2022-11-10 A | 2022-11-11 A | 100% | start no earlier than 2022-11-10 |
| 1076 | 1.2.5.1.1.5.12 | Proceso Autorización | 1d | 2022-11-11 A | 2022-11-12 A | 100% | start no earlier than 2022-11-11 |
| 1077 | 1.2.5.1.1.5.13 | Ventanas emergentes de validación | 1d | 2022-11-14 A | 2022-11-15 A | 100% | start no earlier than 2022-11-14 |
| 1078 | 1.2.5.1.1.5.14 | Participaciones Federales | 1d | 2022-10-17 A | 2022-10-18 A | 100% | start no earlier than 2022-10-10 |
| 1079 | 1.2.5.1.1.5.15 | Dashboard Participaciones Federales | 1d | 2022-10-17 A | 2022-10-18 A | 100% | start no earlier than 2022-10-11 |
| 1080 | 1.2.5.1.1.5.16 | Proceso Envío general Participaciones Federales | 1d | 2022-10-17 A | 2022-10-18 A | 100% | start no earlier than 2022-10-12 |
| 1081 | 1.2.5.1.1.5.17 | Track general Participaciones Federales | 1d | 2022-10-17 A | 2022-10-18 A | 100% | start no earlier than 2022-10-13 |

| ID | WBS | Task | Duration | Start | Finish | Complete | Constraint |
| --- | --- | --- | --- | --- | --- | --- | --- |
| 1082 | 1.2.5.1.1.6 | **Dashboard FG** | 1d | 2022-10-17 A | 2022-10-18 A | 100% |  |
| 1083 | 1.2.5.1.1.6.1 | Proceso autorización | 1d | 2022-10-17 A | 2022-10-18 A | 100% | start no earlier than 2022-10-14 |
| 1084 | 1.2.5.1.1.6.2 | Proceso envío | 1d | 2022-10-17 A | 2022-10-18 A | 100% | start no earlier than 2022-10-17 |
| 1085 | 1.2.5.1.1.7 | **Dashboard FFM 70** | 2d | 2022-10-18 A | 2022-10-20 A | 100% |  |
| 1086 | 1.2.5.1.1.7.1 | Proceso autorización | 1d | 2022-10-18 A | 2022-10-19 A | 100% | start no earlier than 2022-10-18 |
| 1087 | 1.2.5.1.1.7.2 | Proceso envío | 1d | 2022-10-19 A | 2022-10-20 A | 100% | start no earlier than 2022-10-19 |
| 1088 | 1.2.5.1.1.8 | **Dashboard FFM 30** | 2d | 2022-10-20 A | 2022-10-22 A | 100% |  |
| 1089 | 1.2.5.1.1.8.1 | Proceso autorización | 1d | 2022-10-20 A | 2022-10-21 A | 100% | start no earlier than 2022-10-20 |
| 1090 | 1.2.5.1.1.8.2 | Proceso envío | 1d | 2022-10-21 A | 2022-10-22 A | 100% | start no earlier than 2022-10-21 |
| 1091 | 1.2.5.1.1.9 | **Dashboard IEPS** | 2d | 2022-10-24 A | 2022-10-26 A | 100% |  |
| 1092 | 1.2.5.1.1.9.1 | Proceso autorización | 1d | 2022-10-24 A | 2022-10-25 A | 100% | start no earlier than 2022-10-24 |
| 1093 | 1.2.5.1.1.9.2 | Proceso envío | 1d | 2022-10-25 A | 2022-10-26 A | 100% | start no earlier than 2022-10-25 |
| 1094 | 1.2.5.1.1.10 | **Dashboard IEPS GyD** | 2d | 2022-10-26 A | 2022-10-28 A | 100% |  |
| 1095 | 1.2.5.1.1.10.1 | Proceso autorización | 1d | 2022-10-26 A | 2022-10-27 A | 100% | start no earlier than 2022-10-26 |
| 1096 | 1.2.5.1.1.10.2 | Proceso envío | 1d | 2022-10-27 A | 2022-10-28 A | 100% | start no earlier than 2022-10-27 |
| 1097 | 1.2.5.1.1.11 | **Dashboard ISR Bienes Inmuebles** | 2d | 2022-10-28 A | 2022-11-01 A | 100% |  |
| 1098 | 1.2.5.1.1.11.1 | Proceso autorización | 1d | 2022-10-28 A | 2022-10-29 A | 100% | start no earlier than 2022-10-28 |
| 1099 | 1.2.5.1.1.11.2 | Proceso envío | 1d | 2022-10-31 A | 2022-11-01 A | 100% | start no earlier than 2022-10-31 |
| 1100 | 1.2.5.1.1.12 | **Dashboard FOFIR** | 2d | 2022-11-01 A | 2022-11-03 A | 100% |  |
| 1101 | 1.2.5.1.1.12.1 | Proceso autorización | 1d | 2022-11-01 A | 2022-11-02 A | 100% | start no earlier than 2022-11-01 |
| 1102 | 1.2.5.1.1.12.2 | Proceso envío | 1d | 2022-11-02 A | 2022-11-03 A | 100% | start no earlier than 2022-11-02 |
| 1103 | 1.2.5.1.1.13 | **Dashboard ISAN** | 2d | 2022-11-03 A | 2022-11-05 A | 100% |  |
| 1104 | 1.2.5.1.1.13.1 | Proceso autorización | 1d | 2022-11-03 A | 2022-11-04 A | 100% | start no earlier than 2022-11-03 |
| 1105 | 1.2.5.1.1.13.2 | Proceso envío | 1d | 2022-11-04 A | 2022-11-05 A | 100% | start no earlier than 2022-11-04 |

| ID | WBS | Task | Duration | Start | Finish | Complete | Constraint |
| --- | --- | --- | --- | --- | --- | --- | --- |
| 1106 | 1.2.5.1.1.14 | **Dashboard Comp. ISAN** | 2d | 2022-11-07 A | 2022-11-09 A | 100% |  |
| 1107 | 1.2.5.1.1.14.1 | Proceso autorización | 1d | 2022-11-07 A | 2022-11-08 A | 100% | start no earlier than 2022-11-07 |
| 1108 | 1.2.5.1.1.14.2 | Proceso envío | 1d | 2022-11-08 A | 2022-11-09 A | 100% | start no earlier than 2022-11-08 |
| 1109 | 1.2.5.1.1.15 | **Dashboard ISN** | 2d | 2022-11-09 A | 2022-11-11 A | 100% |  |
| 1110 | 1.2.5.1.1.15.1 | Proceso de Autorización | 1d | 2022-11-09 A | 2022-11-10 A | 100% | start no earlier than 2022-11-09 |
| 1111 | 1.2.5.1.1.15.2 | Proceso de Envío | 1d | 2022-11-10 A | 2022-11-11 A | 100% | start no earlier than 2022-11-10 |
| 1112 | 1.2.5.1.1.16 | **Dashboard ICV** | 2d | 2022-11-11 A | 2022-11-15 A | 100% |  |
| 1113 | 1.2.5.1.1.16.1 | Proceso de Autorización | 1d | 2022-11-11 A | 2022-11-12 A | 100% | start no earlier than 2022-11-11 |
| 1114 | 1.2.5.1.1.16.2 | Proceso de Envío | 1d | 2022-11-14 A | 2022-11-15 A | 100% | start no earlier than 2022-11-14 |
| 1115 | 1.2.5.1.1.17 | **Dashboard Fondo Ultracrecmiento** | 2d | 2022-10-17 A | 2022-10-19 A | 100% |  |
| 1116 | 1.2.5.1.1.17.1 | Pantalla Principal | 1d | 2022-10-17 A | 2022-10-18 A | 100% | start no earlier than 2022-10-10 |
| 1117 | 1.2.5.1.1.17.2 | Carga configuración inicial Fondo Ultracrecimiento | 1d | 2022-10-17 A | 2022-10-18 A | 100% | start no earlier than 2022-10-11 |
| 1118 | 1.2.5.1.1.17.3 | Proceso de Autorización | 1d | 2022-10-17 A | 2022-10-18 A | 100% | start no earlier than 2022-10-12 |
| 1119 | 1.2.5.1.1.17.4 | Proceso de Envío | 1d | 2022-10-17 A | 2022-10-18 A | 100% | start no earlier than 2022-10-13 |
| 1120 | 1.2.5.1.1.17.5 | Track | 1d | 2022-10-17 A | 2022-10-18 A | 100% | start no earlier than 2022-10-14 |
| 1121 | 1.2.5.1.1.17.6 | Ventanas emergentes de validación | 1d | 2022-10-17 A | 2022-10-18 A | 100% | start no earlier than 2022-10-17 |
| 1122 | 1.2.5.1.1.17.7 | Generación de reporte | 1d | 2022-10-18 A | 2022-10-19 A | 100% | start no earlier than 2022-10-18 |
| 1123 | 1.2.5.1.1.17.8 | Proceso Cancelación Fondo | 1d | 2022-10-17 A | 2022-10-18 A | 100% |  |
| 1124 | 1.2.5.1.1.18 | **Dashboard Fondos Descentralizado** | 9d | 2022-10-17 A | 2022-10-28 A | 100% |  |
| 1125 | 1.2.5.1.1.18.1 | Pantalla Principal | 1d | 2022-10-19 A | 2022-10-20 A | 100% | start no earlier than 2022-10-19 |
| 1126 | 1.2.5.1.1.18.2 | Carga configuración inicial Fondo Descentralizado | 1d | 2022-10-20 A | 2022-10-21 A | 100% | start no earlier than 2022-10-20 |
| 1127 | 1.2.5.1.1.18.3 | Proceso de cálculo | 1d | 2022-10-21 A | 2022-10-22 A | 100% | start no earlier than 2022-10-21 |
| 1128 | 1.2.5.1.1.18.4 | Proceso de Autorización | 1d | 2022-10-24 A | 2022-10-25 A | 100% | start no earlier than 2022-10-24 |
| 1129 | 1.2.5.1.1.18.5 | Proceso de Envío | 1d | 2022-10-25 A | 2022-10-26 A | 100% | start no earlier than 2022-10-25 |
| 1130 | 1.2.5.1.1.18.6 | Track | 1d | 2022-10-26 A | 2022-10-27 A | 100% | start no earlier than 2022-10-26 |
| 1131 | 1.2.5.1.1.18.7 | Ventanas emergentes de validación | 1d | 2022-10-27 A | 2022-10-28 A | 100% | start no earlier than 2022-10-27 |
| 1132 | 1.2.5.1.1.18.8 | Proceso Cancelación Fondo | 1d | 2022-10-17 A | 2022-10-18 A | 100% |  |

| ID | WBS | Task | Duration | Start | Finish | Complete | Constraint |
| --- | --- | --- | --- | --- | --- | --- | --- |
| 1133 | 1.2.5.1.1.19 | **Dashboard Fondos Seguridad** | 17d | 2022-10-17 A | 2022-11-09 A | 100% |  |
| 1134 | 1.2.5.1.1.19.1 | Pantalla Principal | 1d | 2022-10-28 A | 2022-10-29 A | 100% | start no earlier than 2022-10-28 |
| 1135 | 1.2.5.1.1.19.2 | Carga configuración inicial Fondo Seguridad | 1d | 2022-10-31 A | 2022-11-01 A | 100% | start no earlier than 2022-10-31 |
| 1136 | 1.2.5.1.1.19.3 | Proceso de cálculo | 1d | 2022-11-01 A | 2022-11-02 A | 100% | start no earlier than 2022-11-01 |
| 1137 | 1.2.5.1.1.19.4 | Proceso de Autorización | 1d | 2022-11-02 A | 2022-11-03 A | 100% | start no earlier than 2022-11-02 |
| 1138 | 1.2.5.1.1.19.5 | Proceso de Envío | 1d | 2022-11-03 A | 2022-11-04 A | 100% | start no earlier than 2022-11-03 |
| 1139 | 1.2.5.1.1.19.6 | Track | 1d | 2022-11-04 A | 2022-11-05 A | 100% | start no earlier than 2022-11-04 |
| 1140 | 1.2.5.1.1.19.7 | Ventanas emergentes de validación | 1d | 2022-11-07 A | 2022-11-08 A | 100% | start no earlier than 2022-11-07 |
| 1141 | 1.2.5.1.1.19.8 | Generación de reporte | 1d | 2022-11-08 A | 2022-11-09 A | 100% | start no earlier than 2022-11-08 |
| 1142 | 1.2.5.1.1.19.9 | Proceso de Cancelación Fondo | 1d | 2022-10-17 A | 2022-10-18 A | 100% |  |
| 1143 | 1.2.5.1.1.20 | **Dashboard Fondos de Desarrollo Municipal** | 21d | 2022-10-17 A | 2022-11-15 A | 100% |  |
| 1144 | 1.2.5.1.1.20.1 | Pantalla Principal | 1d | 2022-11-09 A | 2022-11-10 A | 100% | start no earlier than 2022-11-09 |
| 1145 | 1.2.5.1.1.20.2 | Carga configuración inicial Fondo Desarrollo Municipal | 1d | 2022-11-10 A | 2022-11-11 A | 100% | start no earlier than 2022-11-10 |
| 1146 | 1.2.5.1.1.20.3 | Proceso de cálculo | 1d | 2022-11-11 A | 2022-11-12 A | 100% | start no earlier than 2022-11-11 |
| 1147 | 1.2.5.1.1.20.4 | Proceso de Autorización | 1d | 2022-11-14 A | 2022-11-15 A | 100% | start no earlier than 2022-11-14 |
| 1148 | 1.2.5.1.1.20.5 | Proceso de Envío | 1d | 2022-10-17 A | 2022-10-18 A | 100% | start no earlier than 2022-10-10 |
| 1149 | 1.2.5.1.1.20.6 | Track | 1d | 2022-10-17 A | 2022-10-18 A | 100% | start no earlier than 2022-10-11 |
| 1150 | 1.2.5.1.1.20.7 | Ventanas emergentes de validación | 1d | 2022-10-17 A | 2022-10-18 A | 100% | start no earlier than 2022-10-12 |
| 1151 | 1.2.5.1.1.20.8 | Generación de reporte | 1d | 2022-10-17 A | 2022-10-18 A | 100% | start no earlier than 2022-10-13 |
| 1152 | 1.2.5.1.1.20.9 | Proceso Cancelación Fondo | 1d | 2022-10-17 A | 2022-10-18 A | 100% |  |
| 1153 | 1.2.5.1.1.21 | **Dashboard Fondos FORTAMUN** | 7d | 2022-10-17 A | 2022-10-26 A | 100% |  |
| 1154 | 1.2.5.1.1.21.1 | Pantalla Principal | 1d | 2022-10-17 A | 2022-10-18 A | 100% | start no earlier than 2022-10-14 |
| 1155 | 1.2.5.1.1.21.2 | Carga configuración inicial Fondo FORTAMUN | 1d | 2022-10-17 A | 2022-10-18 A | 100% | start no earlier than 2022-10-15 |
| 1156 | 1.2.5.1.1.21.3 | Proceso de cálculo | 1d | 2022-10-18 A | 2022-10-19 A | 100% | start no earlier than 2022-10-18 |
| 1157 | 1.2.5.1.1.21.4 | Proceso de Autorización | 1d | 2022-10-19 A | 2022-10-20 A | 100% | start no earlier than 2022-10-19 |
| 1158 | 1.2.5.1.1.21.5 | Proceso de Envío | 1d | 2022-10-20 A | 2022-10-21 A | 100% | start no earlier than 2022-10-20 |
| 1159 | 1.2.5.1.1.21.6 | Track | 1d | 2022-10-21 A | 2022-10-22 A | 100% | start no earlier than 2022-10-21 |
| 1160 | 1.2.5.1.1.21.7 | Ventanas emergentes de validación | 1d | 2022-10-24 A | 2022-10-25 A | 100% | start no earlier than 2022-10-24 |
| 1161 | 1.2.5.1.1.21.8 | Generación de reporte | 1d | 2022-10-25 A | 2022-10-26 A | 100% | start no earlier than 2022-10-25 |
| 1162 | 1.2.5.1.1.21.9 | Proceso de Cancelación Fondo | 1d | 2022-10-17 A | 2022-10-18 A | 100% |  |

| ID | WBS | Task | Duration | Start | Finish | Complete | Constraint |
| --- | --- | --- | --- | --- | --- | --- | --- |
| 1163 | 1.2.5.1.1.22 | **Dashboard Fondos FISM** | 17d | 2022-10-17 A | 2022-11-09 A | 100% |  |
| 1164 | 1.2.5.1.1.22.1 | Pantalla Principal | 1d | 2022-10-26 A | 2022-10-27 A | 100% | start no earlier than 2022-10-26 |
| 1165 | 1.2.5.1.1.22.2 | Carga configuración inicial Fondo FISM | 1d | 2022-10-27 A | 2022-10-28 A | 100% | start no earlier than 2022-10-27 |
| 1166 | 1.2.5.1.1.22.3 | Proceso de cálculo | 1d | 2022-10-28 A | 2022-10-29 A | 100% | start no earlier than 2022-10-28 |
| 1167 | 1.2.5.1.1.22.4 | Proceso de Autorización | 1d | 2022-10-31 A | 2022-11-01 A | 100% | start no earlier than 2022-10-31 |
| 1168 | 1.2.5.1.1.22.5 | Proceso de Envío | 1d | 2022-11-01 A | 2022-11-02 A | 100% | start no earlier than 2022-11-01 |
| 1169 | 1.2.5.1.1.22.6 | Track | 1d | 2022-11-02 A | 2022-11-03 A | 100% | start no earlier than 2022-11-02 |
| 1170 | 1.2.5.1.1.22.7 | Ventanas emergentes de validación | 1d | 2022-11-03 A | 2022-11-04 A | 100% | start no earlier than 2022-11-03 |
| 1171 | 1.2.5.1.1.22.8 | Generación de reporte | 1d | 2022-11-04 A | 2022-11-05 A | 100% | start no earlier than 2022-11-04 |
| 1172 | 1.2.5.1.1.22.9 | Generador de estadísticas | 1d | 2022-11-07 A | 2022-11-08 A | 100% | start no earlier than 2022-11-07 |
| 1173 | 1.2.5.1.1.22.10 | Generador de reportes | 1d | 2022-11-08 A | 2022-11-09 A | 100% | start no earlier than 2022-11-08 |
| 1174 | 1.2.5.1.1.22.11 | Proceso de Cancelación de Fondo | 1d | 2022-10-17 A | 2022-10-18 A | 100% |  |
| 1175 | 1.2.5.1.1.23 | **Dashboard FEXHI** | 1d | 2022-10-17 A | 2022-10-18 A | 100% |  |
| 1176 | 1.2.5.1.1.23.1 | Configuracion Inicial | 1d | 2022-10-17 A | 2022-10-18 A | 100% |  |
| 1177 | 1.2.5.1.1.23.2 | Carga Inicial | 1d | 2022-10-17 A | 2022-10-18 A | 100% |  |
| 1178 | 1.2.5.1.1.23.3 | Pantalla Principal | 1d | 2022-10-17 A | 2022-10-18 A | 100% |  |
| 1179 | 1.2.5.1.1.23.4 | Proceso de Cálculo | 1d | 2022-10-17 A | 2022-10-18 A | 100% |  |
| 1180 | 1.2.5.1.1.23.5 | Proceso de autorizacion | 1d | 2022-10-17 A | 2022-10-18 A | 100% |  |
| 1181 | 1.2.5.1.1.23.6 | Proceso envío | 1d | 2022-10-17 A | 2022-10-18 A | 100% |  |
| 1182 | 1.2.5.1.1.23.7 | Track | 1d | 2022-10-17 A | 2022-10-18 A | 100% |  |
| 1183 | 1.2.5.1.1.23.8 | Proceso de Cancelacion FEXHI | 1d | 2022-10-17 A | 2022-10-18 A | 100% |  |
| 1184 | 1.2.5.1.1.23.9 | Ventanas emergentes de validación | 1d | 2022-10-17 A | 2022-10-18 A | 100% |  |
| 1185 | 1.2.5.1.1.24 | **Solicitud de Cambios** | 7d | 2022-10-19 A | 2022-10-28 A | 100% |  |
| 1186 | 1.2.5.1.1.24.1 | Pantalla Principal | 1d | 2022-10-19 A | 2022-10-20 A | 100% |  |
| 1187 | 1.2.5.1.1.24.2 | Exportar | 1d | 2022-10-20 A | 2022-10-21 A | 100% |  |
| 1188 | 1.2.5.1.1.24.3 | Imprimir | 1d | 2022-10-21 A | 2022-10-22 A | 100% |  |
| 1189 | 1.2.5.1.1.24.4 | Configuracion de Dashboard | 1d | 2022-10-24 A | 2022-10-25 A | 100% |  |
| 1190 | 1.2.5.1.1.24.5 | Paginacion de Dashboard | 1d | 2022-10-25 A | 2022-10-26 A | 100% |  |
| 1191 | 1.2.5.1.1.24.6 | Busqueda Dashboard | 1d | 2022-10-26 A | 2022-10-27 A | 100% |  |
| 1192 | 1.2.5.1.1.24.7 | Ventanas emergentes de validacion | 1d | 2022-10-27 A | 2022-10-28 A | 100% |  |

| ID | WBS | Task | Duration | Start | Finish | Complete |
| --- | --- | --- | --- | --- | --- | --- |
| 1193 | 1.2.5.1.1.25 | **Tipo de Calculo** | 9d | 2022-10-28 A | 2022-11-10 A | 100% |
| 1194 | 1.2.5.1.1.25.1 | Pantalla Principal | 1d | 2022-10-28 A | 2022-10-29 A | 100% |
| 1195 | 1.2.5.1.1.25.2 | Nuevo Registro | 1d | 2022-10-31 A | 2022-11-01 A | 100% |
| 1196 | 1.2.5.1.1.25.3 | Editar Registro | 1d | 2022-11-01 A | 2022-11-02 A | 100% |
| 1197 | 1.2.5.1.1.25.4 | Eliminar Registro | 1d | 2022-11-02 A | 2022-11-03 A | 100% |
| 1198 | 1.2.5.1.1.25.5 | Eliminacion Masiva | 1d | 2022-11-03 A | 2022-11-04 A | 100% |
| 1199 | 1.2.5.1.1.25.6 | Configuracion de Dashboard | 1d | 2022-11-04 A | 2022-11-05 A | 100% |
| 1200 | 1.2.5.1.1.25.7 | Paginacion de Dashboard | 1d | 2022-11-07 A | 2022-11-08 A | 100% |
| 1201 | 1.2.5.1.1.25.8 | Busqueda Dashboard | 1d | 2022-11-08 A | 2022-11-09 A | 100% |
| 1202 | 1.2.5.1.1.25.9 | Ventanas emergentes de validacion | 1d | 2022-11-09 A | 2022-11-10 A | 100% |
| 1203 | 1.2.5.1.1.26 | **ISN 100** | 8d | 2022-10-17 A | 2022-10-27 A | 100% |
| 1204 | 1.2.5.1.1.26.1 | Pantalla Principal | 1d | 2022-10-17 A | 2022-10-18 A | 100% |
| 1205 | 1.2.5.1.1.26.2 | Track | 1d | 2022-10-18 A | 2022-10-19 A | 100% |
| 1206 | 1.2.5.1.1.26.3 | Nuevo Registro | 1d | 2022-10-19 A | 2022-10-20 A | 100% |
| 1207 | 1.2.5.1.1.26.4 | Detalles | 1d | 2022-10-20 A | 2022-10-21 A | 100% |
| 1208 | 1.2.5.1.1.26.5 | Configuracion de Dashboard | 1d | 2022-10-21 A | 2022-10-22 A | 100% |
| 1209 | 1.2.5.1.1.26.6 | Paginacion de Dashboard | 1d | 2022-10-24 A | 2022-10-25 A | 100% |
| 1210 | 1.2.5.1.1.26.7 | Busqueda Dashboard | 1d | 2022-10-25 A | 2022-10-26 A | 100% |
| 1211 | 1.2.5.1.1.26.8 | Ventanas emergentes de validacion | 1d | 2022-10-26 A | 2022-10-27 A | 100% |
| 1212 | 1.2.5.1.1.27 | **Predial** | 8d | 2022-10-27 A | 2022-11-08 A | 100% |
| 1213 | 1.2.5.1.1.27.1 | Pantalla Principal | 1d | 2022-10-27 A | 2022-10-28 A | 100% |
| 1214 | 1.2.5.1.1.27.2 | Nuevo Registro | 1d | 2022-10-28 A | 2022-10-29 A | 100% |
| 1215 | 1.2.5.1.1.27.3 | Track | 1d | 2022-10-31 A | 2022-11-01 A | 100% |
| 1216 | 1.2.5.1.1.27.4 | Detalles | 1d | 2022-11-01 A | 2022-11-02 A | 100% |
| 1217 | 1.2.5.1.1.27.5 | Configuracion de Dashboard | 1d | 2022-11-02 A | 2022-11-03 A | 100% |
| 1218 | 1.2.5.1.1.27.6 | Paginacion de Dashboard | 1d | 2022-11-03 A | 2022-11-04 A | 100% |
| 1219 | 1.2.5.1.1.27.7 | Busqueda Dashboard | 1d | 2022-11-04 A | 2022-11-05 A | 100% |
| 1220 | 1.2.5.1.1.27.8 | Ventanas emergentes de validacion | 1d | 2022-11-07 A | 2022-11-08 A | 100% |

| ID | WBS | Task | Duration | Start | Finish | Complete |
| --- | --- | --- | --- | --- | --- | --- |
| 1221 | 1.2.5.1.1.28 | **ISN Recaudacion** | 8d | 2022-10-17 A | 2022-10-27 A | 100% |
| 1222 | 1.2.5.1.1.28.1 | Pantalla Principal | 1d | 2022-10-17 A | 2022-10-18 A | 100% |
| 1223 | 1.2.5.1.1.28.2 | Descarga Plantilla | 1d | 2022-10-18 A | 2022-10-19 A | 100% |
| 1224 | 1.2.5.1.1.28.3 | Eliminar Registro | 1d | 2022-10-19 A | 2022-10-20 A | 100% |
| 1225 | 1.2.5.1.1.28.4 | Eliminacion Masiva | 1d | 2022-10-20 A | 2022-10-21 A | 100% |
| 1226 | 1.2.5.1.1.28.5 | Configuracion de Dashboard | 1d | 2022-10-21 A | 2022-10-22 A | 100% |
| 1227 | 1.2.5.1.1.28.6 | Paginacion de Dashboard | 1d | 2022-10-24 A | 2022-10-25 A | 100% |
| 1228 | 1.2.5.1.1.28.7 | Busqueda Dashboard | 1d | 2022-10-25 A | 2022-10-26 A | 100% |
| 1229 | 1.2.5.1.1.28.8 | Ventanas emergentes de validacion | 1d | 2022-10-26 A | 2022-10-27 A | 100% |
| 1230 | 1.2.5.1.1.29 | **Calculo Garantia** | 8d | 2022-10-27 A | 2022-11-08 A | 100% |
| 1231 | 1.2.5.1.1.29.1 | Pantalla Principal | 1d | 2022-10-27 A | 2022-10-28 A | 100% |
| 1232 | 1.2.5.1.1.29.2 | Descarga Plantilla | 1d | 2022-10-28 A | 2022-10-29 A | 100% |
| 1233 | 1.2.5.1.1.29.3 | Eliminar Registro | 1d | 2022-10-31 A | 2022-11-01 A | 100% |
| 1234 | 1.2.5.1.1.29.4 | Eliminacion Masiva | 1d | 2022-11-01 A | 2022-11-02 A | 100% |
| 1235 | 1.2.5.1.1.29.5 | Configuracion de Dashboard | 1d | 2022-11-02 A | 2022-11-03 A | 100% |
| 1236 | 1.2.5.1.1.29.6 | Paginacion de Dashboard | 1d | 2022-11-03 A | 2022-11-04 A | 100% |
| 1237 | 1.2.5.1.1.29.7 | Busqueda Dashboard | 1d | 2022-11-04 A | 2022-11-05 A | 100% |
| 1238 | 1.2.5.1.1.29.8 | Ventanas emergentes de validacion | 1d | 2022-11-05 A | 2022-11-08 A | 100% |
| 1239 | 1.2.5.1.1.30 | **ISAI** | 8d | 2022-11-03 A | 2022-11-15 A | 100% |
| 1240 | 1.2.5.1.1.30.1 | Pantalla Principal | 1d | 2022-11-03 A | 2022-11-04 A | 100% |
| 1241 | 1.2.5.1.1.30.2 | Carga Plantilla | 1d | 2022-11-04 A | 2022-11-05 A | 100% |
| 1242 | 1.2.5.1.1.30.3 | Descarga Plantilla | 1d | 2022-11-07 A | 2022-11-08 A | 100% |
| 1243 | 1.2.5.1.1.30.4 | Ver Detalles | 1d | 2022-11-08 A | 2022-11-09 A | 100% |
| 1244 | 1.2.5.1.1.30.5 | Configuracion de Dashboard | 1d | 2022-11-09 A | 2022-11-10 A | 100% |
| 1245 | 1.2.5.1.1.30.6 | Paginacion de Dashboard | 1d | 2022-11-10 A | 2022-11-11 A | 100% |
| 1246 | 1.2.5.1.1.30.7 | Busqueda Dashboard | 1d | 2022-11-11 A | 2022-11-12 A | 100% |
| 1247 | 1.2.5.1.1.30.8 | Ventanas emergentes de validacion | 1d | 2022-11-14 A | 2022-11-15 A | 100% |

| ID | WBS | Task | Duration | Start | Finish | Complete |
| --- | --- | --- | --- | --- | --- | --- |
| 1248 | 1.2.5.1.1.31 | **Dashboard ISR Salarios** | 9d | 2022-10-17 A | 2022-10-28 A | 100% |
| 1249 | 1.2.5.1.1.31.1 | Pantalla Principal | 1d | 2022-10-17 A | 2022-10-18 A | 100% |
| 1250 | 1.2.5.1.1.31.2 | Carga Inicial | 1d | 2022-10-18 A | 2022-10-19 A | 100% |
| 1251 | 1.2.5.1.1.31.3 | Configuracion Inicial | 1d | 2022-10-19 A | 2022-10-20 A | 100% |
| 1252 | 1.2.5.1.1.31.4 | Proceso de cálculo | 1d | 2022-10-20 A | 2022-10-21 A | 100% |
| 1253 | 1.2.5.1.1.31.5 | Proceso de autorizacion | 1d | 2022-10-21 A | 2022-10-22 A | 100% |
| 1254 | 1.2.5.1.1.31.6 | Proceso de envío | 1d | 2022-10-24 A | 2022-10-25 A | 100% |
| 1255 | 1.2.5.1.1.31.7 | Track | 1d | 2022-10-25 A | 2022-10-26 A | 100% |
| 1256 | 1.2.5.1.1.31.8 | Ventanas emergentes de validacion | 1d | 2022-10-26 A | 2022-10-27 A | 100% |
| 1257 | 1.2.5.1.1.31.9 | Proceso de Cancelación Fondo | 1d | 2022-10-27 A | 2022-10-28 A | 100% |
| 1258 | 1.2.5.1.1.32 | **Dashboard HIDROCARBUROS** | 10d | 2022-10-28 A | 2022-11-11 A | 100% |
| 1259 | 1.2.5.1.1.32.1 | Pantalla Principal | 1d | 2022-10-28 A | 2022-10-29 A | 100% |
| 1260 | 1.2.5.1.1.32.2 | Carga configuracion inicial Fondo | 1d | 2022-10-31 A | 2022-11-01 A | 100% |
| 1261 | 1.2.5.1.1.32.3 | Proceso de cálculo | 1d | 2022-11-01 A | 2022-11-02 A | 100% |
| 1262 | 1.2.5.1.1.32.4 | Proceso de autorizacion | 1d | 2022-11-02 A | 2022-11-03 A | 100% |
| 1263 | 1.2.5.1.1.32.5 | Proceso de envío | 1d | 2022-11-03 A | 2022-11-04 A | 100% |
| 1264 | 1.2.5.1.1.32.6 | Track | 1d | 2022-11-04 A | 2022-11-05 A | 100% |
| 1265 | 1.2.5.1.1.32.7 | Ventanas emergentes de validacion | 1d | 2022-11-07 A | 2022-11-08 A | 100% |
| 1266 | 1.2.5.1.1.32.8 | Generacion de Reporte | 1d | 2022-11-08 A | 2022-11-09 A | 100% |
| 1267 | 1.2.5.1.1.32.9 | Generador de Estadisticas | 1d | 2022-11-09 A | 2022-11-10 A | 100% |
| 1268 | 1.2.5.1.1.32.10 | Generador de reportes | 1d | 2022-11-10 A | 2022-11-11 A | 100% |
| 1269 | 1.2.5.1.2 | **Módulo DAMOP** | 9d | 2022-10-17 A | 2022-10-28 A | 100% |
| 1270 | 1.2.5.1.2.1 | **Municipios** | 9d | 2022-10-17 A | 2022-10-28 A | 100% |
| 1271 | 1.2.5.1.2.1.1 | Pantalla principal | 1d | 2022-10-17 A | 2022-10-18 A | 100% |
| 1272 | 1.2.5.1.2.1.2 | Exportar | 1d | 2022-10-18 A | 2022-10-19 A | 100% |
| 1273 | 1.2.5.1.2.1.3 | Visualizar Fideicomisos | 1d | 2022-10-19 A | 2022-10-20 A | 100% |
| 1274 | 1.2.5.1.2.1.4 | Visualizar Cuentas Bancarias | 1d | 2022-10-20 A | 2022-10-21 A | 100% |
| 1275 | 1.2.5.1.2.1.5 | Configuracion de Dashboard | 1d | 2022-10-21 A | 2022-10-22 A | 100% |
| 1276 | 1.2.5.1.2.1.6 | Visualizar Usuario Responsable | 1d | 2022-10-24 A | 2022-10-25 A | 100% |
| 1277 | 1.2.5.1.2.1.7 | Paginacion Dashboard | 1d | 2022-10-25 A | 2022-10-26 A | 100% |
| 1278 | 1.2.5.1.2.1.8 | Busqueda Dashboard | 1d | 2022-10-26 A | 2022-10-27 A | 100% |
| 1279 | 1.2.5.1.2.1.9 | Ventanas emergentes de validación | 1d | 2022-10-27 A | 2022-10-28 A | 100% |

| ID | WBS | Task | Duration | Start | Finish | Complete | Constraint |
| --- | --- | --- | --- | --- | --- | --- | --- |
| 1280 | 1.2.5.2 | **FRONT** | 21d | 2022-10-17 A | 2022-11-15 A | 100% |  |
| 1281 | 1.2.5.2.1 | **Módulo CPH** | 21d | 2022-10-17 A | 2022-11-15 A | 100% |  |
| 1282 | 1.2.5.2.1.1 | **Administración de Municipios** | 2d | 2022-10-27 A | 2022-10-29 A | 100% |  |
| 1283 | 1.2.5.2.1.1.1 | Agregar | 1d | 2022-10-27 A | 2022-10-28 A | 100% | start no earlier than 2022-10-27 |
| 1284 | 1.2.5.2.1.1.2 | Editar | 1d | 2022-10-28 A | 2022-10-29 A | 100% | start no earlier than 2022-10-28 |
| 1285 | 1.2.5.2.1.2 | **Administración de Presupuesto** | 21d | 2022-10-17 A | 2022-11-15 A | 100% |  |
| 1286 | 1.2.5.2.1.2.1 | Pantalla Principal | 1d | 2022-11-09 A | 2022-11-10 A | 100% | start no earlier than 2022-11-09 |
| 1287 | 1.2.5.2.1.2.2 | Agregar | 1d | 2022-11-10 A | 2022-11-11 A | 100% | start no earlier than 2022-11-10 |
| 1288 | 1.2.5.2.1.2.3 | Editar | 1d | 2022-11-11 A | 2022-11-12 A | 100% | start no earlier than 2022-11-11 |
| 1289 | 1.2.5.2.1.2.4 | Eliminar | 1d | 2022-11-14 A | 2022-11-15 A | 100% | start no earlier than 2022-11-14 |
| 1290 | 1.2.5.2.1.2.5 | Configuración de Dashboard | 1d | 2022-10-17 A | 2022-10-18 A | 100% | start no earlier than 2022-10-03 |
| 1291 | 1.2.5.2.1.2.6 | Exportación de dashboard PDF | 1d | 2022-10-17 A | 2022-10-18 A | 100% | start no earlier than 2022-10-04 |
| 1292 | 1.2.5.2.1.2.7 | Exportación de dashboard Excel | 1d | 2022-10-17 A | 2022-10-18 A | 100% | start no earlier than 2022-10-05 |
| 1293 | 1.2.5.2.1.2.8 | Paginación Dashboard | 1d | 2022-10-17 A | 2022-10-18 A | 100% | start no earlier than 2022-10-06 |
| 1294 | 1.2.5.2.1.2.9 | Búsqueda Dash board | 1d | 2022-10-17 A | 2022-10-18 A | 100% | start no earlier than 2022-10-07 |
| 1295 | 1.2.5.2.1.2.10 | Ventanas emergentes de validación | 1d | 2022-10-17 A | 2022-10-18 A | 100% | start no earlier than 2022-10-10 |
| 1296 | 1.2.5.2.1.3 | **Administración de Pobreza Extrema** | 1d | 2022-10-17 A | 2022-10-18 A | 100% |  |
| 1297 | 1.2.5.2.1.3.1 | Configuración de Dashboard | 1d | 2022-10-17 A | 2022-10-18 A | 100% | start no earlier than 2022-10-10 |
| 1298 | 1.2.5.2.1.3.2 | Exportación de dashboard PDF | 1d | 2022-10-17 A | 2022-10-18 A | 100% | start no earlier than 2022-10-11 |
| 1299 | 1.2.5.2.1.3.3 | Exportación de dashboard Excel | 1d | 2022-10-17 A | 2022-10-18 A | 100% | start no earlier than 2022-10-12 |
| 1300 | 1.2.5.2.1.3.4 | Paginación Dashboard | 1d | 2022-10-17 A | 2022-10-18 A | 100% | start no earlier than 2022-10-13 |
| 1301 | 1.2.5.2.1.3.5 | Búsqueda Dash board | 1d | 2022-10-17 A | 2022-10-18 A | 100% | start no earlier than 2022-10-14 |
| 1302 | 1.2.5.2.1.3.6 | Ventanas emergentes de validación | 1d | 2022-10-17 A | 2022-10-18 A | 100% | start no earlier than 2022-10-17 |
| 1303 | 1.2.5.2.1.4 | **Dashboard Articulo 14 Fracción I** | 11d | 2022-10-19 A | 2022-11-03 A | 100% |  |
| 1304 | 1.2.5.2.1.4.1 | Pantalla Principal | 1d | 2022-10-19 A | 2022-10-20 A | 100% | start no earlier than 2022-10-19 |
| 1305 | 1.2.5.2.1.4.2 | Generar plantilla | 1d | 2022-10-20 A | 2022-10-21 A | 100% | start no earlier than 2022-10-20 |
| 1306 | 1.2.5.2.1.4.3 | Carga masiva - plantilla | 1d | 2022-10-21 A | 2022-10-22 A | 100% | start no earlier than 2022-10-21 |
| 1307 | 1.2.5.2.1.4.4 | Recalculo de coeficiente | 1d | 2022-10-24 A | 2022-10-25 A | 100% | start no earlier than 2022-10-24 |
| 1308 | 1.2.5.2.1.4.5 | Editar información | 1d | 2022-10-25 A | 2022-10-26 A | 100% | start no earlier than 2022-10-25 |
| 1309 | 1.2.5.2.1.4.6 | Dashboard predial | 1d | 2022-10-26 A | 2022-10-27 A | 100% | start no earlier than 2022-10-26 |
| 1310 | 1.2.5.2.1.4.7 | Dashboard población y territorio | 1d | 2022-10-27 A | 2022-10-28 A | 100% | start no earlier than 2022-10-27 |
| 1311 | 1.2.5.2.1.4.8 | Dashboard carencia social | 1d | 2022-10-28 A | 2022-10-29 A | 100% | start no earlier than 2022-10-28 |
| 1312 | 1.2.5.2.1.4.9 | Cálculo de coeficiente | 1d | 2022-10-31 A | 2022-11-01 A | 100% | start no earlier than 2022-10-31 |
| 1313 | 1.2.5.2.1.4.10 | Proceso Autorización | 1d | 2022-11-01 A | 2022-11-02 A | 100% | start no earlier than 2022-11-01 |
| 1314 | 1.2.5.2.1.4.11 | Ventanas emergentes de validación | 1d | 2022-11-02 A | 2022-11-03 A | 100% | start no earlier than 2022-11-02 |

| ID | WBS | Task | Duration | Start | Finish | Complete | Constraint |
| --- | --- | --- | --- | --- | --- | --- | --- |
| 1315 | 1.2.5.2.1.5 | **Dashboard Articulo 14 Fracción II** | 21d | 2022-10-17 A | 2022-11-15 A | 100% |  |
| 1316 | 1.2.5.2.1.5.1 | Pantalla Principal | 1d | 2022-11-03 A | 2022-11-04 A | 100% | start no earlier than 2022-11-03 |
| 1317 | 1.2.5.2.1.5.2 | Dashboard población | 1d | 2022-11-04 A | 2022-11-05 A | 100% | start no earlier than 2022-11-04 |
| 1318 | 1.2.5.2.1.5.3 | generar plantilla | 1d | 2022-11-07 A | 2022-11-08 A | 100% | start no earlier than 2022-11-07 |
| 1319 | 1.2.5.2.1.5.4 | Carga masiva - plantilla | 1d | 2022-11-08 A | 2022-11-09 A | 100% | start no earlier than 2022-11-08 |
| 1320 | 1.2.5.2.1.5.5 | Recalculo de coeficiente | 1d | 2022-11-09 A | 2022-11-10 A | 100% | start no earlier than 2022-11-09 |
| 1321 | 1.2.5.2.1.5.6 | Editar información individual | 1d | 2022-11-10 A | 2022-11-11 A | 100% | start no earlier than 2022-11-10 |
| 1322 | 1.2.5.2.1.5.7 | Dashboard proyección población | 1d | 2022-11-11 A | 2022-11-12 A | 100% | start no earlier than 2022-11-11 |
| 1323 | 1.2.5.2.1.5.8 | Carga masiva - plantilla | 1d | 2022-11-14 A | 2022-11-15 A | 100% | start no earlier than 2022-11-14 |
| 1324 | 1.2.5.2.1.5.9 | Recalculo de coeficiente | 1d | 2022-10-17 A | 2022-10-18 A | 100% | start no earlier than 2022-10-10 |
| 1325 | 1.2.5.2.1.5.10 | Editar información individual | 1d | 2022-10-17 A | 2022-10-18 A | 100% | start no earlier than 2022-10-11 |
| 1326 | 1.2.5.2.1.5.11 | Cálculo de coeficiente | 1d | 2022-10-17 A | 2022-10-18 A | 100% | start no earlier than 2022-10-12 |
| 1327 | 1.2.5.2.1.5.12 | Proceso Autorización | 1d | 2022-10-17 A | 2022-10-18 A | 100% | start no earlier than 2022-10-13 |
| 1328 | 1.2.5.2.1.5.13 | Ventanas emergentes de validación | 1d | 2022-10-17 A | 2022-10-18 A | 100% | start no earlier than 2022-10-14 |
| 1329 | 1.2.5.2.1.6 | **Dashboard Articulo 14 Fracción III** | 12d | 2022-10-17 A | 2022-11-02 A | 100% |  |
| 1330 | 1.2.5.2.1.6.1 | Pantalla Principal | 1d | 2022-10-17 A | 2022-10-18 A | 100% | start no earlier than 2022-10-10 |
| 1331 | 1.2.5.2.1.6.2 | Dashboard eficiencia recaudatoria | 1d | 2022-10-17 A | 2022-10-18 A | 100% | start no earlier than 2022-10-11 |
| 1332 | 1.2.5.2.1.6.3 | generar plantilla | 1d | 2022-10-17 A | 2022-10-18 A | 100% | start no earlier than 2022-10-12 |
| 1333 | 1.2.5.2.1.6.4 | Carga masiva - plantilla | 1d | 2022-10-17 A | 2022-10-18 A | 100% | start no earlier than 2022-10-13 |
| 1334 | 1.2.5.2.1.6.5 | Recalculo de coeficiente | 1d | 2022-10-17 A | 2022-10-18 A | 100% | start no earlier than 2022-10-14 |
| 1335 | 1.2.5.2.1.6.6 | Editar información individual | 1d | 2022-10-17 A | 2022-10-18 A | 100% | start no earlier than 2022-10-17 |
| 1336 | 1.2.5.2.1.6.7 | Dashboard crecimiento recaudación | 1d | 2022-10-18 A | 2022-10-19 A | 100% | start no earlier than 2022-10-18 |
| 1337 | 1.2.5.2.1.6.8 | Carga masiva - plantilla | 1d | 2022-10-19 A | 2022-10-20 A | 100% | start no earlier than 2022-10-19 |
| 1338 | 1.2.5.2.1.6.9 | Recalculo de coeficiente | 1d | 2022-10-20 A | 2022-10-21 A | 100% | start no earlier than 2022-10-20 |
| 1339 | 1.2.5.2.1.6.10 | Editar información individual | 1d | 2022-10-21 A | 2022-10-22 A | 100% | start no earlier than 2022-10-21 |
| 1340 | 1.2.5.2.1.6.11 | Cálculo de coeficiente | 1d | 2022-10-24 A | 2022-10-25 A | 100% | start no earlier than 2022-10-24 |
| 1341 | 1.2.5.2.1.6.12 | Proceso Autorización | 1d | 2022-10-25 A | 2022-10-26 A | 100% | start no earlier than 2022-10-25 |
| 1342 | 1.2.5.2.1.6.13 | Ventanas emergentes de validación | 1d | 2022-10-26 A | 2022-10-27 A | 100% | start no earlier than 2022-10-26 |
| 1343 | 1.2.5.2.1.6.14 | Participaciones Federales | 1d | 2022-10-27 A | 2022-10-28 A | 100% | start no earlier than 2022-10-27 |
| 1344 | 1.2.5.2.1.6.15 | Dashboard Participaciones Federales | 1d | 2022-10-28 A | 2022-10-29 A | 100% | start no earlier than 2022-10-28 |
| 1345 | 1.2.5.2.1.6.16 | Proceso Envío general Participaciones Federales | 1d | 2022-10-31 A | 2022-11-01 A | 100% | start no earlier than 2022-10-31 |
| 1346 | 1.2.5.2.1.6.17 | Track general Participaciones Federales | 1d | 2022-11-01 A | 2022-11-02 A | 100% | start no earlier than 2022-11-01 |

| ID | WBS | Task | Duration | Start | Finish | Complete | Constraint |
| --- | --- | --- | --- | --- | --- | --- | --- |
| 1347 | 1.2.5.2.1.7 | **Dashboard FG** | 4d | 2022-11-08 A | 2022-11-12 A | 100% |  |
| 1348 | 1.2.5.2.1.7.1 | Proceso autorización | 1d | 2022-11-08 A | 2022-11-09 A | 100% | start no earlier than 2022-11-08 |
| 1349 | 1.2.5.2.1.7.2 | Proceso envío | 1d | 2022-11-09 A | 2022-11-10 A | 100% | start no earlier than 2022-11-09 |
| 1350 | 1.2.5.2.1.7.3 | Avance programático Fondo General | 1d | 2022-11-10 A | 2022-11-11 A | 100% | start no earlier than 2022-11-10 |
| 1351 | 1.2.5.2.1.7.4 | Proceso Cancelación Fondo General | 1d | 2022-11-11 A | 2022-11-12 A | 100% | start no earlier than 2022-11-11 |
| 1352 | 1.2.5.2.1.8 | **Dashboard FFM 70** | 1d | 2022-10-17 A | 2022-10-18 A | 100% |  |
| 1353 | 1.2.5.2.1.8.1 | Proceso autorización | 1d | 2022-10-17 A | 2022-10-18 A | 100% | start no earlier than 2022-10-10 |
| 1354 | 1.2.5.2.1.8.2 | Proceso envío | 1d | 2022-10-17 A | 2022-10-18 A | 100% | start no earlier than 2022-10-11 |
| 1355 | 1.2.5.2.1.8.3 | Proceso Cancelación Fondo General | 1d | 2022-10-17 A | 2022-10-18 A | 100% | start no earlier than 2022-10-12 |
| 1356 | 1.2.5.2.1.9 | **Dashboard FFM 30** | 4d | 2022-10-17 A | 2022-10-21 A | 100% |  |
| 1357 | 1.2.5.2.1.9.1 | Proceso autorización | 1d | 2022-10-19 A | 2022-10-20 A | 100% | start no earlier than 2022-10-19 |
| 1358 | 1.2.5.2.1.9.2 | Proceso envío | 1d | 2022-10-20 A | 2022-10-21 A | 100% | start no earlier than 2022-10-20 |
| 1359 | 1.2.5.2.1.9.3 | Proceso Cancelación Fondo General | 1d | 2022-10-17 A | 2022-10-18 A | 100% | start no earlier than 2022-10-10 |
| 1360 | 1.2.5.2.1.10 | **Dashboard IEPS** | 12d | 2022-10-17 A | 2022-11-02 A | 100% |  |
| 1361 | 1.2.5.2.1.10.1 | Proceso autorización | 1d | 2022-10-31 A | 2022-11-01 A | 100% | start no earlier than 2022-10-31 |
| 1362 | 1.2.5.2.1.10.2 | Proceso envío | 1d | 2022-11-01 A | 2022-11-02 A | 100% | start no earlier than 2022-11-01 |
| 1363 | 1.2.5.2.1.10.3 | Proceso Cancelación Fondo General | 1d | 2022-10-17 A | 2022-10-18 A | 100% | start no earlier than 2022-10-10 |
| 1364 | 1.2.5.2.1.11 | **Dashboard IEPS GyD** | 20d | 2022-10-17 A | 2022-11-12 A | 100% |  |
| 1365 | 1.2.5.2.1.11.1 | Proceso autorización | 1d | 2022-11-10 A | 2022-11-11 A | 100% | start no earlier than 2022-11-10 |
| 1366 | 1.2.5.2.1.11.2 | Proceso envío | 1d | 2022-11-11 A | 2022-11-12 A | 100% | start no earlier than 2022-11-11 |
| 1367 | 1.2.5.2.1.11.3 | Proceso Cancelación Fondo General | 1d | 2022-10-17 A | 2022-10-18 A | 100% | start no earlier than 2022-10-10 |
| 1368 | 1.2.5.2.1.12 | **Dashboard ISR Bienes Inmuebles** | 1d | 2022-10-17 A | 2022-10-18 A | 100% |  |
| 1369 | 1.2.5.2.1.12.1 | Proceso envío | 1d | 2022-10-17 A | 2022-10-18 A | 100% | start no earlier than 2022-10-11 |
| 1370 | 1.2.5.2.1.12.2 | Proceso Cancelación Fondo General | 1d | 2022-10-17 A | 2022-10-18 A | 100% | start no earlier than 2022-10-10 |

| ID | WBS | Task | Duration | Start | Finish | Complete | Constraint |
| --- | --- | --- | --- | --- | --- | --- | --- |
| 1371 | 1.2.5.2.1.13 | **Dashboard FOFIR** | 5d | 2022-10-17 A | 2022-10-22 A | 100% |  |
| 1372 | 1.2.5.2.1.13.1 | Proceso autorización | 1d | 2022-10-20 A | 2022-10-21 A | 100% | start no earlier than 2022-10-20 |
| 1373 | 1.2.5.2.1.13.2 | Proceso envío | 1d | 2022-10-21 A | 2022-10-22 A | 100% | start no earlier than 2022-10-21 |
| 1374 | 1.2.5.2.1.13.3 | Proceso Cancelación Fondo General | 1d | 2022-10-17 A | 2022-10-18 A | 100% | start no earlier than 2022-10-10 |
| 1375 | 1.2.5.2.1.14 | **Dashboard ISAN** | 1d | 2022-10-17 A | 2022-10-18 A | 100% |  |
| 1376 | 1.2.5.2.1.14.1 | Proceso autorización | 1d | 2022-10-17 A | 2022-10-18 A | 100% | start no earlier than 2022-10-10 |
| 1377 | 1.2.5.2.1.14.2 | Proceso envío | 1d | 2022-10-17 A | 2022-10-18 A | 100% | start no earlier than 2022-10-11 |
| 1378 | 1.2.5.2.1.14.3 | Proceso Cancelación Fondo General | 1d | 2022-10-17 A | 2022-10-18 A | 100% | start no earlier than 2022-10-12 |
| 1379 | 1.2.5.2.1.15 | **Dashboard Comp. ISAN** | 1d | 2022-10-17 A | 2022-10-18 A | 100% |  |
| 1380 | 1.2.5.2.1.15.1 | Proceso autorización | 1d | 2022-10-17 A | 2022-10-18 A | 100% | start no earlier than 2022-10-03 |
| 1381 | 1.2.5.2.1.15.2 | Proceso envío | 1d | 2022-10-17 A | 2022-10-18 A | 100% | start no earlier than 2022-10-04 |
| 1382 | 1.2.5.2.1.15.3 | Proceso Cancelación Fondo General | 1d | 2022-10-17 A | 2022-10-18 A | 100% | start no earlier than 2022-10-10 |
| 1383 | 1.2.5.2.1.16 | **Dashboard ISN** | 1d | 2022-10-17 A | 2022-10-18 A | 100% |  |
| 1384 | 1.2.5.2.1.16.1 | Proceso de Autorización | 1d | 2022-10-17 A | 2022-10-18 A | 100% | start no earlier than 2022-10-12 |
| 1385 | 1.2.5.2.1.16.2 | Proceso de Envío | 1d | 2022-10-17 A | 2022-10-18 A | 100% | start no earlier than 2022-10-13 |
| 1386 | 1.2.5.2.1.16.3 | Proceso Cancelación Fondo General | 1d | 2022-10-17 A | 2022-10-18 A | 100% | start no earlier than 2022-10-10 |
| 1387 | 1.2.5.2.1.17 | **Dashboard ICV** | 7d | 2022-10-17 A | 2022-10-26 A | 100% |  |
| 1388 | 1.2.5.2.1.17.1 | Proceso de Autorización | 1d | 2022-10-24 A | 2022-10-25 A | 100% | start no earlier than 2022-10-24 |
| 1389 | 1.2.5.2.1.17.2 | Proceso de Envío | 1d | 2022-10-25 A | 2022-10-26 A | 100% | start no earlier than 2022-10-25 |
| 1390 | 1.2.5.2.1.17.3 | Proceso Cancelación Fondo General | 1d | 2022-10-17 A | 2022-10-18 A | 100% | start no earlier than 2022-10-10 |
| 1391 | 1.2.5.2.1.18 | **Dashboard Fondo Ultracrecmiento** | 13d | 2022-10-17 A | 2022-11-03 A | 100% |  |
| 1392 | 1.2.5.2.1.18.1 | Proceso de Autorización | 1d | 2022-11-01 A | 2022-11-02 A | 100% | start no earlier than 2022-11-01 |
| 1393 | 1.2.5.2.1.18.2 | Proceso de Envío | 1d | 2022-11-02 A | 2022-11-03 A | 100% | start no earlier than 2022-11-02 |
| 1394 | 1.2.5.2.1.18.3 | Proceso Cancelación Fondo General | 1d | 2022-10-17 A | 2022-10-18 A | 100% | start no earlier than 2022-10-10 |

| ID | WBS | Task | Duration | Start | Finish | Complete | Constraint |
| --- | --- | --- | --- | --- | --- | --- | --- |
| 1395 | 1.2.5.2.1.19 | **Dashboard Fondos Descentralizado** | 1d | 2022-10-17 A | 2022-10-18 A | 100% |  |
| 1396 | 1.2.5.2.1.19.1 | Proceso de Autorización | 1d | 2022-10-17 A | 2022-10-18 A | 100% | start no earlier than 2022-10-12 |
| 1397 | 1.2.5.2.1.19.2 | Proceso de Envío | 1d | 2022-10-17 A | 2022-10-18 A | 100% | start no earlier than 2022-10-11 |
| 1398 | 1.2.5.2.1.19.3 | Proceso Cancelación Fondo General | 1d | 2022-10-17 A | 2022-10-18 A | 100% | start no earlier than 2022-10-10 |
| 1399 | 1.2.5.2.1.20 | **Dashboard Fondos Seguridad** | 1d | 2022-10-17 A | 2022-10-18 A | 100% |  |
| 1400 | 1.2.5.2.1.20.1 | Proceso de Autorización | 1d | 2022-10-17 A | 2022-10-18 A | 100% | start no earlier than 2022-10-13 |
| 1401 | 1.2.5.2.1.20.2 | Proceso de Envío | 1d | 2022-10-17 A | 2022-10-18 A | 100% | start no earlier than 2022-10-14 |
| 1402 | 1.2.5.2.1.20.3 | Proceso Cancelación Fondo General | 1d | 2022-10-17 A | 2022-10-18 A | 100% | start no earlier than 2022-10-10 |
| 1403 | 1.2.5.2.1.21 | **Dashboard Fondos de Desarrollo Municipal** | 5d | 2022-10-17 A | 2022-10-22 A | 100% |  |
| 1404 | 1.2.5.2.1.21.1 | Proceso de Autorización | 1d | 2022-10-20 A | 2022-10-21 A | 100% | start no earlier than 2022-10-20 |
| 1405 | 1.2.5.2.1.21.2 | Proceso de Envío | 1d | 2022-10-21 A | 2022-10-22 A | 100% | start no earlier than 2022-10-21 |
| 1406 | 1.2.5.2.1.21.3 | Proceso Cancelación Fondo General | 1d | 2022-10-17 A | 2022-10-18 A | 100% | start no earlier than 2022-10-10 |
| 1407 | 1.2.5.2.1.22 | **Dashboard Fondos FORTAMUN** | 13d | 2022-10-17 A | 2022-11-03 A | 100% |  |
| 1408 | 1.2.5.2.1.22.1 | Proceso de Autorización | 1d | 2022-11-01 A | 2022-11-02 A | 100% | start no earlier than 2022-11-01 |
| 1409 | 1.2.5.2.1.22.2 | Proceso de Envío | 1d | 2022-11-02 A | 2022-11-03 A | 100% | start no earlier than 2022-11-02 |
| 1410 | 1.2.5.2.1.22.3 | Proceso Cancelación Fondo General | 1d | 2022-10-17 A | 2022-10-18 A | 100% | start no earlier than 2022-10-10 |
| 1411 | 1.2.5.2.1.23 | **Dashboard Fondos FISM** | 21d | 2022-10-17 A | 2022-11-15 A | 100% |  |
| 1412 | 1.2.5.2.1.23.1 | Proceso de Autorización | 1d | 2022-11-11 A | 2022-11-12 A | 100% | start no earlier than 2022-11-11 |
| 1413 | 1.2.5.2.1.23.2 | Proceso de Envío | 1d | 2022-11-14 A | 2022-11-15 A | 100% | start no earlier than 2022-11-14 |
| 1414 | 1.2.5.2.1.23.3 | Proceso Cancelación Fondo General | 1d | 2022-10-17 A | 2022-10-18 A | 100% | start no earlier than 2022-10-10 |
| 1415 | 1.2.5.2.1.24 | **Dashboard FEXHI** | 9d | 2022-10-17 A | 2022-10-28 A | 100% |  |
| 1416 | 1.2.5.2.1.24.1 | Configuracion Inicial | 1d | 2022-10-17 A | 2022-10-18 A | 100% |  |
| 1417 | 1.2.5.2.1.24.2 | Carga Inicial | 1d | 2022-10-18 A | 2022-10-19 A | 100% |  |
| 1418 | 1.2.5.2.1.24.3 | Pantalla Principal | 1d | 2022-10-19 A | 2022-10-20 A | 100% |  |
| 1419 | 1.2.5.2.1.24.4 | Proceso de Cálculo | 1d | 2022-10-20 A | 2022-10-21 A | 100% |  |
| 1420 | 1.2.5.2.1.24.5 | Proceso de autorizacion | 1d | 2022-10-21 A | 2022-10-22 A | 100% |  |
| 1421 | 1.2.5.2.1.24.6 | Proceso envío | 1d | 2022-10-24 A | 2022-10-25 A | 100% |  |
| 1422 | 1.2.5.2.1.24.7 | Track | 1d | 2022-10-25 A | 2022-10-26 A | 100% |  |
| 1423 | 1.2.5.2.1.24.8 | Proceso de Cancelacion FEXHI | 1d | 2022-10-26 A | 2022-10-27 A | 100% |  |
| 1424 | 1.2.5.2.1.24.9 | Ventanas emergentes de validación | 1d | 2022-10-27 A | 2022-10-28 A | 100% |  |

| ID | WBS | Task | Duration | Start | Finish | Complete |
| --- | --- | --- | --- | --- | --- | --- |
| 1425 | 1.2.5.2.1.25 | **Solicitud de Cambios** | 7d | 2022-10-19 A | 2022-10-28 A | 100% |
| 1426 | 1.2.5.2.1.25.1 | Pantalla Principal | 1d | 2022-10-19 A | 2022-10-20 A | 100% |
| 1427 | 1.2.5.2.1.25.2 | Exportar | 1d | 2022-10-20 A | 2022-10-21 A | 100% |
| 1428 | 1.2.5.2.1.25.3 | Imprimir | 1d | 2022-10-21 A | 2022-10-22 A | 100% |
| 1429 | 1.2.5.2.1.25.4 | Configuracion de Dashboard | 1d | 2022-10-24 A | 2022-10-25 A | 100% |
| 1430 | 1.2.5.2.1.25.5 | Paginacion de Dashboard | 1d | 2022-10-25 A | 2022-10-26 A | 100% |
| 1431 | 1.2.5.2.1.25.6 | Busqueda Dashboard | 1d | 2022-10-26 A | 2022-10-27 A | 100% |
| 1432 | 1.2.5.2.1.25.7 | Ventanas emergentes de validacion | 1d | 2022-10-27 A | 2022-10-28 A | 100% |
| 1433 | 1.2.5.2.1.26 | **Tipo de Calculo** | 9d | 2022-10-28 A | 2022-11-10 A | 100% |
| 1434 | 1.2.5.2.1.26.1 | Pantalla Principal | 1d | 2022-10-28 A | 2022-10-29 A | 100% |
| 1435 | 1.2.5.2.1.26.2 | Nuevo Registro | 1d | 2022-10-31 A | 2022-11-01 A | 100% |
| 1436 | 1.2.5.2.1.26.3 | Editar Registro | 1d | 2022-11-01 A | 2022-11-02 A | 100% |
| 1437 | 1.2.5.2.1.26.4 | Eliminar Registro | 1d | 2022-11-02 A | 2022-11-03 A | 100% |
| 1438 | 1.2.5.2.1.26.5 | Eliminacion Masiva | 1d | 2022-11-03 A | 2022-11-04 A | 100% |
| 1439 | 1.2.5.2.1.26.6 | Configuracion de Dashboard | 1d | 2022-11-04 A | 2022-11-05 A | 100% |
| 1440 | 1.2.5.2.1.26.7 | Paginacion de Dashboard | 1d | 2022-11-07 A | 2022-11-08 A | 100% |
| 1441 | 1.2.5.2.1.26.8 | Busqueda Dashboard | 1d | 2022-11-08 A | 2022-11-09 A | 100% |
| 1442 | 1.2.5.2.1.26.9 | Ventanas emergentes de validacion | 1d | 2022-11-09 A | 2022-11-10 A | 100% |
| 1443 | 1.2.5.2.1.27 | **ISN 100** | 8d | 2022-10-17 A | 2022-10-27 A | 100% |
| 1444 | 1.2.5.2.1.27.1 | Pantalla Principal | 1d | 2022-10-17 A | 2022-10-18 A | 100% |
| 1445 | 1.2.5.2.1.27.2 | Track | 1d | 2022-10-18 A | 2022-10-19 A | 100% |
| 1446 | 1.2.5.2.1.27.3 | Nuevo Registro | 1d | 2022-10-19 A | 2022-10-20 A | 100% |
| 1447 | 1.2.5.2.1.27.4 | Detalles | 1d | 2022-10-20 A | 2022-10-21 A | 100% |
| 1448 | 1.2.5.2.1.27.5 | Configuracion de Dashboard | 1d | 2022-10-21 A | 2022-10-22 A | 100% |
| 1449 | 1.2.5.2.1.27.6 | Paginacion de Dashboard | 1d | 2022-10-24 A | 2022-10-25 A | 100% |
| 1450 | 1.2.5.2.1.27.7 | Busqueda Dashboard | 1d | 2022-10-25 A | 2022-10-26 A | 100% |
| 1451 | 1.2.5.2.1.27.8 | Ventanas emergentes de validacion | 1d | 2022-10-26 A | 2022-10-27 A | 100% |

| ID | WBS | Task | Duration | Start | Finish | Complete |
| --- | --- | --- | --- | --- | --- | --- |
| 1452 | 1.2.5.2.1.28 | **Predial** | 8d | 2022-10-27 A | 2022-11-08 A | 100% |
| 1453 | 1.2.5.2.1.28.1 | Pantalla Principal | 1d | 2022-10-27 A | 2022-10-28 A | 100% |
| 1454 | 1.2.5.2.1.28.2 | Nuevo Registro | 1d | 2022-10-28 A | 2022-10-29 A | 100% |
| 1455 | 1.2.5.2.1.28.3 | Track | 1d | 2022-10-31 A | 2022-11-01 A | 100% |
| 1456 | 1.2.5.2.1.28.4 | Detalles | 1d | 2022-11-01 A | 2022-11-02 A | 100% |
| 1457 | 1.2.5.2.1.28.5 | Configuracion de Dashboard | 1d | 2022-11-02 A | 2022-11-03 A | 100% |
| 1458 | 1.2.5.2.1.28.6 | Paginacion de Dashboard | 1d | 2022-11-03 A | 2022-11-04 A | 100% |
| 1459 | 1.2.5.2.1.28.7 | Busqueda Dashboard | 1d | 2022-11-04 A | 2022-11-05 A | 100% |
| 1460 | 1.2.5.2.1.28.8 | Ventanas emergentes de validacion | 1d | 2022-11-07 A | 2022-11-08 A | 100% |
| 1461 | 1.2.5.2.1.29 | **ISN Recaudacion** | 8d | 2022-10-17 A | 2022-10-27 A | 100% |
| 1462 | 1.2.5.2.1.29.1 | Pantalla Principal | 1d | 2022-10-17 A | 2022-10-18 A | 100% |
| 1463 | 1.2.5.2.1.29.2 | Descarga Plantilla | 1d | 2022-10-18 A | 2022-10-19 A | 100% |
| 1464 | 1.2.5.2.1.29.3 | Eliminar Registro | 1d | 2022-10-19 A | 2022-10-20 A | 100% |
| 1465 | 1.2.5.2.1.29.4 | Eliminacion Masiva | 1d | 2022-10-20 A | 2022-10-21 A | 100% |
| 1466 | 1.2.5.2.1.29.5 | Configuracion de Dashboard | 1d | 2022-10-21 A | 2022-10-22 A | 100% |
| 1467 | 1.2.5.2.1.29.6 | Paginacion de Dashboard | 1d | 2022-10-24 A | 2022-10-25 A | 100% |
| 1468 | 1.2.5.2.1.29.7 | Busqueda Dashboard | 1d | 2022-10-25 A | 2022-10-26 A | 100% |
| 1469 | 1.2.5.2.1.29.8 | Ventanas emergentes de validacion | 1d | 2022-10-26 A | 2022-10-27 A | 100% |
| 1470 | 1.2.5.2.1.30 | **Calculo Garantia** | 8d | 2022-10-27 A | 2022-11-08 A | 100% |
| 1471 | 1.2.5.2.1.30.1 | Pantalla Principal | 1d | 2022-10-27 A | 2022-10-28 A | 100% |
| 1472 | 1.2.5.2.1.30.2 | Descarga Plantilla | 1d | 2022-10-28 A | 2022-10-29 A | 100% |
| 1473 | 1.2.5.2.1.30.3 | Eliminar Registro | 1d | 2022-10-31 A | 2022-11-01 A | 100% |
| 1474 | 1.2.5.2.1.30.4 | Eliminacion Masiva | 1d | 2022-11-01 A | 2022-11-02 A | 100% |
| 1475 | 1.2.5.2.1.30.5 | Configuracion de Dashboard | 1d | 2022-11-02 A | 2022-11-03 A | 100% |
| 1476 | 1.2.5.2.1.30.6 | Paginacion de Dashboard | 1d | 2022-11-03 A | 2022-11-04 A | 100% |
| 1477 | 1.2.5.2.1.30.7 | Busqueda Dashboard | 1d | 2022-11-04 A | 2022-11-05 A | 100% |
| 1478 | 1.2.5.2.1.30.8 | Ventanas emergentes de validacion | 1d | 2022-11-05 A | 2022-11-08 A | 100% |

| ID | WBS | Task | Duration | Start | Finish | Complete |
| --- | --- | --- | --- | --- | --- | --- |
| 1479 | 1.2.5.2.1.31 | **ISAI** | 8d | 2022-11-03 A | 2022-11-15 A | 100% |
| 1480 | 1.2.5.2.1.31.1 | Pantalla Principal | 1d | 2022-11-03 A | 2022-11-04 A | 100% |
| 1481 | 1.2.5.2.1.31.2 | Carga Plantilla | 1d | 2022-11-04 A | 2022-11-05 A | 100% |
| 1482 | 1.2.5.2.1.31.3 | Descarga Plantilla | 1d | 2022-11-07 A | 2022-11-08 A | 100% |
| 1483 | 1.2.5.2.1.31.4 | Ver Detalles | 1d | 2022-11-08 A | 2022-11-09 A | 100% |
| 1484 | 1.2.5.2.1.31.5 | Configuracion de Dashboard | 1d | 2022-11-09 A | 2022-11-10 A | 100% |
| 1485 | 1.2.5.2.1.31.6 | Paginacion de Dashboard | 1d | 2022-11-10 A | 2022-11-11 A | 100% |
| 1486 | 1.2.5.2.1.31.7 | Busqueda Dashboard | 1d | 2022-11-11 A | 2022-11-12 A | 100% |
| 1487 | 1.2.5.2.1.31.8 | Ventanas emergentes de validacion | 1d | 2022-11-14 A | 2022-11-15 A | 100% |
| 1488 | 1.2.5.2.1.32 | **Dashboard ISR Salarios** | 9d | 2022-10-17 A | 2022-10-28 A | 100% |
| 1489 | 1.2.5.2.1.32.1 | Pantalla Principal | 1d | 2022-10-17 A | 2022-10-18 A | 100% |
| 1490 | 1.2.5.2.1.32.2 | Carga Inicial | 1d | 2022-10-18 A | 2022-10-19 A | 100% |
| 1491 | 1.2.5.2.1.32.3 | Configuracion Inicial | 1d | 2022-10-19 A | 2022-10-20 A | 100% |
| 1492 | 1.2.5.2.1.32.4 | Proceso de cálculo | 1d | 2022-10-20 A | 2022-10-21 A | 100% |
| 1493 | 1.2.5.2.1.32.5 | Proceso de autorizacion | 1d | 2022-10-21 A | 2022-10-22 A | 100% |
| 1494 | 1.2.5.2.1.32.6 | Proceso de envío | 1d | 2022-10-24 A | 2022-10-25 A | 100% |
| 1495 | 1.2.5.2.1.32.7 | Track | 1d | 2022-10-25 A | 2022-10-26 A | 100% |
| 1496 | 1.2.5.2.1.32.8 | Ventanas emergentes de validacion | 1d | 2022-10-26 A | 2022-10-27 A | 100% |
| 1497 | 1.2.5.2.1.32.9 | Proceso de Cancelación Fondo | 1d | 2022-10-27 A | 2022-10-28 A | 100% |
| 1498 | 1.2.5.2.1.33 | **Dashboard HIDROCARBUROS** | 10d | 2022-10-28 A | 2022-11-11 A | 100% |
| 1499 | 1.2.5.2.1.33.1 | Pantalla Principal | 1d | 2022-10-28 A | 2022-10-29 A | 100% |
| 1500 | 1.2.5.2.1.33.2 | Carga configuracion inicial Fondo | 1d | 2022-10-31 A | 2022-11-01 A | 100% |
| 1501 | 1.2.5.2.1.33.3 | Proceso de cálculo | 1d | 2022-11-01 A | 2022-11-02 A | 100% |
| 1502 | 1.2.5.2.1.33.4 | Proceso de autorizacion | 1d | 2022-11-02 A | 2022-11-03 A | 100% |
| 1503 | 1.2.5.2.1.33.5 | Proceso de envío | 1d | 2022-11-03 A | 2022-11-04 A | 100% |
| 1504 | 1.2.5.2.1.33.6 | Track | 1d | 2022-11-04 A | 2022-11-05 A | 100% |
| 1505 | 1.2.5.2.1.33.7 | Ventanas emergentes de validacion | 1d | 2022-11-07 A | 2022-11-08 A | 100% |
| 1506 | 1.2.5.2.1.33.8 | Generacion de Reporte | 1d | 2022-11-08 A | 2022-11-09 A | 100% |
| 1507 | 1.2.5.2.1.33.9 | Generador de Estadisticas | 1d | 2022-11-09 A | 2022-11-10 A | 100% |
| 1508 | 1.2.5.2.1.33.10 | Generador de reportes | 1d | 2022-11-10 A | 2022-11-11 A | 100% |

| ID | WBS | Task | Duration | Start | Finish | Complete | Remaining | Total slack | Constraint |
| --- | --- | --- | --- | --- | --- | --- | --- | --- | --- |
| 1509 | 1.2.5.2.2 | **Módulo DAMOP** | 9d | 2022-10-17 A | 2022-10-28 A | 100% |  |  |  |
| 1510 | 1.2.5.2.2.1 | **Municipios** | 9d | 2022-10-17 A | 2022-10-28 A | 100% |  |  |  |
| 1511 | 1.2.5.2.2.1.1 | Pantalla principal | 1d | 2022-10-17 A | 2022-10-18 A | 100% |  |  |  |
| 1512 | 1.2.5.2.2.1.2 | Exportar | 1d | 2022-10-18 A | 2022-10-19 A | 100% |  |  |  |
| 1513 | 1.2.5.2.2.1.3 | Visualizar Fideicomisos | 1d | 2022-10-19 A | 2022-10-20 A | 100% |  |  |  |
| 1514 | 1.2.5.2.2.1.4 | Visualizar Cuentas Bancarias | 1d | 2022-10-20 A | 2022-10-21 A | 100% |  |  |  |
| 1515 | 1.2.5.2.2.1.5 | Configuracion de Dashboard | 1d | 2022-10-21 A | 2022-10-22 A | 100% |  |  |  |
| 1516 | 1.2.5.2.2.1.6 | Visualizar Usuario Responsable | 1d | 2022-10-24 A | 2022-10-25 A | 100% |  |  |  |
| 1517 | 1.2.5.2.2.1.7 | Paginacion Dashboard | 1d | 2022-10-25 A | 2022-10-26 A | 100% |  |  |  |
| 1518 | 1.2.5.2.2.1.8 | Busqueda Dashboard | 1d | 2022-10-26 A | 2022-10-27 A | 100% |  |  |  |
| 1519 | 1.2.5.2.2.1.9 | Ventanas emergentes de validación | 1d | 2022-10-27 A | 2022-10-28 A | 100% |  |  |  |
| 1520 | 1.2.6 | **sprint 9** | 23d | 2022-11-14 A | 2022-12-15 | 93% | 1.5d |  |  |
| 1521 | 1.2.6.1 | **BACK** | 23d? | 2022-11-14 A | 2022-12-15 | 94% | 1.49d? | 33d |  |
| 1522 | 1.2.6.1.1 | **Módulo DAMOP** | 23d? | 2022-11-14 A | 2022-12-15 A | 100% |  |  |  |
| 1523 | 1.2.6.1.1.1 | **Base** | 4d | 2022-11-15 A | 2022-11-19 A | 100% |  |  |  |
| 1524 | 1.2.6.1.1.1.1 | Pantalla Principal | 1d | 2022-11-15 A | 2022-11-16 A | 100% |  |  | start no earlier than 2022-11-15 |
| 1525 | 1.2.6.1.1.1.2 | Pop up Notificaciones | 1d | 2022-11-16 A | 2022-11-17 A | 100% |  |  | start no earlier than 2022-11-16 |
| 1526 | 1.2.6.1.1.1.3 | Contador de Notificaciones (Icono campanita) | 1d | 2022-11-17 A | 2022-11-18 A | 100% |  |  | start no earlier than 2022-11-17 |
| 1527 | 1.2.6.1.1.1.4 | Bandeja entrada de Notificaciones | 1d | 2022-11-18 A | 2022-11-19 A | 100% |  |  | start no earlier than 2022-11-18 |
| 1528 | 1.2.6.1.1.2 | **Bancos** | 9d | 2022-11-21 A | 2022-12-02 A | 100% |  |  |  |
| 1529 | 1.2.6.1.1.2.1 | Pantalla principal | 1d | 2022-11-21 A | 2022-11-22 A | 100% |  |  |  |
| 1530 | 1.2.6.1.1.2.2 | Agregar | 1d | 2022-11-22 A | 2022-11-23 A | 100% |  |  |  |
| 1531 | 1.2.6.1.1.2.3 | Exportar | 1d | 2022-11-23 A | 2022-11-24 A | 100% |  |  |  |
| 1532 | 1.2.6.1.1.2.4 | Editar | 1d | 2022-11-24 A | 2022-11-25 A | 100% |  |  |  |
| 1533 | 1.2.6.1.1.2.5 | Eliminar | 1d | 2022-11-25 A | 2022-11-26 A | 100% |  |  |  |
| 1534 | 1.2.6.1.1.2.6 | Configuracion de Dashboard | 1d | 2022-11-28 A | 2022-11-29 A | 100% |  |  |  |
| 1535 | 1.2.6.1.1.2.7 | Paginacion Dashboard | 1d | 2022-11-29 A | 2022-11-30 A | 100% |  |  |  |
| 1536 | 1.2.6.1.1.2.8 | Busqueda Dashboard | 1d | 2022-11-30 A | 2022-12-01 A | 100% |  |  |  |
| 1537 | 1.2.6.1.1.2.9 | Ventanas emergentes de validación | 1d | 2022-12-01 A | 2022-12-02 A | 100% |  |  |  |

| ID | WBS | Task | Duration | Start | Finish | Complete |
| --- | --- | --- | --- | --- | --- | --- |
| 1538 | 1.2.6.1.1.3 | **Divisas** | 9d | 2022-12-02 A | 2022-12-15 A | 100% |
| 1539 | 1.2.6.1.1.3.1 | Pantalla principal | 1d | 2022-12-02 A | 2022-12-03 A | 100% |
| 1540 | 1.2.6.1.1.3.2 | Agregar | 1d | 2022-12-05 A | 2022-12-06 A | 100% |
| 1541 | 1.2.6.1.1.3.3 | Exportar | 1d | 2022-12-06 A | 2022-12-07 A | 100% |
| 1542 | 1.2.6.1.1.3.4 | Editar | 1d | 2022-12-07 A | 2022-12-08 A | 100% |
| 1543 | 1.2.6.1.1.3.5 | Eliminar | 1d | 2022-12-08 A | 2022-12-09 A | 100% |
| 1544 | 1.2.6.1.1.3.6 | Configuracion de Dashboard | 1d | 2022-12-09 A | 2022-12-10 A | 100% |
| 1545 | 1.2.6.1.1.3.7 | Paginacion Dashboard | 1d | 2022-12-12 A | 2022-12-13 A | 100% |
| 1546 | 1.2.6.1.1.3.8 | Busqueda Dashboard | 1d | 2022-12-13 A | 2022-12-14 A | 100% |
| 1547 | 1.2.6.1.1.3.9 | Ventanas emergentes de validación | 1d | 2022-12-14 A | 2022-12-15 A | 100% |
| 1548 | 1.2.6.1.1.4 | **Participaciones y Aportaciones** | 23d | 2022-11-14 A | 2022-12-15 A | 100% |
| 1549 | 1.2.6.1.1.4.1 | Pantalla principal | 1d | 2022-11-14 A | 2022-11-15 A | 100% |
| 1550 | 1.2.6.1.1.4.2 | Filtro Fondo | 1d | 2022-11-15 A | 2022-11-16 A | 100% |
| 1551 | 1.2.6.1.1.4.3 | Filtro Fondo Recursos por convenio | 1d | 2022-11-16 A | 2022-11-17 A | 100% |
| 1552 | 1.2.6.1.1.4.4 | Filtro Fondo Participaciones Federales | 1d | 2022-11-17 A | 2022-11-18 A | 100% |
| 1553 | 1.2.6.1.1.4.5 | Filtro Fondo Participaciones Estatales | 1d | 2022-11-18 A | 2022-11-19 A | 100% |
| 1554 | 1.2.6.1.1.4.6 | Filtro Fondo Aportaciones Federales | 1d | 2022-11-21 A | 2022-11-22 A | 100% |
| 1555 | 1.2.6.1.1.4.7 | Filtro Fondo Aportaciones Estatales | 1d | 2022-11-22 A | 2022-11-23 A | 100% |
| 1556 | 1.2.6.1.1.4.8 | Filtro Tipo | 1d | 2022-11-23 A | 2022-11-24 A | 100% |
| 1557 | 1.2.6.1.1.4.9 | Filtro Tipo IEPS | 1d | 2022-11-24 A | 2022-11-25 A | 100% |
| 1558 | 1.2.6.1.1.4.10 | Filtro Tipo FOFIR | 1d | 2022-11-25 A | 2022-11-26 A | 100% |
| 1559 | 1.2.6.1.1.4.11 | Filtro Tipo ISAN | 1d | 2022-11-28 A | 2022-11-29 A | 100% |
| 1560 | 1.2.6.1.1.4.12 | Filtro Tipo FEXHI | 1d | 2022-11-29 A | 2022-11-30 A | 100% |
| 1561 | 1.2.6.1.1.4.13 | Filtro Tipo COMP ISAN | 1d | 2022-11-30 A | 2022-12-01 A | 100% |
| 1562 | 1.2.6.1.1.4.14 | Filtro Tipo IEPSGyD | 1d | 2022-12-01 A | 2022-12-02 A | 100% |
| 1563 | 1.2.6.1.1.4.15 | Filtro Tipo ISR SALARIOS | 1d | 2022-12-02 A | 2022-12-03 A | 100% |
| 1564 | 1.2.6.1.1.4.16 | Filtro Tipo PREDIAL | 1d | 2022-12-05 A | 2022-12-06 A | 100% |
| 1565 | 1.2.6.1.1.4.17 | Filtro Tipo FEIEF | 1d | 2022-12-06 A | 2022-12-07 A | 100% |
| 1566 | 1.2.6.1.1.4.18 | Filtro Tipo ISN ICV | 1d | 2022-12-07 A | 2022-12-08 A | 100% |
| 1567 | 1.2.6.1.1.4.19 | Filtro Tipo ISN 100 | 1d | 2022-12-08 A | 2022-12-09 A | 100% |
| 1568 | 1.2.6.1.1.4.20 | Filtro Tipo FOULT | 1d | 2022-12-09 A | 2022-12-10 A | 100% |
| 1569 | 1.2.6.1.1.4.21 | Filtro Tipo FODES | 1d | 2022-12-12 A | 2022-12-13 A | 100% |
| 1570 | 1.2.6.1.1.4.22 | Filtro Tipo FOSEGUM | 1d | 2022-12-13 A | 2022-12-14 A | 100% |
| 1571 | 1.2.6.1.1.4.23 | Filtro Tipo FODEM | 1d | 2022-12-14 A | 2022-12-15 A | 100% |
| 1572 | 1.2.6.1.1.4.24 | Filtro Tipo FORTAMUN | 1d | 2022-11-14 A | 2022-11-15 A | 100% |
| 1573 | 1.2.6.1.1.4.25 | Filtro Tipo FISM | 1d | 2022-11-15 A | 2022-11-16 A | 100% |
| 1574 | 1.2.6.1.1.4.26 | Filtro Tipo ISR INMUEBLES | 1d | 2022-11-16 A | 2022-11-17 A | 100% |
| 1575 | 1.2.6.1.1.4.27 | Filtro Tipo HIDROCARBUROS | 1d | 2022-11-17 A | 2022-11-18 A | 100% |
| 1576 | 1.2.6.1.1.4.28 | Filtro Tipo FGP | 1d | 2022-11-18 A | 2022-11-19 A | 100% |
| 1577 | 1.2.6.1.1.4.29 | Filtro Tipo FFM30 | 1d | 2022-11-21 A | 2022-11-22 A | 100% |
| 1578 | 1.2.6.1.1.4.30 | Filtro Tipo FFM70 | 1d | 2022-11-22 A | 2022-11-23 A | 100% |
| 1579 | 1.2.6.1.1.4.31 | Filtro Municipio | 1d | 2022-11-23 A | 2022-11-24 A | 100% |
| 1580 | 1.2.6.1.1.4.32 | Solicitar suficiencia presupuestal | 1d | 2022-11-24 A | 2022-11-25 A | 100% |
| 1581 | 1.2.6.1.1.4.33 | Generar Solicitud | 1d | 2022-11-25 A | 2022-11-26 A | 100% |
| 1582 | 1.2.6.1.1.4.34 | Generar Comentario | 1d | 2022-11-28 A | 2022-11-29 A | 100% |
| 1583 | 1.2.6.1.1.4.35 | Generar Anticipo | 1d | 2022-11-29 A | 2022-11-30 A | 100% |
| 1584 | 1.2.6.1.1.4.36 | Descargar Plantilla | 1d | 2022-11-30 A | 2022-12-01 A | 100% |
| 1585 | 1.2.6.1.1.4.37 | Carga Plantilla | 1d | 2022-12-01 A | 2022-12-02 A | 100% |
| 1586 | 1.2.6.1.1.4.38 | Distribucion Fideicomisos | 1d | 2022-12-02 A | 2022-12-03 A | 100% |
| 1587 | 1.2.6.1.1.4.39 | Configuracion Dashboard | 1d | 2022-12-05 A | 2022-12-06 A | 100% |
| 1588 | 1.2.6.1.1.4.40 | Paginacion Dashboard | 1d | 2022-12-06 A | 2022-12-07 A | 100% |
| 1589 | 1.2.6.1.1.4.41 | Busqueda Dashboard | 1d | 2022-12-07 A | 2022-12-08 A | 100% |
| 1590 | 1.2.6.1.1.4.42 | Ventanas emergentes de validación | 1d | 2022-12-08 A | 2022-12-09 A | 100% |

| ID | WBS | Task | Duration | Start | Finish | Complete | Actual finish | Total slack | Constraint |
| --- | --- | --- | --- | --- | --- | --- | --- | --- | --- |
| 1591 | 1.2.6.1.1.5 | **Municipios** | 1d | 2022-11-14 A | 2022-11-15 | 100% | 2022-11-25 |  |  |
| 1592 | 1.2.6.1.1.5.1 | Pantalla principal | 1d | 2022-11-14 A | 2022-11-15 A | 100% |  |  |  |
| 1593 | 1.2.6.1.1.5.2 | Exportar | 1d | 2022-11-15 A | 2022-11-16 A | 100% |  |  |  |
| 1594 | 1.2.6.1.1.5.3 | Visualizar Fideicomisos | 1d | 2022-11-16 A | 2022-11-17 A | 100% |  |  |  |
| 1595 | 1.2.6.1.1.5.4 | Visualizar Cuentas Bancarias | 1d | 2022-11-17 A | 2022-11-18 A | 100% |  |  |  |
| 1596 | 1.2.6.1.1.5.5 | Configuracion de Dashboard | 1d | 2022-11-18 A | 2022-11-19 A | 100% |  |  |  |
| 1597 | 1.2.6.1.1.5.6 | Visualizar Usuario Responsable | 1d | 2022-11-21 A | 2022-11-22 A | 100% |  |  |  |
| 1598 | 1.2.6.1.1.5.7 | Paginacion Dashboard | 1d | 2022-11-22 A | 2022-11-23 A | 100% |  |  |  |
| 1599 | 1.2.6.1.1.5.8 | Busqueda Dashboard | 1d | 2022-11-23 A | 2022-11-24 A | 100% |  |  |  |
| 1600 | 1.2.6.1.1.5.9 | Ventanas emergentes de validación | 1d | 2022-11-24 A | 2022-11-25 A | 100% |  |  |  |
| 1601 | 1.2.6.1.2 | **Módulo DPCP** | 1d | 2022-11-14 | 2022-11-15 |  |  | 55d |  |
| 1602 | 1.2.6.1.2.1 | **Dashboard Perfil DPCP** | 1d | 2022-11-14 | 2022-11-15 |  |  | 55d |  |
| 1603 | 1.2.6.1.2.1.1 | Pantalla Perfil | 1d | 2022-11-14 | 2022-11-15 |  |  | 55d | start no earlier than 2022-10-05 |
| 1604 | 1.2.6.1.2.1.2 | Pop up Notificaciones | 1d | 2022-11-14 | 2022-11-15 |  |  | 55d | start no earlier than 2022-10-06 |
| 1605 | 1.2.6.1.2.1.3 | Bandeja entrada de Notificaciones | 1d | 2022-11-14 | 2022-11-15 |  |  | 55d | start no earlier than 2022-10-10 |
| 1606 | 1.2.6.1.3 | **Módulo DAF** | 1d | 2022-11-14 | 2022-11-15 |  |  | 55d |  |
| 1607 | 1.2.6.1.3.1 | **Dashboard Perfil DAF** | 1d | 2022-11-14 | 2022-11-15 |  |  | 55d |  |
| 1608 | 1.2.6.1.3.1.1 | Pantalla Perfil | 1d | 2022-11-14 | 2022-11-15 |  |  | 55d | start no earlier than 2022-11-08 |
| 1609 | 1.2.6.1.3.1.2 | Pop up Notificaciones | 1d | 2022-11-14 | 2022-11-15 |  |  | 55d | start no earlier than 2022-11-09 |
| 1610 | 1.2.6.1.3.1.3 | Bandeja entrada de Notificaciones | 1d | 2022-11-14 | 2022-11-15 |  |  | 55d | start no earlier than 2022-11-11 |
| 1611 | 1.2.6.1.4 | **Módulo DCCP** | 1d | 2022-11-14 | 2022-11-15 |  |  | 55d |  |
| 1612 | 1.2.6.1.4.1 | **Dashboard Perfil DCCP** | 1d | 2022-11-14 | 2022-11-15 |  |  | 55d |  |
| 1613 | 1.2.6.1.4.1.1 | Bloqueo de Sesión | 1d | 2022-11-14 | 2022-11-15 |  |  | 55d | start no earlier than 2022-10-31 |
| 1614 | 1.2.6.1.4.1.2 | Perfil | 1d | 2022-11-14 | 2022-11-15 |  |  | 55d | start no earlier than 2022-11-01 |
| 1615 | 1.2.6.1.4.1.3 | Pop up Notificaciones | 1d | 2022-11-14 | 2022-11-15 |  |  | 55d | start no earlier than 2022-11-02 |
| 1616 | 1.2.6.1.4.1.4 | Bandeja entrada de Notificaciones | 1d | 2022-11-14 | 2022-11-15 |  |  | 55d | start no earlier than 2022-11-04 |

| ID | WBS | Task | Duration | Start | Finish | Complete | Constraint |
| --- | --- | --- | --- | --- | --- | --- | --- |
| 1617 | 1.2.6.1.5 | **Módulo Municipios** | 23d | 2022-11-14 A | 2022-12-15 A | 100% |  |
| 1618 | 1.2.6.1.5.1 | **Base** | 3d | 2022-11-14 A | 2022-11-17 A | 100% |  |
| 1619 | 1.2.6.1.5.1.1 | Buzón | 1d | 2022-11-14 A | 2022-11-15 A | 100% | start no earlier than 2022-10-14 |
| 1620 | 1.2.6.1.5.1.2 | Bloqueo de Sesión | 1d | 2022-11-15 A | 2022-11-16 A | 100% | start no earlier than 2022-10-19 |
| 1621 | 1.2.6.1.5.1.3 | Perfil | 1d | 2022-11-16 A | 2022-11-17 A | 100% | start no earlier than 2022-10-20 |
| 1622 | 1.2.6.1.5.2 | **Dashboard Inicio** | 5d | 2022-11-17 A | 2022-11-24 A | 100% |  |
| 1623 | 1.2.6.1.5.2.1 | Pantalla Principal | 1d | 2022-11-17 A | 2022-11-18 A | 100% | start no earlier than 2022-10-21 |
| 1624 | 1.2.6.1.5.2.2 | Configuración de Dashboard | 1d | 2022-11-18 A | 2022-11-19 A | 100% | start no earlier than 2022-10-24 |
| 1625 | 1.2.6.1.5.2.3 | Ventanas emergentes de validación | 1d | 2022-11-21 A | 2022-11-22 A | 100% | start no earlier than 2022-10-25 |
| 1626 | 1.2.6.1.5.2.4 | Ruleta imágenes | 1d | 2022-11-22 A | 2022-11-23 A | 100% | start no earlier than 2022-10-26 |
| 1627 | 1.2.6.1.5.2.5 | Mensaje de Bienvenida | 1d | 2022-11-23 A | 2022-11-24 A | 100% | start no earlier than 2022-10-27 |
| 1628 | 1.2.6.1.5.3 | **Mis Cuentas** | 10d | 2022-11-24 A | 2022-12-08 A | 100% |  |
| 1629 | 1.2.6.1.5.3.1 | Pantalla Principal | 1d | 2022-11-24 A | 2022-11-25 A | 100% | start no earlier than 2022-10-28 |
| 1630 | 1.2.6.1.5.3.2 | Agregar | 1d | 2022-11-25 A | 2022-11-26 A | 100% | start no earlier than 2022-10-31 |
| 1631 | 1.2.6.1.5.3.3 | Editar | 1d | 2022-11-28 A | 2022-11-29 A | 100% | start no earlier than 2022-11-01 |
| 1632 | 1.2.6.1.5.3.4 | Eliminar | 1d | 2022-11-29 A | 2022-11-30 A | 100% | start no earlier than 2022-11-02 |
| 1633 | 1.2.6.1.5.3.5 | Configuración de Dashboard | 1d | 2022-11-30 A | 2022-12-01 A | 100% | start no earlier than 2022-11-03 |
| 1634 | 1.2.6.1.5.3.6 | Exportación de dashboard PDF | 1d | 2022-12-01 A | 2022-12-02 A | 100% | start no earlier than 2022-11-04 |
| 1635 | 1.2.6.1.5.3.7 | Exportación de dashboard Excel | 1d | 2022-12-02 A | 2022-12-03 A | 100% | start no earlier than 2022-11-07 |
| 1636 | 1.2.6.1.5.3.8 | Paginación Dashboard | 1d | 2022-12-05 A | 2022-12-06 A | 100% | start no earlier than 2022-11-08 |
| 1637 | 1.2.6.1.5.3.9 | Búsqueda Dash board | 1d | 2022-12-06 A | 2022-12-07 A | 100% | start no earlier than 2022-11-09 |
| 1638 | 1.2.6.1.5.3.10 | Ventanas emergentes de validación | 1d | 2022-12-07 A | 2022-12-08 A | 100% | start no earlier than 2022-11-10 |
| 1639 | 1.2.6.1.5.4 | **Solicitud de Recursos** | 11d | 2022-11-14 A | 2022-11-29 A | 100% |  |
| 1640 | 1.2.6.1.5.4.1 | Pantalla Principal | 1d | 2022-11-14 A | 2022-11-15 A | 100% | start no earlier than 2022-11-11 |
| 1641 | 1.2.6.1.5.4.2 | Agregar | 1d | 2022-11-15 A | 2022-11-16 A | 100% | start no earlier than 2022-11-14 |
| 1642 | 1.2.6.1.5.4.3 | Editar | 1d | 2022-11-16 A | 2022-11-17 A | 100% | start no earlier than 2022-10-03 |
| 1643 | 1.2.6.1.5.4.4 | Eliminar | 1d | 2022-11-17 A | 2022-11-18 A | 100% | start no earlier than 2022-10-04 |
| 1644 | 1.2.6.1.5.4.5 | Configuración de Dashboard | 1d | 2022-11-18 A | 2022-11-19 A | 100% | start no earlier than 2022-10-05 |
| 1645 | 1.2.6.1.5.4.6 | Exportación de dashboard PDF | 1d | 2022-11-21 A | 2022-11-22 A | 100% | start no earlier than 2022-10-06 |
| 1646 | 1.2.6.1.5.4.7 | Exportación de dashboard Excel | 1d | 2022-11-22 A | 2022-11-23 A | 100% | start no earlier than 2022-10-07 |
| 1647 | 1.2.6.1.5.4.8 | Paginación Dashboard | 1d | 2022-11-23 A | 2022-11-24 A | 100% | start no earlier than 2022-10-10 |
| 1648 | 1.2.6.1.5.4.9 | Búsqueda Dash board | 1d | 2022-11-24 A | 2022-11-25 A | 100% | start no earlier than 2022-10-11 |
| 1649 | 1.2.6.1.5.4.10 | Ventanas emergentes de validación | 1d | 2022-11-25 A | 2022-11-26 A | 100% | start no earlier than 2022-10-12 |
| 1650 | 1.2.6.1.5.4.11 | Botón Detalles | 1d | 2022-11-28 A | 2022-11-29 A | 100% | start no earlier than 2022-10-13 |

| ID | WBS | Task | Duration | Start | Finish | Complete | Constraint |
| --- | --- | --- | --- | --- | --- | --- | --- |
| 1651 | 1.2.6.1.5.5 | **Dashboard Ayuda** | 2d | 2022-11-29 A | 2022-12-01 A | 100% |  |
| 1652 | 1.2.6.1.5.5.1 | Pantalla principal | 1d | 2022-11-29 A | 2022-11-30 A | 100% | start no earlier than 2022-10-14 |
| 1653 | 1.2.6.1.5.5.2 | Configuración de Enlaces | 1d | 2022-11-30 A | 2022-12-01 A | 100% | start no earlier than 2022-10-17 |
| 1654 | 1.2.6.1.5.6 | **Recepción de Recursos Participaciones Federales** | 10d | 2022-12-01 A | 2022-12-15 A | 100% |  |
| 1655 | 1.2.6.1.5.6.1 | Pantalla Principal | 1d | 2022-12-01 A | 2022-12-02 A | 100% | start no earlier than 2022-10-18 |
| 1656 | 1.2.6.1.5.6.2 | Agregar | 1d | 2022-12-02 A | 2022-12-03 A | 100% | start no earlier than 2022-10-19 |
| 1657 | 1.2.6.1.5.6.3 | Editar | 1d | 2022-12-05 A | 2022-12-06 A | 100% | start no earlier than 2022-10-20 |
| 1658 | 1.2.6.1.5.6.4 | Eliminar | 1d | 2022-12-06 A | 2022-12-07 A | 100% | start no earlier than 2022-10-21 |
| 1659 | 1.2.6.1.5.6.5 | Configuración de Dashboard | 1d | 2022-12-07 A | 2022-12-08 A | 100% | start no earlier than 2022-10-24 |
| 1660 | 1.2.6.1.5.6.6 | Exportación de dashboard PDF | 1d | 2022-12-08 A | 2022-12-09 A | 100% | start no earlier than 2022-10-25 |
| 1661 | 1.2.6.1.5.6.7 | Exportación de dashboard Excel | 1d | 2022-12-09 A | 2022-12-10 A | 100% | start no earlier than 2022-10-26 |
| 1662 | 1.2.6.1.5.6.8 | Paginación Dashboard | 1d | 2022-12-12 A | 2022-12-13 A | 100% | start no earlier than 2022-10-27 |
| 1663 | 1.2.6.1.5.6.9 | Búsqueda Dash board | 1d | 2022-12-13 A | 2022-12-14 A | 100% | start no earlier than 2022-10-28 |
| 1664 | 1.2.6.1.5.6.10 | Ventanas emergentes de validación | 1d | 2022-12-14 A | 2022-12-15 A | 100% | start no earlier than 2022-10-31 |
| 1665 | 1.2.6.1.5.7 | **Recepción de Recursos Participaciones Estatales** | 10d | 2022-11-14 A | 2022-11-26 A | 100% |  |
| 1666 | 1.2.6.1.5.7.1 | Pantalla Principal | 1d | 2022-11-14 A | 2022-11-15 A | 100% | start no earlier than 2022-11-01 |
| 1667 | 1.2.6.1.5.7.2 | Agregar | 1d | 2022-11-15 A | 2022-11-16 A | 100% | start no earlier than 2022-11-02 |
| 1668 | 1.2.6.1.5.7.3 | Editar | 1d | 2022-11-16 A | 2022-11-17 A | 100% | start no earlier than 2022-11-03 |
| 1669 | 1.2.6.1.5.7.4 | Eliminar | 1d | 2022-11-17 A | 2022-11-18 A | 100% | start no earlier than 2022-11-04 |
| 1670 | 1.2.6.1.5.7.5 | Configuración de Dashboard | 1d | 2022-11-18 A | 2022-11-19 A | 100% | start no earlier than 2022-11-07 |
| 1671 | 1.2.6.1.5.7.6 | Exportación de dashboard PDF | 1d | 2022-11-21 A | 2022-11-22 A | 100% | start no earlier than 2022-11-08 |
| 1672 | 1.2.6.1.5.7.7 | Exportación de dashboard Excel | 1d | 2022-11-22 A | 2022-11-23 A | 100% | start no earlier than 2022-11-09 |
| 1673 | 1.2.6.1.5.7.8 | Paginación Dashboard | 1d | 2022-11-23 A | 2022-11-24 A | 100% | start no earlier than 2022-11-10 |
| 1674 | 1.2.6.1.5.7.9 | Búsqueda Dash board | 1d | 2022-11-24 A | 2022-11-25 A | 100% | start no earlier than 2022-11-11 |
| 1675 | 1.2.6.1.5.7.10 | Ventanas emergentes de validación | 1d | 2022-11-25 A | 2022-11-26 A | 100% | start no earlier than 2022-11-14 |

| ID | WBS | Task | Duration | Start | Finish | Complete | Remaining | Total slack | Constraint |
| --- | --- | --- | --- | --- | --- | --- | --- | --- | --- |
| 1676 | 1.2.6.1.5.8 | **Recepción de Recursos Aportaciones Federales** | 10d | 2022-11-28 A | 2022-12-10 A | 100% |  |  |  |
| 1677 | 1.2.6.1.5.8.1 | Pantalla Principal | 1d | 2022-11-28 A | 2022-11-29 A | 100% |  |  | start no earlier than 2022-10-03 |
| 1678 | 1.2.6.1.5.8.2 | Agregar | 1d | 2022-11-29 A | 2022-11-30 A | 100% |  |  | start no earlier than 2022-10-04 |
| 1679 | 1.2.6.1.5.8.3 | Editar | 1d | 2022-11-30 A | 2022-12-01 A | 100% |  |  | start no earlier than 2022-10-05 |
| 1680 | 1.2.6.1.5.8.4 | Eliminar | 1d | 2022-12-01 A | 2022-12-02 A | 100% |  |  | start no earlier than 2022-10-06 |
| 1681 | 1.2.6.1.5.8.5 | Configuración de Dashboard | 1d | 2022-12-02 A | 2022-12-03 A | 100% |  |  | start no earlier than 2022-10-07 |
| 1682 | 1.2.6.1.5.8.6 | Exportación de dashboard PDF | 1d | 2022-12-05 A | 2022-12-06 A | 100% |  |  | start no earlier than 2022-10-10 |
| 1683 | 1.2.6.1.5.8.7 | Exportación de dashboard Excel | 1d | 2022-12-06 A | 2022-12-07 A | 100% |  |  | start no earlier than 2022-10-11 |
| 1684 | 1.2.6.1.5.8.8 | Paginación Dashboard | 1d | 2022-12-07 A | 2022-12-08 A | 100% |  |  | start no earlier than 2022-10-12 |
| 1685 | 1.2.6.1.5.8.9 | Búsqueda Dash board | 1d | 2022-12-08 A | 2022-12-09 A | 100% |  |  | start no earlier than 2022-10-13 |
| 1686 | 1.2.6.1.5.8.10 | Ventanas emergentes de validación | 1d | 2022-12-09 A | 2022-12-10 A | 100% |  |  | start no earlier than 2022-10-14 |
| 1687 | 1.2.6.1.5.9 | **Recepción de Recursos Aportaciones Estatales** | 10d | 2022-11-14 A | 2022-11-26 A | 100% |  |  |  |
| 1688 | 1.2.6.1.5.9.1 | Pantalla Principal | 1d | 2022-11-14 A | 2022-11-15 A | 100% |  |  | start no earlier than 2022-10-17 |
| 1689 | 1.2.6.1.5.9.2 | Agregar | 1d | 2022-11-15 A | 2022-11-16 A | 100% |  |  | start no earlier than 2022-10-18 |
| 1690 | 1.2.6.1.5.9.3 | Editar | 1d | 2022-11-16 A | 2022-11-17 A | 100% |  |  | start no earlier than 2022-10-19 |
| 1691 | 1.2.6.1.5.9.4 | Eliminar | 1d | 2022-11-17 A | 2022-11-18 A | 100% |  |  | start no earlier than 2022-10-20 |
| 1692 | 1.2.6.1.5.9.5 | Configuración de Dashboard | 1d | 2022-11-18 A | 2022-11-19 A | 100% |  |  | start no earlier than 2022-10-21 |
| 1693 | 1.2.6.1.5.9.6 | Exportación de dashboard PDF | 1d | 2022-11-21 A | 2022-11-22 A | 100% |  |  | start no earlier than 2022-10-24 |
| 1694 | 1.2.6.1.5.9.7 | Exportación de dashboard Excel | 1d | 2022-11-22 A | 2022-11-23 A | 100% |  |  | start no earlier than 2022-10-25 |
| 1695 | 1.2.6.1.5.9.8 | Paginación Dashboard | 1d | 2022-11-23 A | 2022-11-24 A | 100% |  |  | start no earlier than 2022-10-26 |
| 1696 | 1.2.6.1.5.9.9 | Búsqueda Dash board | 1d | 2022-11-24 A | 2022-11-25 A | 100% |  |  | start no earlier than 2022-10-27 |
| 1697 | 1.2.6.1.5.9.10 | Ventanas emergentes de validación | 1d | 2022-11-25 A | 2022-11-26 A | 100% |  |  | start no earlier than 2022-10-28 |
| 1698 | 1.2.6.2 | **FRONT** | 23d | 2022-11-14 A | 2022-12-15 | 93% | 1.51d | 33d |  |
| 1699 | 1.2.6.2.1 | **Módulo DAMOP** | 23d | 2022-11-14 A | 2022-12-15 A | 100% |  |  |  |
| 1700 | 1.2.6.2.1.1 | **Base** | 4d | 2022-11-15 A | 2022-11-19 A | 100% |  |  |  |
| 1701 | 1.2.6.2.1.1.1 | Pantalla Principal | 1d | 2022-11-15 A | 2022-11-16 A | 100% |  |  | start no earlier than 2022-11-15 |
| 1702 | 1.2.6.2.1.1.2 | Pop up Notificaciones | 1d | 2022-11-16 A | 2022-11-17 A | 100% |  |  | start no earlier than 2022-11-16 |
| 1703 | 1.2.6.2.1.1.3 | Contador de Notificaciones (Icono campanita) | 1d | 2022-11-17 A | 2022-11-18 A | 100% |  |  | start no earlier than 2022-11-17 |
| 1704 | 1.2.6.2.1.1.4 | Bandeja entrada de Notificaciones | 1d | 2022-11-18 A | 2022-11-19 A | 100% |  |  | start no earlier than 2022-11-18 |

| ID | WBS | Task | Duration | Start | Finish | Complete |
| --- | --- | --- | --- | --- | --- | --- |
| 1705 | 1.2.6.2.1.2 | **Bancos** | 9d | 2022-11-14 A | 2022-11-25 A | 100% |
| 1706 | 1.2.6.2.1.2.1 | Pantalla principal | 1d | 2022-11-14 A | 2022-11-15 A | 100% |
| 1707 | 1.2.6.2.1.2.2 | Agregar | 1d | 2022-11-15 A | 2022-11-16 A | 100% |
| 1708 | 1.2.6.2.1.2.3 | Exportar | 1d | 2022-11-16 A | 2022-11-17 A | 100% |
| 1709 | 1.2.6.2.1.2.4 | Editar | 1d | 2022-11-17 A | 2022-11-18 A | 100% |
| 1710 | 1.2.6.2.1.2.5 | Eliminar | 1d | 2022-11-18 A | 2022-11-19 A | 100% |
| 1711 | 1.2.6.2.1.2.6 | Configuracion de Dashboard | 1d | 2022-11-21 A | 2022-11-22 A | 100% |
| 1712 | 1.2.6.2.1.2.7 | Paginacion Dashboard | 1d | 2022-11-22 A | 2022-11-23 A | 100% |
| 1713 | 1.2.6.2.1.2.8 | Busqueda Dashboard | 1d | 2022-11-23 A | 2022-11-24 A | 100% |
| 1714 | 1.2.6.2.1.2.9 | Ventanas emergentes de validación | 1d | 2022-11-24 A | 2022-11-25 A | 100% |
| 1715 | 1.2.6.2.1.3 | **Divisas** | 9d | 2022-11-25 A | 2022-12-08 A | 100% |
| 1716 | 1.2.6.2.1.3.1 | Pantalla principal | 1d | 2022-11-25 A | 2022-11-26 A | 100% |
| 1717 | 1.2.6.2.1.3.2 | Agregar | 1d | 2022-11-28 A | 2022-11-29 A | 100% |
| 1718 | 1.2.6.2.1.3.3 | Exportar | 1d | 2022-11-29 A | 2022-11-30 A | 100% |
| 1719 | 1.2.6.2.1.3.4 | Editar | 1d | 2022-11-30 A | 2022-12-01 A | 100% |
| 1720 | 1.2.6.2.1.3.5 | Eliminar | 1d | 2022-12-01 A | 2022-12-02 A | 100% |
| 1721 | 1.2.6.2.1.3.6 | Configuracion de Dashboard | 1d | 2022-12-02 A | 2022-12-03 A | 100% |
| 1722 | 1.2.6.2.1.3.7 | Paginacion Dashboard | 1d | 2022-12-05 A | 2022-12-06 A | 100% |
| 1723 | 1.2.6.2.1.3.8 | Busqueda Dashboard | 1d | 2022-12-06 A | 2022-12-07 A | 100% |
| 1724 | 1.2.6.2.1.3.9 | Ventanas emergentes de validación | 1d | 2022-12-07 A | 2022-12-08 A | 100% |
| 1725 | 1.2.6.2.1.4 | **Participaciones y Aportaciones** | 23d | 2022-11-14 A | 2022-12-15 A | 100% |
| 1726 | 1.2.6.2.1.4.1 | Pantalla principal | 1d | 2022-12-08 A | 2022-12-09 A | 100% |
| 1727 | 1.2.6.2.1.4.2 | Filtro Fondo | 1d | 2022-12-09 A | 2022-12-10 A | 100% |
| 1728 | 1.2.6.2.1.4.3 | Filtro Fondo Recursos por convenio | 1d | 2022-12-12 A | 2022-12-13 A | 100% |
| 1729 | 1.2.6.2.1.4.4 | Filtro Fondo Participaciones Federales | 1d | 2022-12-13 A | 2022-12-14 A | 100% |
| 1730 | 1.2.6.2.1.4.5 | Filtro Fondo Participaciones Estatales | 1d | 2022-12-14 A | 2022-12-15 A | 100% |
| 1731 | 1.2.6.2.1.4.6 | Filtro Fondo Aportaciones Federales | 1d | 2022-11-14 A | 2022-11-15 A | 100% |
| 1732 | 1.2.6.2.1.4.7 | Filtro Fondo Aportaciones Estatales | 1d | 2022-11-15 A | 2022-11-16 A | 100% |
| 1733 | 1.2.6.2.1.4.8 | Filtro Tipo | 1d | 2022-11-16 A | 2022-11-17 A | 100% |
| 1734 | 1.2.6.2.1.4.9 | Filtro Tipo IEPS | 1d | 2022-11-17 A | 2022-11-18 A | 100% |
| 1735 | 1.2.6.2.1.4.10 | Filtro Tipo FOFIR | 1d | 2022-11-18 A | 2022-11-19 A | 100% |
| 1736 | 1.2.6.2.1.4.11 | Filtro Tipo ISAN | 1d | 2022-11-21 A | 2022-11-22 A | 100% |
| 1737 | 1.2.6.2.1.4.12 | Filtro Tipo FEXHI | 1d | 2022-11-22 A | 2022-11-23 A | 100% |
| 1738 | 1.2.6.2.1.4.13 | Filtro Tipo COMP ISAN | 1d | 2022-11-23 A | 2022-11-24 A | 100% |
| 1739 | 1.2.6.2.1.4.14 | Filtro Tipo IEPSGyD | 1d | 2022-11-24 A | 2022-11-25 A | 100% |
| 1740 | 1.2.6.2.1.4.15 | Filtro Tipo ISR SALARIOS | 1d | 2022-11-25 A | 2022-11-26 A | 100% |
| 1741 | 1.2.6.2.1.4.16 | Filtro Tipo PREDIAL | 1d | 2022-11-28 A | 2022-11-29 A | 100% |
| 1742 | 1.2.6.2.1.4.17 | Filtro Tipo FEIEF | 1d | 2022-11-29 A | 2022-11-30 A | 100% |
| 1743 | 1.2.6.2.1.4.18 | Filtro Tipo ISN ICV | 1d | 2022-11-30 A | 2022-12-01 A | 100% |
| 1744 | 1.2.6.2.1.4.19 | Filtro Tipo ISN 100 | 1d | 2022-12-01 A | 2022-12-02 A | 100% |
| 1745 | 1.2.6.2.1.4.20 | Filtro Tipo FOULT | 1d | 2022-12-02 A | 2022-12-03 A | 100% |
| 1746 | 1.2.6.2.1.4.21 | Filtro Tipo FODES | 1d | 2022-12-05 A | 2022-12-06 A | 100% |
| 1747 | 1.2.6.2.1.4.22 | Filtro Tipo FOSEGUM | 1d | 2022-12-06 A | 2022-12-07 A | 100% |
| 1748 | 1.2.6.2.1.4.23 | Filtro Tipo FODEM | 1d | 2022-12-07 A | 2022-12-08 A | 100% |
| 1749 | 1.2.6.2.1.4.24 | Filtro Tipo FORTAMUN | 1d | 2022-12-08 A | 2022-12-09 A | 100% |
| 1750 | 1.2.6.2.1.4.25 | Filtro Tipo FISM | 1d | 2022-12-09 A | 2022-12-10 A | 100% |
| 1751 | 1.2.6.2.1.4.26 | Filtro Tipo ISR INMUEBLES | 1d | 2022-12-12 A | 2022-12-13 A | 100% |
| 1752 | 1.2.6.2.1.4.27 | Filtro Tipo HIDROCARBUROS | 1d | 2022-12-13 A | 2022-12-14 A | 100% |
| 1753 | 1.2.6.2.1.4.28 | Filtro Tipo FGP | 1d | 2022-12-14 A | 2022-12-15 A | 100% |
| 1754 | 1.2.6.2.1.4.29 | Filtro Tipo FFM30 | 1d | 2022-11-14 A | 2022-11-15 A | 100% |
| 1755 | 1.2.6.2.1.4.30 | Filtro Tipo FFM70 | 1d | 2022-11-15 A | 2022-11-16 A | 100% |
| 1756 | 1.2.6.2.1.4.31 | Filtro Municipio | 1d | 2022-11-16 A | 2022-11-17 A | 100% |
| 1757 | 1.2.6.2.1.4.32 | Solicitar suficiencia presupuestal | 1d | 2022-11-17 A | 2022-11-18 A | 100% |
| 1758 | 1.2.6.2.1.4.33 | Generar Solicitud | 1d | 2022-11-18 A | 2022-11-19 A | 100% |
| 1759 | 1.2.6.2.1.4.34 | Generar Comentario | 1d | 2022-11-21 A | 2022-11-22 A | 100% |
| 1760 | 1.2.6.2.1.4.35 | Generar Anticipo | 1d | 2022-11-22 A | 2022-11-23 A | 100% |
| 1761 | 1.2.6.2.1.4.36 | Descargar Plantilla | 1d | 2022-11-23 A | 2022-11-24 A | 100% |
| 1762 | 1.2.6.2.1.4.37 | Carga Plantilla | 1d | 2022-11-24 A | 2022-11-25 A | 100% |
| 1763 | 1.2.6.2.1.4.38 | Distribucion Fideicomisos | 1d | 2022-11-25 A | 2022-11-26 A | 100% |
| 1764 | 1.2.6.2.1.4.39 | Configuracion Dashboard | 1d | 2022-11-28 A | 2022-11-29 A | 100% |
| 1765 | 1.2.6.2.1.4.40 | Paginacion Dashboard | 1d | 2022-11-29 A | 2022-11-30 A | 100% |
| 1766 | 1.2.6.2.1.4.41 | Busqueda Dashboard | 1d | 2022-11-30 A | 2022-12-01 A | 100% |
| 1767 | 1.2.6.2.1.4.42 | Ventanas emergentes de validación | 1d | 2022-12-01 A | 2022-12-02 A | 100% |

| ID | WBS | Task | Duration | Start | Finish | Complete | Total slack | Constraint |
| --- | --- | --- | --- | --- | --- | --- | --- | --- |
| 1768 | 1.2.6.2.1.5 | **Municipios** | 9d | 2022-12-02 A | 2022-12-15 A | 100% |  |  |
| 1769 | 1.2.6.2.1.5.1 | Pantalla principal | 1d | 2022-12-02 A | 2022-12-03 A | 100% |  |  |
| 1770 | 1.2.6.2.1.5.2 | Exportar | 1d | 2022-12-05 A | 2022-12-06 A | 100% |  |  |
| 1771 | 1.2.6.2.1.5.3 | Visualizar Fideicomisos | 1d | 2022-12-06 A | 2022-12-07 A | 100% |  |  |
| 1772 | 1.2.6.2.1.5.4 | Visualizar Cuentas Bancarias | 1d | 2022-12-07 A | 2022-12-08 A | 100% |  |  |
| 1773 | 1.2.6.2.1.5.5 | Configuracion de Dashboard | 1d | 2022-12-08 A | 2022-12-09 A | 100% |  |  |
| 1774 | 1.2.6.2.1.5.6 | Visualizar Usuario Responsable | 1d | 2022-12-09 A | 2022-12-10 A | 100% |  |  |
| 1775 | 1.2.6.2.1.5.7 | Paginacion Dashboard | 1d | 2022-12-12 A | 2022-12-13 A | 100% |  |  |
| 1776 | 1.2.6.2.1.5.8 | Busqueda Dashboard | 1d | 2022-12-13 A | 2022-12-14 A | 100% |  |  |
| 1777 | 1.2.6.2.1.5.9 | Ventanas emergentes de validación | 1d | 2022-12-14 A | 2022-12-15 A | 100% |  |  |
| 1778 | 1.2.6.2.2 | **Módulo DPCP** | 1d | 2022-11-14 | 2022-11-15 |  | 55d |  |
| 1779 | 1.2.6.2.2.1 | **Dashboard Perfil DPCP** | 1d | 2022-11-14 | 2022-11-15 |  | 55d |  |
| 1780 | 1.2.6.2.2.1.1 | Bandeja entrada de Notificaciones | 1d | 2022-11-14 | 2022-11-15 |  | 55d | start no earlier than 2022-11-08 |
| 1781 | 1.2.6.2.2.1.2 | Asignación de Presupuesto | 1d | 2022-11-14 | 2022-11-15 |  | 55d | start no earlier than 2022-11-09 |
| 1782 | 1.2.6.2.2.1.3 | Generación de Estadísticas | 1d | 2022-11-14 | 2022-11-15 |  | 55d | start no earlier than 2022-11-10 |
| 1783 | 1.2.6.2.2.1.4 | Generación de graficas | 1d | 2022-11-14 | 2022-11-15 |  | 55d | start no earlier than 2022-11-11 |
| 1784 | 1.2.6.2.3 | **Módulo DAF** | 1d | 2022-11-14 | 2022-11-15 |  | 55d |  |
| 1785 | 1.2.6.2.3.1 | **Dashboard Perfil DAF** | 1d | 2022-11-14 | 2022-11-15 |  | 55d |  |
| 1786 | 1.2.6.2.3.1.1 | Bandeja entrada de Notificaciones | 1d | 2022-11-14 | 2022-11-15 |  | 55d | start no earlier than 2022-10-28 |
| 1787 | 1.2.6.2.3.1.2 | Carga de Speis | 1d | 2022-11-14 | 2022-11-15 |  | 55d | start no earlier than 2022-10-31 |
| 1788 | 1.2.6.2.3.1.3 | Generación de Estadísticas | 1d | 2022-11-14 | 2022-11-15 |  | 55d | start no earlier than 2022-11-01 |
| 1789 | 1.2.6.2.3.1.4 | Generación de graficas | 1d | 2022-11-14 | 2022-11-15 |  | 55d | start no earlier than 2022-11-02 |
| 1790 | 1.2.6.2.4 | **Módulo DCCP** | 1d | 2022-11-14 | 2022-11-15 |  | 55d |  |
| 1791 | 1.2.6.2.4.1 | **Dashboard Perfil DCCP** | 1d | 2022-11-14 | 2022-11-15 |  | 55d |  |
| 1792 | 1.2.6.2.4.1.1 | Bandeja entrada de Notificaciones | 1d | 2022-11-14 | 2022-11-15 |  | 55d | start no earlier than 2022-10-21 |
| 1793 | 1.2.6.2.4.1.2 | Configuración de Consulta | 1d | 2022-11-14 | 2022-11-15 |  | 55d | start no earlier than 2022-10-24 |

| ID | WBS | Task | Duration | Start | Finish | Complete | Constraint |
| --- | --- | --- | --- | --- | --- | --- | --- |
| 1794 | 1.2.6.2.5 | **Módulo Municipios** | 23d | 2022-11-14 A | 2022-12-15 A | 100% |  |
| 1795 | 1.2.6.2.5.1 | **Base** | 1d | 2022-11-14 A | 2022-11-15 A | 100% |  |
| 1796 | 1.2.6.2.5.1.1 | Buzón | 1d | 2022-11-14 A | 2022-11-15 A | 100% | start no earlier than 2022-10-10 |
| 1797 | 1.2.6.2.5.2 | **Dashboard Inicio** | 5d | 2022-11-15 A | 2022-11-22 A | 100% |  |
| 1798 | 1.2.6.2.5.2.1 | Pantalla Principal | 1d | 2022-11-15 A | 2022-11-16 A | 100% | start no earlier than 2022-10-07 |
| 1799 | 1.2.6.2.5.2.2 | Configuración de Dashboard | 1d | 2022-11-16 A | 2022-11-17 A | 100% | start no earlier than 2022-10-10 |
| 1800 | 1.2.6.2.5.2.3 | Ventanas emergentes de validación | 1d | 2022-11-17 A | 2022-11-18 A | 100% | start no earlier than 2022-10-11 |
| 1801 | 1.2.6.2.5.2.4 | Ruleta imágenes | 1d | 2022-11-18 A | 2022-11-19 A | 100% | start no earlier than 2022-10-12 |
| 1802 | 1.2.6.2.5.2.5 | Mensaje de Bienvenida | 1d | 2022-11-21 A | 2022-11-22 A | 100% | start no earlier than 2022-10-13 |
| 1803 | 1.2.6.2.5.3 | **Mis Cuentas** | 10d | 2022-11-22 A | 2022-12-06 A | 100% |  |
| 1804 | 1.2.6.2.5.3.1 | Pantalla Principal | 1d | 2022-11-22 A | 2022-11-23 A | 100% | start no earlier than 2022-10-14 |
| 1805 | 1.2.6.2.5.3.2 | Agregar | 1d | 2022-11-23 A | 2022-11-24 A | 100% | start no earlier than 2022-10-17 |
| 1806 | 1.2.6.2.5.3.3 | Editar | 1d | 2022-11-24 A | 2022-11-25 A | 100% | start no earlier than 2022-10-18 |
| 1807 | 1.2.6.2.5.3.4 | Eliminar | 1d | 2022-11-25 A | 2022-11-26 A | 100% | start no earlier than 2022-10-19 |
| 1808 | 1.2.6.2.5.3.5 | Configuración de Dashboard | 1d | 2022-11-28 A | 2022-11-29 A | 100% | start no earlier than 2022-10-20 |
| 1809 | 1.2.6.2.5.3.6 | Exportación de dashboard PDF | 1d | 2022-11-29 A | 2022-11-30 A | 100% | start no earlier than 2022-10-21 |
| 1810 | 1.2.6.2.5.3.7 | Exportación de dashboard Excel | 1d | 2022-11-30 A | 2022-12-01 A | 100% | start no earlier than 2022-10-24 |
| 1811 | 1.2.6.2.5.3.8 | Paginación Dashboard | 1d | 2022-12-01 A | 2022-12-02 A | 100% | start no earlier than 2022-10-25 |
| 1812 | 1.2.6.2.5.3.9 | Búsqueda Dash board | 1d | 2022-12-02 A | 2022-12-03 A | 100% | start no earlier than 2022-10-26 |
| 1813 | 1.2.6.2.5.3.10 | Ventanas emergentes de validación | 1d | 2022-12-05 A | 2022-12-06 A | 100% | start no earlier than 2022-10-27 |
| 1814 | 1.2.6.2.5.4 | **Solicitud de Recursos** | 11d | 2022-11-14 A | 2022-11-29 A | 100% |  |
| 1815 | 1.2.6.2.5.4.1 | Pantalla Principal | 1d | 2022-11-14 A | 2022-11-15 A | 100% | start no earlier than 2022-10-28 |
| 1816 | 1.2.6.2.5.4.2 | Agregar | 1d | 2022-11-15 A | 2022-11-16 A | 100% | start no earlier than 2022-10-31 |
| 1817 | 1.2.6.2.5.4.3 | Editar | 1d | 2022-11-16 A | 2022-11-17 A | 100% | start no earlier than 2022-11-01 |
| 1818 | 1.2.6.2.5.4.4 | Eliminar | 1d | 2022-11-17 A | 2022-11-18 A | 100% | start no earlier than 2022-11-02 |
| 1819 | 1.2.6.2.5.4.5 | Configuración de Dashboard | 1d | 2022-11-18 A | 2022-11-19 A | 100% | start no earlier than 2022-11-03 |
| 1820 | 1.2.6.2.5.4.6 | Exportación de dashboard PDF | 1d | 2022-11-21 A | 2022-11-22 A | 100% | start no earlier than 2022-11-04 |
| 1821 | 1.2.6.2.5.4.7 | Exportación de dashboard Excel | 1d | 2022-11-22 A | 2022-11-23 A | 100% | start no earlier than 2022-11-07 |
| 1822 | 1.2.6.2.5.4.8 | Paginación Dashboard | 1d | 2022-11-23 A | 2022-11-24 A | 100% | start no earlier than 2022-11-08 |
| 1823 | 1.2.6.2.5.4.9 | Búsqueda Dash board | 1d | 2022-11-24 A | 2022-11-25 A | 100% | start no earlier than 2022-11-09 |
| 1824 | 1.2.6.2.5.4.10 | Ventanas emergentes de validación | 1d | 2022-11-25 A | 2022-11-26 A | 100% | start no earlier than 2022-11-10 |
| 1825 | 1.2.6.2.5.4.11 | Botón Detalles | 1d | 2022-11-28 A | 2022-11-29 A | 100% | start no earlier than 2022-11-11 |

| ID | WBS | Task | Duration | Start | Finish | Complete | Constraint |
| --- | --- | --- | --- | --- | --- | --- | --- |
| 1826 | 1.2.6.2.5.5 | **Dashboard Ayuda** | 2d | 2022-11-29 A | 2022-12-01 A | 100% |  |
| 1827 | 1.2.6.2.5.5.1 | Pantalla principal | 1d | 2022-11-29 A | 2022-11-30 A | 100% | start no earlier than 2022-10-10 |
| 1828 | 1.2.6.2.5.5.2 | Configuración de Enlaces | 1d | 2022-11-30 A | 2022-12-01 A | 100% | start no earlier than 2022-10-11 |
| 1829 | 1.2.6.2.5.6 | **Recepción de Recursos Participaciones Federales** | 10d | 2022-12-01 A | 2022-12-15 A | 100% |  |
| 1830 | 1.2.6.2.5.6.1 | Pantalla Principal | 1d | 2022-12-01 A | 2022-12-02 A | 100% | start no earlier than 2022-10-10 |
| 1831 | 1.2.6.2.5.6.2 | Agregar | 1d | 2022-12-02 A | 2022-12-03 A | 100% | start no earlier than 2022-10-11 |
| 1832 | 1.2.6.2.5.6.3 | Editar | 1d | 2022-12-05 A | 2022-12-06 A | 100% | start no earlier than 2022-10-12 |
| 1833 | 1.2.6.2.5.6.4 | Eliminar | 1d | 2022-12-06 A | 2022-12-07 A | 100% | start no earlier than 2022-10-13 |
| 1834 | 1.2.6.2.5.6.5 | Configuración de Dashboard | 1d | 2022-12-07 A | 2022-12-08 A | 100% | start no earlier than 2022-10-14 |
| 1835 | 1.2.6.2.5.6.6 | Exportación de dashboard PDF | 1d | 2022-12-08 A | 2022-12-09 A | 100% | start no earlier than 2022-10-17 |
| 1836 | 1.2.6.2.5.6.7 | Exportación de dashboard Excel | 1d | 2022-12-09 A | 2022-12-10 A | 100% | start no earlier than 2022-10-18 |
| 1837 | 1.2.6.2.5.6.8 | Paginación Dashboard | 1d | 2022-12-12 A | 2022-12-13 A | 100% | start no earlier than 2022-10-19 |
| 1838 | 1.2.6.2.5.6.9 | Búsqueda Dash board | 1d | 2022-12-13 A | 2022-12-14 A | 100% | start no earlier than 2022-10-20 |
| 1839 | 1.2.6.2.5.6.10 | Ventanas emergentes de validación | 1d | 2022-12-14 A | 2022-12-15 A | 100% | start no earlier than 2022-10-21 |
| 1840 | 1.2.6.2.5.7 | **Recepción de Recursos Participaciones Estatales** | 10d | 2022-11-14 A | 2022-11-26 A | 100% |  |
| 1841 | 1.2.6.2.5.7.1 | Pantalla Principal | 1d | 2022-11-14 A | 2022-11-15 A | 100% | start no earlier than 2022-10-19 |
| 1842 | 1.2.6.2.5.7.2 | Agregar | 1d | 2022-11-15 A | 2022-11-16 A | 100% | start no earlier than 2022-10-20 |
| 1843 | 1.2.6.2.5.7.3 | Editar | 1d | 2022-11-16 A | 2022-11-17 A | 100% | start no earlier than 2022-10-21 |
| 1844 | 1.2.6.2.5.7.4 | Eliminar | 1d | 2022-11-17 A | 2022-11-18 A | 100% | start no earlier than 2022-10-24 |
| 1845 | 1.2.6.2.5.7.5 | Configuración de Dashboard | 1d | 2022-11-18 A | 2022-11-19 A | 100% | start no earlier than 2022-10-25 |
| 1846 | 1.2.6.2.5.7.6 | Exportación de dashboard PDF | 1d | 2022-11-21 A | 2022-11-22 A | 100% | start no earlier than 2022-10-26 |
| 1847 | 1.2.6.2.5.7.7 | Exportación de dashboard Excel | 1d | 2022-11-22 A | 2022-11-23 A | 100% | start no earlier than 2022-10-27 |
| 1848 | 1.2.6.2.5.7.8 | Paginación Dashboard | 1d | 2022-11-23 A | 2022-11-24 A | 100% | start no earlier than 2022-10-28 |
| 1849 | 1.2.6.2.5.7.9 | Búsqueda Dash board | 1d | 2022-11-24 A | 2022-11-25 A | 100% | start no earlier than 2022-10-31 |
| 1850 | 1.2.6.2.5.7.10 | Ventanas emergentes de validación | 1d | 2022-11-25 A | 2022-11-26 A | 100% | start no earlier than 2022-11-01 |

| ID | WBS | Task | Duration | Start | Finish | Complete | Total slack | Constraint |
| --- | --- | --- | --- | --- | --- | --- | --- | --- |
| 1851 | 1.2.6.2.5.8 | **Recepción de Recursos Aportaciones Federales** | 10d | 2022-11-28 A | 2022-12-10 A | 100% |  |  |
| 1852 | 1.2.6.2.5.8.1 | Pantalla Principal | 1d | 2022-11-28 A | 2022-11-29 A | 100% |  | start no earlier than 2022-11-02 |
| 1853 | 1.2.6.2.5.8.2 | Agregar | 1d | 2022-11-29 A | 2022-11-30 A | 100% |  | start no earlier than 2022-11-03 |
| 1854 | 1.2.6.2.5.8.3 | Editar | 1d | 2022-11-30 A | 2022-12-01 A | 100% |  | start no earlier than 2022-11-04 |
| 1855 | 1.2.6.2.5.8.4 | Eliminar | 1d | 2022-12-01 A | 2022-12-02 A | 100% |  | start no earlier than 2022-11-07 |
| 1856 | 1.2.6.2.5.8.5 | Configuración de Dashboard | 1d | 2022-12-02 A | 2022-12-03 A | 100% |  | start no earlier than 2022-11-08 |
| 1857 | 1.2.6.2.5.8.6 | Exportación de dashboard PDF | 1d | 2022-12-05 A | 2022-12-06 A | 100% |  | start no earlier than 2022-11-09 |
| 1858 | 1.2.6.2.5.8.7 | Exportación de dashboard Excel | 1d | 2022-12-06 A | 2022-12-07 A | 100% |  | start no earlier than 2022-11-10 |
| 1859 | 1.2.6.2.5.8.8 | Paginación Dashboard | 1d | 2022-12-07 A | 2022-12-08 A | 100% |  | start no earlier than 2022-11-11 |
| 1860 | 1.2.6.2.5.8.9 | Búsqueda Dash board | 1d | 2022-12-08 A | 2022-12-09 A | 100% |  | start no earlier than 2022-11-14 |
| 1861 | 1.2.6.2.5.8.10 | Ventanas emergentes de validación | 1d | 2022-12-09 A | 2022-12-10 A | 100% |  | start no earlier than 2022-10-10 |
| 1862 | 1.2.6.2.5.9 | **Recepción de Recursos Aportaciones Estatales** | 10d | 2022-11-14 A | 2022-11-26 A | 100% |  |  |
| 1863 | 1.2.6.2.5.9.1 | Pantalla Principal | 1d | 2022-11-14 A | 2022-11-15 A | 100% |  | start no earlier than 2022-10-11 |
| 1864 | 1.2.6.2.5.9.2 | Agregar | 1d | 2022-11-15 A | 2022-11-16 A | 100% |  | start no earlier than 2022-10-12 |
| 1865 | 1.2.6.2.5.9.3 | Editar | 1d | 2022-11-16 A | 2022-11-17 A | 100% |  | start no earlier than 2022-10-13 |
| 1866 | 1.2.6.2.5.9.4 | Eliminar | 1d | 2022-11-17 A | 2022-11-18 A | 100% |  | start no earlier than 2022-10-14 |
| 1867 | 1.2.6.2.5.9.5 | Configuración de Dashboard | 1d | 2022-11-18 A | 2022-11-19 A | 100% |  | start no earlier than 2022-10-10 |
| 1868 | 1.2.6.2.5.9.6 | Exportación de dashboard PDF | 1d | 2022-11-21 A | 2022-11-22 A | 100% |  | start no earlier than 2022-10-11 |
| 1869 | 1.2.6.2.5.9.7 | Exportación de dashboard Excel | 1d | 2022-11-22 A | 2022-11-23 A | 100% |  | start no earlier than 2022-10-12 |
| 1870 | 1.2.6.2.5.9.8 | Paginación Dashboard | 1d | 2022-11-23 A | 2022-11-24 A | 100% |  | start no earlier than 2022-10-13 |
| 1871 | 1.2.6.2.5.9.9 | Búsqueda Dash board | 1d | 2022-11-24 A | 2022-11-25 A | 100% |  | start no earlier than 2022-10-14 |
| 1872 | 1.2.6.2.5.9.10 | Ventanas emergentes de validación | 1d | 2022-11-25 A | 2022-11-26 A | 100% |  | start no earlier than 2022-10-17 |
| 1873 | 1.2.7 | **sprint 10** | 22d | 2023-01-01 | 2023-01-31 |  |  |  |
| 1874 | 1.2.7.1 | **BACK** | 1d | 2023-01-02 | 2023-01-03 |  | 20d |  |
| 1875 | 1.2.7.1.1 | **Módulo OPDs** | 1d | 2023-01-02 | 2023-01-03 |  | 20d |  |
| 1876 | 1.2.7.1.1.1 | **Base** | 1d | 2023-01-02 | 2023-01-03 |  | 20d |  |
| 1877 | 1.2.7.1.1.1.1 | Perfil | 1d | 2023-01-02 | 2023-01-03 |  | 20d | start no earlier than 2022-10-10 |
| 1878 | 1.2.7.1.1.1.2 | Pop up Notificaciones | 1d | 2023-01-02 | 2023-01-03 |  | 20d | start no earlier than 2022-10-10 |
| 1879 | 1.2.7.1.1.1.3 | Contador de Notificaciones (Icono campanita) | 1d | 2023-01-02 | 2023-01-03 |  | 20d | start no earlier than 2022-10-11 |
| 1880 | 1.2.7.1.1.1.4 | Bandeja entrada de Notificaciones Carrusel | 1d | 2023-01-02 | 2023-01-03 |  | 20d | start no earlier than 2022-10-12 |

| ID | WBS | Task | Duration | Start | Finish | Total slack | Constraint |
| --- | --- | --- | --- | --- | --- | --- | --- |
| 1881 | 1.2.7.1.1.2 | **Dashboard Notificaciones** | 1d | 2023-01-02 | 2023-01-03 | 20d |  |
| 1882 | 1.2.7.1.1.2.1 | Agregar | 1d | 2023-01-02 | 2023-01-03 | 20d | start no earlier than 2022-10-13 |
| 1883 | 1.2.7.1.1.2.2 | Editar | 1d | 2023-01-02 | 2023-01-03 | 20d | start no earlier than 2022-10-14 |
| 1884 | 1.2.7.1.1.3 | **Avisos** | 1d | 2023-01-02 | 2023-01-03 | 20d |  |
| 1885 | 1.2.7.1.1.3.1 | Agregar | 1d | 2023-01-02 | 2023-01-03 | 20d | start no earlier than 2022-10-13 |
| 1886 | 1.2.7.1.1.3.2 | Editar | 1d | 2023-01-02 | 2023-01-03 | 20d | start no earlier than 2022-10-14 |
| 1887 | 1.2.7.1.1.4 | **Calendario** | 1d | 2023-01-02 | 2023-01-03 | 20d |  |
| 1888 | 1.2.7.1.1.4.1 | Pantalla Principal | 1d | 2023-01-02 | 2023-01-03 | 20d | start no earlier than 2022-10-17 |
| 1889 | 1.2.7.1.1.4.2 | Agregar evento | 1d | 2023-01-02 | 2023-01-03 | 20d | start no earlier than 2022-10-18 |
| 1890 | 1.2.7.1.1.4.3 | Editar evento | 1d | 2023-01-02 | 2023-01-03 | 20d | start no earlier than 2022-10-19 |
| 1891 | 1.2.7.1.1.4.4 | Eliminar evento | 1d | 2023-01-02 | 2023-01-03 | 20d | start no earlier than 2022-10-20 |
| 1892 | 1.2.7.1.1.4.5 | Ventanas emergentes de validación | 1d | 2023-01-02 | 2023-01-03 | 20d | start no earlier than 2022-10-28 |
| 1893 | 1.2.7.1.1.5 | **Pensiones Vitalicias** | 1d | 2023-01-02 | 2023-01-03 | 20d |  |
| 1894 | 1.2.7.1.1.5.1 | Recibidos | 1d | 2023-01-02 | 2023-01-03 | 20d |  |
| 1895 | 1.2.7.1.1.5.2 | Leidos | 1d | 2023-01-02 | 2023-01-03 | 20d |  |
| 1896 | 1.2.7.1.1.6 | **Gastos Extraordinarios** | 1d | 2023-01-02 | 2023-01-03 | 20d |  |
| 1897 | 1.2.7.1.1.6.1 | Enviar | 1d | 2023-01-02 | 2023-01-03 | 20d |  |
| 1898 | 1.2.7.1.1.7 | **Pago de 3% de ISN** | 1d | 2023-01-02 | 2023-01-03 | 20d |  |
| 1899 | 1.2.7.1.1.7.1 | Enviar | 1d | 2023-01-02 | 2023-01-03 | 20d |  |
| 1900 | 1.2.7.1.1.8 | **Pago de donativos de ICV** | 1d | 2023-01-02 | 2023-01-03 | 20d |  |
| 1901 | 1.2.7.1.1.8.1 | Enviar | 1d | 2023-01-02 | 2023-01-03 | 20d |  |
| 1902 | 1.2.7.1.1.9 | **Pago de ayudas sociales** | 1d | 2023-01-02 | 2023-01-03 | 20d |  |
| 1903 | 1.2.7.1.1.9.1 | Enviar | 1d | 2023-01-02 | 2023-01-03 | 20d |  |
| 1904 | 1.2.7.1.1.10 | **Pago de 1 y 2 al millar** | 1d | 2023-01-02 | 2023-01-03 | 20d |  |
| 1905 | 1.2.7.1.1.10.1 | Enviar | 1d | 2023-01-02 | 2023-01-03 | 20d |  |

| ID | WBS | Task | Duration | Start | Finish | Total slack | Constraint |
| --- | --- | --- | --- | --- | --- | --- | --- |
| 1906 | 1.2.7.1.1.11 | **Gasto extraordinarios con presupuesto Virtual** | 1d | 2023-01-02 | 2023-01-03 | 20d |  |
| 1907 | 1.2.7.1.1.11.1 | Enviar | 1d | 2023-01-02 | 2023-01-03 | 20d |  |
| 1908 | 1.2.7.1.1.12 | **Pago virtual ICV** | 1d | 2023-01-02 | 2023-01-03 | 20d |  |
| 1909 | 1.2.7.1.1.12.1 | Enviar | 1d | 2023-01-02 | 2023-01-03 | 20d |  |
| 1910 | 1.2.7.2 | **FRONT** | 1d | 2023-01-02 | 2023-01-03 | 20d |  |
| 1911 | 1.2.7.2.1 | **Módulo OPDs** | 1d | 2023-01-02 | 2023-01-03 | 20d |  |
| 1912 | 1.2.7.2.1.1 | **Base** | 1d | 2023-01-02 | 2023-01-03 | 20d |  |
| 1913 | 1.2.7.2.1.1.1 | Perfil | 1d | 2023-01-02 | 2023-01-03 | 20d | start no earlier than 2022-10-10 |
| 1914 | 1.2.7.2.1.1.2 | Pop up Notificaciones | 1d | 2023-01-02 | 2023-01-03 | 20d | start no earlier than 2022-10-10 |
| 1915 | 1.2.7.2.1.1.3 | Contador de Notificaciones (Icono campanita) | 1d | 2023-01-02 | 2023-01-03 | 20d | start no earlier than 2022-10-11 |
| 1916 | 1.2.7.2.1.1.4 | Bandeja entrada de Notificaciones Carrusel | 1d | 2023-01-02 | 2023-01-03 | 20d | start no earlier than 2022-10-12 |
| 1917 | 1.2.7.2.1.2 | **Dashboard Notificaciones** | 1d | 2023-01-02 | 2023-01-03 | 20d |  |
| 1918 | 1.2.7.2.1.2.1 | Agregar | 1d | 2023-01-02 | 2023-01-03 | 20d | start no earlier than 2022-10-13 |
| 1919 | 1.2.7.2.1.2.2 | Editar | 1d | 2023-01-02 | 2023-01-03 | 20d | start no earlier than 2022-10-14 |
| 1920 | 1.2.7.2.1.3 | **Avisos** | 1d | 2023-01-02 | 2023-01-03 | 20d |  |
| 1921 | 1.2.7.2.1.3.1 | Agregar | 1d | 2023-01-02 | 2023-01-03 | 20d | start no earlier than 2022-10-13 |
| 1922 | 1.2.7.2.1.3.2 | Editar | 1d | 2023-01-02 | 2023-01-03 | 20d | start no earlier than 2022-10-14 |
| 1923 | 1.2.7.2.1.4 | **Calendario** | 1d | 2023-01-02 | 2023-01-03 | 20d |  |
| 1924 | 1.2.7.2.1.4.1 | Pantalla Principal | 1d | 2023-01-02 | 2023-01-03 | 20d | start no earlier than 2022-10-17 |
| 1925 | 1.2.7.2.1.4.2 | Agregar evento | 1d | 2023-01-02 | 2023-01-03 | 20d | start no earlier than 2022-10-18 |
| 1926 | 1.2.7.2.1.4.3 | Editar evento | 1d | 2023-01-02 | 2023-01-03 | 20d | start no earlier than 2022-10-19 |
| 1927 | 1.2.7.2.1.4.4 | Eliminar evento | 1d | 2023-01-02 | 2023-01-03 | 20d | start no earlier than 2022-10-20 |
| 1928 | 1.2.7.2.1.4.5 | Ventanas emergentes de validación | 1d | 2023-01-02 | 2023-01-03 | 20d | start no earlier than 2022-10-28 |
| 1929 | 1.2.7.2.1.5 | **Pensiones Vitalicias** | 1d | 2023-01-02 | 2023-01-03 | 20d |  |
| 1930 | 1.2.7.2.1.5.1 | Recibidos | 1d | 2023-01-02 | 2023-01-03 | 20d |  |
| 1931 | 1.2.7.2.1.5.2 | Leidos | 1d | 2023-01-02 | 2023-01-03 | 20d |  |

| ID | WBS | Task | Duration | Start | Finish | Total slack | Constraint |
| --- | --- | --- | --- | --- | --- | --- | --- |
| 1932 | 1.2.7.2.1.6 | **Gastos Extraordinarios** | 1d | 2023-01-02 | 2023-01-03 | 20d |  |
| 1933 | 1.2.7.2.1.6.1 | Enviar | 1d | 2023-01-02 | 2023-01-03 | 20d |  |
| 1934 | 1.2.7.2.1.7 | **Pago de 3% de ISN** | 1d | 2023-01-02 | 2023-01-03 | 20d |  |
| 1935 | 1.2.7.2.1.7.1 | Enviar | 1d | 2023-01-02 | 2023-01-03 | 20d |  |
| 1936 | 1.2.7.2.1.8 | **Pago de donativos de ICV** | 1d | 2023-01-02 | 2023-01-03 | 20d |  |
| 1937 | 1.2.7.2.1.8.1 | Enviar | 1d | 2023-01-02 | 2023-01-03 | 20d |  |
| 1938 | 1.2.7.2.1.9 | **Pago de ayudas sociales** | 1d | 2023-01-02 | 2023-01-03 | 20d |  |
| 1939 | 1.2.7.2.1.9.1 | Enviar | 1d | 2023-01-02 | 2023-01-03 | 20d |  |
| 1940 | 1.2.7.2.1.10 | **Pago de 1 y 2 al millar** | 1d | 2023-01-02 | 2023-01-03 | 20d |  |
| 1941 | 1.2.7.2.1.10.1 | Enviar | 1d | 2023-01-02 | 2023-01-03 | 20d |  |
| 1942 | 1.2.7.2.1.11 | **Gasto extraordinarios con presupuesto Virtual** | 1d | 2023-01-02 | 2023-01-03 | 20d |  |
| 1943 | 1.2.7.2.1.11.1 | Enviar | 1d | 2023-01-02 | 2023-01-03 | 20d |  |
| 1944 | 1.2.7.2.1.12 | **Pago virtual ICV** | 1d | 2023-01-02 | 2023-01-03 | 20d |  |
| 1945 | 1.2.7.2.1.12.1 | Enviar | 1d | 2023-01-02 | 2023-01-03 | 20d |  |
| 1946 | 1.3 | **Fase 3 Pruebas Unitarias e Integrales** | 32d | 2022-11-16 | 2022-12-30 |  |  |
| 1947 | 1.3.1 | **Pruebas Unitarias** | 6d | 2022-11-16 | 2022-11-24 | 48d |  |
| 1948 | 1.3.1.1 | Métodos | 5d | 2022-11-16 | 2022-11-23 | 49d | start no earlier than 2022-11-16 |
| 1949 | 1.3.1.2 | Funciones y Cálculos individuales de las clases | 5d | 2022-11-17 | 2022-11-24 | 48d | start no earlier than 2022-11-17 |
| 1950 | 1.3.2 | **Pruebas de Integrales** | 7d | 2022-11-18 | 2022-11-29 | 45d |  |
| 1951 | 1.3.2.1 | Consultas a la base de datos | 5d | 2022-11-18 | 2022-11-25 | 47d | start no earlier than 2022-11-18 |
| 1952 | 1.3.2.2 | Microservicios | 5d | 2022-11-22 | 2022-11-29 | 45d | start no earlier than 2022-11-22 |
| 1953 | 1.3.3 | **Pruebas de Funcionales** | 5d | 2022-11-23 | 2022-11-30 | 44d |  |
| 1954 | 1.3.3.1 | Interacción con la base de datos | 5d | 2022-11-23 | 2022-11-30 | 44d | start no earlier than 2022-11-23 |
| 1955 | 1.4 | **Fase 4 Publicación y Puesta a Punto** | 21d | 2022-12-01 | 2022-12-30 |  |  |
| 1956 | 1.4.1 | Manuales de Usuario | 5d | 2022-12-01 | 2022-12-08 | 38d | start no earlier than 2022-12-01 |

| ID | WBS | Task | Duration | Start | Finish | Total slack | Constraint |
| --- | --- | --- | --- | --- | --- | --- | --- |
| 1957 | 1.4.2 | **Capacitación plataforma PDRMyE** | 7d | 2022-12-02 | 2022-12-13 | 35d |  |
| 1958 | 1.4.2.1 | Capacitación Área CPH | 1d | 2022-12-02 | 2022-12-03 | 41d | start no earlier than 2022-12-02 |
| 1959 | 1.4.2.2 | Capacitación Área DAMOP | 1d | 2022-12-05 | 2022-12-06 | 40d | start no earlier than 2022-12-05 |
| 1960 | 1.4.2.3 | Capacitación Área DPCP | 1d | 2022-12-06 | 2022-12-07 | 39d | start no earlier than 2022-12-06 |
| 1961 | 1.4.2.4 | Capacitación Área DAF | 1d | 2022-12-07 | 2022-12-08 | 38d | start no earlier than 2022-12-07 |
| 1962 | 1.4.2.5 | Capacitación Área DCCP | 1d | 2022-12-08 | 2022-12-09 | 37d | start no earlier than 2022-12-08 |
| 1963 | 1.4.2.6 | Capacitación Área Municipios | 1d | 2022-12-09 | 2022-12-10 | 36d | start no earlier than 2022-12-09 |
| 1964 | 1.4.2.7 | Capacitación Área OPD´s | 1d | 2022-12-12 | 2022-12-13 | 35d | start no earlier than 2022-12-12 |
| 1965 | 1.4.3 | Evidencia de Procesos de Inicialización | 5d | 2022-12-05 | 2022-12-10 | 36d | start no earlier than 2022-12-05 |
| 1966 | 1.4.4 | Evidencia de Ejecución de Procesos | 5d | 2022-12-06 | 2022-12-13 | 35d | start no earlier than 2022-12-06 |
| 1967 | 1.4.5 | Carta de Finalización de desarrollo | 5d | 2022-12-07 | 2022-12-14 | 34d | start no earlier than 2022-12-07 |
| 1968 | 1.5 | **Fase 5 Plan de soporte Post-productivo** | 10d | 2023-01-16 | 2023-01-30 |  |  |
| 1969 | 1.5.1 | Atención de incidencias | 5d | 2022-10-04 | 2022-10-11 | 79.67d | start no earlier than 2022-10-04 |
